# Ремонт Т-201 С-200 КУПМ в 2019

Schedule from MS Project XML, 2019-05-02 to 2019-05-12, 24 hours a day.

## Calendars

- 24 часа: Mon-Sun 00:00-00:00.
- 8-20: Mon-Sun 08:00-20:00.

## Resources

| Resource |
| --- |
| Вахтовый персонал |
| НХП (ИТР) |
| Подрядная монтаж |
| Экстрактор |
| Автокран, г/п 40тн |
| Автотранспорт (п) (длинномер) |
| Автопогрузчик |
| Автокран (г/п 100тн) |
| Чистка корпуса |
| Чистка колпаков |
| Чистка пучков |

## Schedule

| ID | WBS | Task | Type | Duration | Start | Finish | Predecessors | Baseline start | Baseline finish | Baseline duration | Total slack | Free slack | Deadline | Resources | Work | Число1 | Текст2 | Текст4 | Текст10 | Длительность2 |
| --- | --- | --- | --- | --- | --- | --- | --- | --- | --- | --- | --- | --- | --- | --- | --- | --- | --- | --- | --- | --- |
| 1 | 1 | Дренирование |  | 16h | 2019-05-02 13:00 | 2019-05-03 05:00 |  |  |  |  | 136.8d | 0d |  | Вахтовый персонал | 16h | 1 |  |  |  |  |
| 2 | 2 | **Ремонт блока сырьевых теплообменников** |  | 10d | 2019-05-02 13:00 | 2019-05-12 13:06 |  | 2016-10-02 10:55 | 2016-10-21 01:02 | 18.59d | 136.84d |  | 2019-09-27 00:06 |  | 1205.2h | 1 | Вс 02.10.16 10:55 | Пт 21.10.16 1:02 | 561,23 ч | 0h |
| 3 | 2.1 | **Подготовка к ремонту** |  | 0.67d | 2019-05-02 13:00 | 2019-05-03 05:00 |  | 2016-10-02 10:55 | 2016-10-02 20:25 | 0.4d | 136.8d |  | 2019-09-17 00:06 |  | 60h | 1 | Вс 02.10.16 10:55 | Вс 02.10.16 20:25 | 36,42 ч | 1.4h |
| 4 | 2.1.1 | Установка лесов и подпоров для тр-ов обвязки (до начала ремонта) | milestone | 0h | 2019-05-02 13:00 | 2019-05-02 13:00 |  | 2016-10-02 10:55 | 2016-10-02 10:55 |  | 137.46d |  | 2019-09-17 00:06 | Подрядная монтаж |  | 1 | Вс 02.10.16 10:55 | Вс 02.10.16 10:55 | 0 ч |  |
| 5 | 2.1.2 | Демонтаж теплоизоляционных футляров (до начала ремонта) | milestone | 0h | 2019-05-02 13:00 | 2019-05-02 13:00 |  | 2016-10-02 10:55 | 2016-10-02 10:55 |  | 137.46d |  | 2019-09-17 00:06 | Подрядная монтаж |  | 1 | Вс 02.10.16 10:55 | Вс 02.10.16 10:55 | 0 ч |  |
| 6 | 2.1.3 | Установка защитных экранов и подставок для трубных пучков (до начала ремонта) | milestone | 0h | 2019-05-02 13:00 | 2019-05-02 13:00 |  | 2016-10-02 10:55 | 2016-10-02 10:55 |  | 137.46d |  | 2019-09-17 00:06 | Подрядная монтаж |  | 1 | Вс 02.10.16 10:55 | Вс 02.10.16 10:55 | 0 ч |  |
| 7 | 2.1.4 | Подготовка табличек для обозначения пренадлежности элементов т/о к позиции( 4 таблички на 1 т/о) | milestone | 0h | 2019-05-02 13:00 | 2019-05-02 13:00 |  |  |  |  | 137.46d |  | 2019-09-17 00:06 | Вахтовый персонал |  | 1 |  |  |  |  |
| 8 | 2.1.5 | **Частичный демонтаж крепежа в период дренирования блока теплообмена** |  | 0.62d | 2019-05-02 14:00 | 2019-05-03 05:00 | 1SS+1h |  |  |  | 136.8d |  | 2019-09-17 00:06 |  | 60h | 1 |  |  |  |  |
| 9 | 2.1.5.1 | **Теплообменников Т-201.С2/5-6** |  | 0.21d | 2019-05-02 14:00 | 2019-05-02 19:00 |  |  |  |  | 136.8d | 0d | 2019-09-17 00:06 |  | 10h | 1 |  |  |  |  |
| 10 | 2.1.5.1.1 | Распределительная камера 1 |  | 2.5h | 2019-05-02 14:00 | 2019-05-02 16:30 |  |  |  |  | 136.8d | 0d | 2019-09-17 00:06 | Подрядная монтаж | 2.5h | 1 |  |  |  |  |
| 11 | 2.1.5.1.2 | Распределительная камера 1 |  | 2.5h | 2019-05-02 16:30 | 2019-05-02 19:00 | 10 |  |  |  | 136.8d |  | 2019-09-17 00:06 | Подрядная монтаж | 2.5h | 1 |  |  |  |  |
| 12 | 2.1.5.1.3 | Колпак плавающей головки 1 |  | 2.5h | 2019-05-02 14:00 | 2019-05-02 16:30 |  |  |  |  | 136.8d | 0d | 2019-09-17 00:06 | Подрядная монтаж | 2.5h | 1 |  |  |  |  |
| 13 | 2.1.5.1.4 | Колпак плавающей головки 2 |  | 2.5h | 2019-05-02 16:30 | 2019-05-02 19:00 | 12 |  |  |  | 136.8d |  | 2019-09-17 00:06 | Подрядная монтаж | 2.5h | 1 |  |  |  |  |
| 14 | 2.1.5.2 | **Теплообменников Т-201.С2/3-4** |  | 0.21d | 2019-05-02 19:00 | 2019-05-03 00:00 | 9 |  |  |  | 136.8d | 0d | 2019-09-17 00:06 |  | 10h | 1 |  |  |  |  |
| 15 | 2.1.5.2.1 | Распределительная камера 1 |  | 2.5h | 2019-05-02 19:00 | 2019-05-02 21:30 |  |  |  |  | 136.8d | 0d | 2019-09-17 00:06 | Подрядная монтаж | 2.5h | 1 |  |  |  |  |
| 16 | 2.1.5.2.2 | Распределительная камера 1 |  | 2.5h | 2019-05-02 21:30 | 2019-05-03 00:00 | 15 |  |  |  | 136.8d |  | 2019-09-17 00:06 | Подрядная монтаж | 2.5h | 1 |  |  |  |  |
| 17 | 2.1.5.2.3 | Колпак плавающей головки 1 |  | 2.5h | 2019-05-02 19:00 | 2019-05-02 21:30 |  |  |  |  | 136.8d | 0d | 2019-09-17 00:06 | Подрядная монтаж | 2.5h | 1 |  |  |  |  |
| 18 | 2.1.5.2.4 | Колпак плавающей головки 2 |  | 2.5h | 2019-05-02 21:30 | 2019-05-03 00:00 | 17 |  |  |  | 136.8d |  | 2019-09-17 00:06 | Подрядная монтаж | 2.5h | 1 |  |  |  |  |
| 19 | 2.1.5.3 | **Теплообменников Т-201.С2/1-2** |  | 0.21d | 2019-05-03 00:00 | 2019-05-03 05:00 | 14 |  |  |  | 136.8d |  | 2019-09-17 00:06 |  | 10h | 2 |  |  |  |  |
| 20 | 2.1.5.3.1 | Распределительная камера 1 |  | 2.5h | 2019-05-03 00:00 | 2019-05-03 02:30 |  |  |  |  | 136.8d | 0d | 2019-09-17 00:06 | Подрядная монтаж | 2.5h | 2 |  |  |  |  |
| 21 | 2.1.5.3.2 | Распределительная камера 1 |  | 2.5h | 2019-05-03 02:30 | 2019-05-03 05:00 | 20 |  |  |  | 136.8d |  | 2019-09-17 00:06 | Подрядная монтаж | 2.5h | 2 |  |  |  |  |
| 22 | 2.1.5.3.3 | Колпак плавающей головки 1 |  | 2.5h | 2019-05-03 00:00 | 2019-05-03 02:30 |  |  |  |  | 136.8d | 0d | 2019-09-17 00:06 | Подрядная монтаж | 2.5h | 2 |  |  |  |  |
| 23 | 2.1.5.3.4 | Колпак плавающей головки 2 |  | 2.5h | 2019-05-03 02:30 | 2019-05-03 05:00 | 22 |  |  |  | 136.8d |  | 2019-09-17 00:06 | Подрядная монтаж | 2.5h | 2 |  |  |  |  |
| 24 | 2.1.5.4 | **Теплообменников Т-201.В2/1-2** |  | 0.21d | 2019-05-02 14:00 | 2019-05-02 19:00 |  |  |  |  | 136.8d | 0d | 2019-09-17 00:06 |  | 10h | 1 |  |  |  |  |
| 25 | 2.1.5.4.1 | Распределительная камера 1 |  | 2.5h | 2019-05-02 14:00 | 2019-05-02 16:30 |  |  |  |  | 136.8d | 0d | 2019-09-17 00:06 | Подрядная монтаж | 2.5h | 1 |  |  |  |  |
| 26 | 2.1.5.4.2 | Распределительная камера 1 |  | 2.5h | 2019-05-02 16:30 | 2019-05-02 19:00 | 25 |  |  |  | 136.8d |  | 2019-09-17 00:06 | Подрядная монтаж | 2.5h | 1 |  |  |  |  |
| 27 | 2.1.5.4.3 | Колпак плавающей головки 1 |  | 2.5h | 2019-05-02 14:00 | 2019-05-02 16:30 |  |  |  |  | 136.8d | 0d | 2019-09-17 00:06 | Подрядная монтаж | 2.5h | 1 |  |  |  |  |
| 28 | 2.1.5.4.4 | Колпак плавающей головки 2 |  | 2.5h | 2019-05-02 16:30 | 2019-05-02 19:00 | 27 |  |  |  | 136.8d |  | 2019-09-17 00:06 | Подрядная монтаж | 2.5h | 1 |  |  |  |  |

| ID | WBS | Task | Duration | Start | Finish | Predecessors | Baseline start | Baseline finish | Baseline duration | Total slack | Free slack | Deadline | Calendar | Resources | Work | Число1 | Текст2 | Текст4 | Текст10 | Длительность2 |
| --- | --- | --- | --- | --- | --- | --- | --- | --- | --- | --- | --- | --- | --- | --- | --- | --- | --- | --- | --- | --- |
| 29 | 2.1.5.5 | **Теплообменников Т-201.А/3-4** | 0.21d | 2019-05-02 19:00 | 2019-05-03 00:00 | 24 |  |  |  | 136.8d | 0d | 2019-09-17 00:06 |  |  | 10h | 1 |  |  |  |  |
| 30 | 2.1.5.5.1 | Распределительная камера 1 | 2.5h | 2019-05-02 19:00 | 2019-05-02 21:30 |  |  |  |  | 136.8d | 0d | 2019-09-17 00:06 |  | Подрядная монтаж | 2.5h | 1 |  |  |  |  |
| 31 | 2.1.5.5.2 | Распределительная камера 1 | 2.5h | 2019-05-02 21:30 | 2019-05-03 00:00 | 30 |  |  |  | 136.8d |  | 2019-09-17 00:06 |  | Подрядная монтаж | 2.5h | 1 |  |  |  |  |
| 32 | 2.1.5.5.3 | Колпак плавающей головки 1 | 2.5h | 2019-05-02 19:00 | 2019-05-02 21:30 |  |  |  |  | 136.8d | 0d | 2019-09-17 00:06 |  | Подрядная монтаж | 2.5h | 1 |  |  |  |  |
| 33 | 2.1.5.5.4 | Колпак плавающей головки 2 | 2.5h | 2019-05-02 21:30 | 2019-05-03 00:00 | 32 |  |  |  | 136.8d |  | 2019-09-17 00:06 |  | Подрядная монтаж | 2.5h | 1 |  |  |  |  |
| 34 | 2.1.5.6 | **Теплообменников Т-201.А/1-2** | 0.21d | 2019-05-03 00:00 | 2019-05-03 05:00 | 29 |  |  |  | 136.8d |  | 2019-09-17 00:06 |  |  | 10h | 2 |  |  |  |  |
| 35 | 2.1.5.6.1 | Распределительная камера 1 | 2.5h | 2019-05-03 00:00 | 2019-05-03 02:30 |  |  |  |  | 136.8d | 0d | 2019-09-17 00:06 |  | Подрядная монтаж | 2.5h | 2 |  |  |  |  |
| 36 | 2.1.5.6.2 | Распределительная камера 1 | 2.5h | 2019-05-03 02:30 | 2019-05-03 05:00 | 35 |  |  |  | 136.8d |  | 2019-09-17 00:06 |  | Подрядная монтаж | 2.5h | 2 |  |  |  |  |
| 37 | 2.1.5.6.3 | Колпак плавающей головки 1 | 2.5h | 2019-05-03 00:00 | 2019-05-03 02:30 |  |  |  |  | 136.8d | 0d | 2019-09-17 00:06 |  | Подрядная монтаж | 2.5h | 2 |  |  |  |  |
| 38 | 2.1.5.6.4 | Колпак плавающей головки 2 | 2.5h | 2019-05-03 02:30 | 2019-05-03 05:00 | 37 |  |  |  | 136.8d |  | 2019-09-17 00:06 |  | Подрядная монтаж | 2.5h | 2 |  |  |  |  |
| 39 | 2.2 | **Ремонт теплообменников Т-201.С2/5-6** | 8.71d | 2019-05-03 05:00 | 2019-05-11 22:06 | 1 | 2016-10-02 20:25 | 2016-10-07 22:51 | 5.1d | 137.91d |  | 2029-07-26 00:06 |  |  | 180.2h | 2 | Вс 02.10.16 20:25 | Пт 07.10.16 22:51 | 156,44 ч | 0h |
| 40 | 2.2.1 | **Разбалчивание элементов теплообменника** | 0.88d | 2019-05-03 05:00 | 2019-05-04 02:00 |  | 2016-10-02 20:25 | 2016-10-03 08:25 | 0.5d | 138.94d |  | 2029-07-26 00:06 |  |  | 23.6h | 2 | Вс 02.10.16 20:25 | Пн 03.10.16 8:25 | 12 ч | 0h |
| 41 | 2.2.1.1 | Разболтить фланцевое соединение трубопровода обвязки распределительной камеры (ВХОД) Ø250 | 1.8h | 2019-05-03 05:00 | 2019-05-03 06:48 |  | 2016-10-02 20:25 | 2016-10-02 22:13 | 1.8h | 143.35d | 0d | 2029-07-26 00:06 |  | Подрядная монтаж | 1.8h | 2 | Вс 02.10.16 20:25 | Вс 02.10.16 22:13 | 1,8 ч |  |
| 42 | 2.2.1.2 | Разболтить фланцевое соединение трубопровода обвязки распределительной камеры (ВЫХОД) Ø250 | 1.8h | 2019-05-03 10:24 | 2019-05-03 12:12 | 41 | 2016-10-02 22:13 | 2016-10-03 00:01 | 1.8h | 143.35d | 0d | 2029-07-26 00:06 |  | Подрядная монтаж | 1.8h | 2 | Вс 02.10.16 22:13 | Пн 03.10.16 0:01 | 1,8 ч |  |
| 43 | 2.2.1.3 | Разболтить фланцевое соединение колпака распределительной камеры 1 | 4h | 2019-05-03 15:48 | 2019-05-03 19:48 | 42 | 2016-10-02 20:25 | 2016-10-03 02:25 | 6h | 143.35d | 0d | 2029-07-26 00:06 |  | Подрядная монтаж | 8h | 2 | Вс 02.10.16 20:25 | Пн 03.10.16 2:25 | 6 ч |  |
| 44 | 2.2.1.4 | Разболтить фланцевое соединение колпака распределительной камеры 2 | 4h | 2019-05-03 22:00 | 2019-05-04 02:00 | 43 | 2016-10-03 02:25 | 2016-10-03 07:14 | 4.83h | 143.35d | 0.25d | 2029-07-26 00:06 |  | Подрядная монтаж | 4h | 2 | Пн 03.10.16 2:25 | Пн 03.10.16 7:15 | 4,83 ч |  |
| 45 | 2.2.1.5 | Разболтить фланцевое соединение колпака плавающей головки 1 | 4h | 2019-05-03 05:00 | 2019-05-03 09:00 |  | 2016-10-02 20:25 | 2016-10-03 02:25 | 6h | 138.94d | 0d | 2029-07-26 00:06 |  | Подрядная монтаж | 4h | 2 | Вс 02.10.16 20:25 | Пн 03.10.16 2:25 | 6 ч |  |
| 46 | 2.2.1.6 | Разболтить фланцевое соединение колпака плавающей головки 2 | 4h | 2019-05-03 09:00 | 2019-05-03 13:00 | 45 | 2016-10-03 02:25 | 2016-10-03 08:25 | 6h | 138.94d | 0d | 2029-07-26 00:06 |  | Подрядная монтаж | 4h | 2 | Пн 03.10.16 2:25 | Пн 03.10.16 8:25 | 6 ч |  |
| 47 | 2.2.2 | **Демонтаж элементов теплообменника** | 0.81d | 2019-05-03 13:00 | 2019-05-04 08:30 |  | 2016-10-02 20:25 | 2016-10-03 09:14 | 0.53d | 138.94d |  | 2029-07-26 00:06 |  |  | 3h | 2 | Вс 02.10.16 20:25 | Пн 03.10.16 9:15 | 53,46 ч | 8.85h |
| 48 | 2.2.2.1 | Демонтировать колпак плавающей головки 1 | 0.5h | 2019-05-03 13:00 | 2019-05-03 13:30 | 46 | 2016-10-03 02:25 | 2016-10-03 03:25 | 1h | 69.44d | 0d | 2029-07-26 00:06 | 8-20 | Подрядная монтаж; Автокран (г/п 100тн) | 1h | 2 | Пн 03.10.16 2:25 | Пн 03.10.16 3:25 | 1 ч | 0h |
| 49 | 2.2.2.2 | Демонтировать колпак плавающей головки 2 | 0.5h | 2019-05-03 16:00 | 2019-05-03 16:30 | 48 | 2016-10-03 08:25 | 2016-10-03 09:14 | 0.83h | 69.44d | 0d | 2029-07-26 00:06 | 8-20 | Подрядная монтаж; Автокран (г/п 100тн) | 1h | 2 | Пн 03.10.16 8:25 | Пн 03.10.16 9:15 | 0,83 ч | 0h |
| 50 | 2.2.2.3 | Демонтировать колпак распределительной камеры 1,2 | 0.5h | 2019-05-04 08:00 | 2019-05-04 08:30 | 44 | 2016-10-02 20:25 | 2016-10-02 21:14 | 0.83h | 71.6d | 0d | 2029-07-26 00:06 | 8-20 | Подрядная монтаж; Автокран (г/п 100тн) | 1h | 3 | Вс 02.10.16 20:25 | Вс 02.10.16 21:15 | 0,83 ч | 0h |
| 51 | 2.2.3 | **Чистка крепежа плавающих головок** | 0.29d | 2019-05-03 16:30 | 2019-05-03 23:30 |  | 2016-10-02 20:25 | 2016-10-03 09:14 | 0.53d | 138.94d |  | 2029-07-26 00:06 |  |  | 2h | 2 | Вс 02.10.16 20:25 | Пн 03.10.16 9:15 | 53,46 ч | 8.85h |
| 52 | 2.2.3.1 | Чистка крепежа плавающей головки 1 | 1h | 2019-05-03 16:30 | 2019-05-03 17:30 | 49 | 2016-10-02 20:25 | 2016-10-02 21:14 | 0.83h | 138.94d | 0d | 2029-07-26 00:06 |  | Чистка корпуса | 1h | 2 | Вс 02.10.16 20:25 | Вс 02.10.16 21:15 | 0,83 ч | 0h |
| 53 | 2.2.3.2 | Чистка крепежа плавающей головки 2 | 1h | 2019-05-03 22:30 | 2019-05-03 23:30 | 52 | 2016-10-03 02:25 | 2016-10-03 03:25 | 1h | 138.94d | 0d | 2029-07-26 00:06 |  | Чистка корпуса | 1h | 2 | Пн 03.10.16 2:25 | Пн 03.10.16 3:25 | 1 ч | 0h |

| ID | WBS | Task | Duration | Start | Finish | Predecessors | Baseline start | Baseline finish | Baseline duration | Total slack | Free slack | Deadline | Calendar | Resources | Work | Текст2 | Текст4 | Текст10 | Число1 | Длительность2 |
| --- | --- | --- | --- | --- | --- | --- | --- | --- | --- | --- | --- | --- | --- | --- | --- | --- | --- | --- | --- | --- |
| 54 | 2.2.4 | **Разбалчивание внутренних элементов теплообменника** | 0.58d | 2019-05-03 23:30 | 2019-05-04 13:30 |  | 2016-10-03 03:25 | 2016-10-03 15:25 | 0.5d | 138.94d |  | 2029-07-26 00:06 |  |  | 10h | Пн 03.10.16 3:25 | Пн 03.10.16 15:25 | 12 ч | 2 | 0h |
| 55 | 2.2.4.1 | Разболтить фланцевое соединение крышки плавающей головки 1 | 5h | 2019-05-03 23:30 | 2019-05-04 04:30 | 53 | 2016-10-03 03:25 | 2016-10-03 09:25 | 6h | 138.94d | 0d | 2029-07-26 00:06 |  | Подрядная монтаж | 5h | Пн 03.10.16 3:25 | Пн 03.10.16 9:25 | 6 ч | 2 |  |
| 56 | 2.2.4.2 | Разболтить фланцевое соединение крышки плавающей головки 2 | 5h | 2019-05-04 08:30 | 2019-05-04 13:30 | 55 | 2016-10-03 09:25 | 2016-10-03 15:25 | 6h | 138.94d | 0d | 2029-07-26 00:06 |  | Подрядная монтаж | 5h | Пн 03.10.16 9:25 | Пн 03.10.16 15:25 | 6 ч | 3 |  |
| 57 | 2.2.5 | **Демонтаж внутренних элементов теплообменника** | 1.83d | 2019-05-04 13:30 | 2019-05-06 09:30 |  | 2016-10-03 15:25 | 2016-10-04 02:35 | 0.47d | 138.4d |  | 2029-07-26 00:06 |  |  | 14h | Пн 03.10.16 15:25 | Вт 04.10.16 2:35 | 11,17 ч | 3 | 0h |
| 58 | 2.2.5.1 | Демонтировать крышку плавающей головки 1 | 0.5h | 2019-05-04 13:30 | 2019-05-04 14:00 | 56 | 2016-10-03 15:25 | 2016-10-03 15:55 | 0.5h | 69.44d | 0d | 2029-07-26 00:06 | 8-20 | Подрядная монтаж; Автокран (г/п 100тн) | 1h | Пн 03.10.16 15:25 | Пн 03.10.16 15:55 | 0,5 ч | 3 | 0h |
| 59 | 2.2.5.2 | Демонтировать крышку плавающей головки 2 | 0.5h | 2019-05-04 16:30 | 2019-05-04 17:00 | 58 | 2016-10-03 15:55 | 2016-10-03 16:25 | 0.5h | 69.44d | 0d | 2029-07-26 00:06 | 8-20 | Подрядная монтаж; Автокран (г/п 100тн) | 1h | Пн 03.10.16 15:55 | Пн 03.10.16 16:25 | 0,5 ч | 3 | 0h |
| 60 | 2.2.5.3 | Демонтировать трубный пучок теплообменника 1 | 2h | 2019-05-04 19:30 | 2019-05-05 09:30 | 59 | 2016-10-03 16:25 | 2016-10-04 00:35 | 8.17h | 69.44d | 0d | 2029-07-26 00:06 | 8-20 | Подрядная монтаж; Экстрактор; Автокран (г/п 100тн) | 6h | Пн 03.10.16 16:25 | Вт 04.10.16 0:35 | 8,17 ч | 3 | 0h |
| 61 | 2.2.5.4 | Демонтировать трубный пучок теплообменника 2 | 2h | 2019-05-05 19:30 | 2019-05-06 09:30 | 60 | 2016-10-04 00:35 | 2016-10-04 02:35 | 2h | 69.4d | 0d | 2029-07-26 00:06 | 8-20 | Подрядная монтаж; Экстрактор; Автокран (г/п 100тн) | 6h | Вт 04.10.16 0:35 | Вт 04.10.16 2:35 | 2 ч | 4 | 0h |
| 62 | 2.2.6 | **Транспортировка к месту чистки** | 2.88d | 2019-05-03 13:30 | 2019-05-06 10:30 |  | 2016-10-02 21:14 | 2016-10-04 10:00 | 1.53d | 141.23d |  | 2029-07-26 00:06 |  |  | 9.5h | Вс 02.10.16 21:15 | Вт 04.10.16 10:00 | 12,17 ч | 2 | 0h |
| 63 | 2.2.6.1 | Транспортировка колпака плавающей головки 1 к месту чистки с разгрузкой | 0.7h | 2019-05-03 13:30 | 2019-05-03 14:12 | 48 | 2016-10-03 03:25 | 2016-10-03 04:07 | 0.7h | 72.1d | 0d | 2029-07-26 00:06 | 8-20 | Автопогрузчик | 0.7h | Пн 03.10.16 3:25 | Пн 03.10.16 4:07 | 0,7 ч | 2 | 0h |
| 64 | 2.2.6.2 | Транспортировка колпака плавающей головки 2 к месту чистки с разгрузкой | 0.7h | 2019-05-03 17:42 | 2019-05-03 18:24 | 49 | 2016-10-03 09:14 | 2016-10-03 09:56 | 0.7h | 71.87d | 0d | 2029-07-26 00:06 | 8-20 | Автопогрузчик | 0.7h | Пн 03.10.16 9:15 | Пн 03.10.16 9:57 | 0,7 ч | 2 | 0h |
| 65 | 2.2.6.3 | Транспортировка колпака распределительной камеры 1,2 к месту чистки с разгрузкой | 0.7h | 2019-05-04 08:30 | 2019-05-04 09:12 | 50 | 2016-10-02 21:14 | 2016-10-02 21:56 | 0.7h | 71.6d | 0d | 2029-07-26 00:06 | 8-20 | Автопогрузчик | 0.7h | Вс 02.10.16 21:15 | Вс 02.10.16 21:57 | 0,7 ч | 3 | 0h |
| 66 | 2.2.6.4 | Транспортировка крышки плавающей головки 1 к месту чистки с разгрузкой | 0.7h | 2019-05-04 14:00 | 2019-05-04 14:42 | 58 | 2016-10-03 15:55 | 2016-10-03 16:25 | 0.5h | 71.22d | 0d | 2029-07-26 00:06 | 8-20 | Автопогрузчик | 0.7h | Пн 03.10.16 15:55 | Пн 03.10.16 16:25 | 0,25 ч | 3 |  |
| 67 | 2.2.6.5 | Транспортировка крышки плавающей головки 2 к месту чистки с разгрузкой | 0.7h | 2019-05-04 18:12 | 2019-05-04 18:54 | 59 | 2016-10-03 16:25 | 2016-10-03 17:07 | 0.7h | 71.12d | 0d | 2029-07-26 00:06 | 8-20 | Автопогрузчик | 0.7h | Пн 03.10.16 16:25 | Пн 03.10.16 17:07 | 0,7 ч | 3 | 0h |
| 68 | 2.2.6.6 | Транспортировка трубного пучка 1 к месту чистки с разгрузкой | 1h | 2019-05-05 09:30 | 2019-05-05 10:30 | 60 | 2016-10-04 00:35 | 2016-10-04 09:00 | 8.41h | 70.65d | 0d | 2029-07-26 00:06 | 8-20 | Автотранспорт (п) (длинномер); Подрядная монтаж; Автокран, г/п 40тн | 3h | Вт 04.10.16 0:35 | Вт 04.10.16 9:00 | 1,5 ч | 4 | 5.42h |
| 69 | 2.2.6.7 | Транспортировка трубного пучка 2 к месту чистки с разгрузкой | 1h | 2019-05-06 09:30 | 2019-05-06 10:30 | 61 | 2016-10-04 09:00 | 2016-10-04 10:00 | 1h | 69.4d | 0d | 2029-07-26 00:06 | 8-20 | Автотранспорт (п) (длинномер); Подрядная монтаж; Автокран, г/п 40тн | 3h | Вт 04.10.16 9:00 | Вт 04.10.16 10:00 | 1 ч | 5 | 0h |
| 70 | 2.2.7 | **Чистка элементов теплообменника** | 5.18d | 2019-05-03 14:12 | 2019-05-08 18:30 |  | 2016-10-02 21:56 | 2016-10-05 11:36 | 2.57d | 139.02d |  | 2029-07-26 00:06 |  |  | 54h | Вс 02.10.16 21:57 | Ср 05.10.16 11:36 | 36,57 ч | 2 | 0h |
| 71 | 2.2.7.1 | чистка от отложений корпуса 1 теплообменника | 4h | 2019-05-06 09:30 | 2019-05-06 13:30 | 61 | 2016-10-04 00:35 | 2016-10-04 03:45 | 3.17h | 139.92d | 0d | 2029-07-26 00:06 |  | Чистка корпуса | 4h | Вт 04.10.16 0:35 | Вт 04.10.16 3:45 | 3,17 ч | 5 |  |
| 72 | 2.2.7.2 | чистка от отложений корпуса 2 теплообменника | 4h | 2019-05-07 09:30 | 2019-05-07 13:30 | 71 | 2016-10-04 02:35 | 2016-10-04 06:35 | 4h | 139.92d | 0d | 2029-07-26 00:06 |  | Чистка корпуса | 4h | Вт 04.10.16 2:35 | Вт 04.10.16 6:35 | 4 ч | 6 |  |
| 73 | 2.2.7.3 | чистка от отложений колпака плавающей головки 1 | 1h | 2019-05-03 14:12 | 2019-05-03 15:12 | 63 | 2016-10-03 04:07 | 2016-10-03 06:29 | 2.37h | 144.1d | 0d | 2029-07-26 00:06 |  | Чистка колпаков | 1h | Пн 03.10.16 4:07 | Пн 03.10.16 6:29 | 2,37 ч | 2 |  |
| 74 | 2.2.7.4 | чистка от отложений колпака плавающей головки 2 | 1h | 2019-05-03 20:12 | 2019-05-03 21:12 | 64 | 2016-10-03 09:56 | 2016-10-03 12:08 | 2.2h | 143.87d | 0d | 2029-07-26 00:06 |  | Чистка колпаков | 1h | Пн 03.10.16 9:57 | Пн 03.10.16 12:09 | 2,2 ч | 2 |  |
| 75 | 2.2.7.5 | чистка от отложений колпака 1,2 распределительной камеры | 2h | 2019-05-04 09:12 | 2019-05-04 11:12 | 65 | 2016-10-02 21:56 | 2016-10-03 00:07 | 2.17h | 143.1d | 0d | 2029-07-26 00:06 |  | Чистка колпаков | 2h | Вс 02.10.16 21:57 | Пн 03.10.16 0:07 | 2,17 ч | 3 |  |
| 76 | 2.2.7.6 | чистка от отложений крышки плавающей головки 1 | 1h | 2019-05-04 21:12 | 2019-05-04 22:12 | 66 | 2016-10-03 16:25 | 2016-10-03 17:25 | 1h | 142.72d | 0.41d | 2029-07-26 00:06 |  | Чистка колпаков | 1h | Пн 03.10.16 16:25 | Пн 03.10.16 17:25 | 1 ч | 3 |  |
| 77 | 2.2.7.7 | чистка от отложений крышки плавающей головки 2 | 1h | 2019-05-05 03:12 | 2019-05-05 04:12 | 67 | 2016-10-03 17:07 | 2016-10-03 18:37 | 1.5h | 142.62d | 0.16d | 2029-07-26 00:06 |  | Чистка колпаков | 1h | Пн 03.10.16 17:07 | Пн 03.10.16 18:37 | 1,5 ч | 4 |  |
| 78 | 2.2.7.8 | чистка от отложений трубного пучка 1 | 20h | 2019-05-05 10:30 | 2019-05-06 06:30 | 68 | 2016-10-04 09:00 | 2016-10-05 01:00 | 16h | 141.15d | 0.06d | 2029-07-26 00:06 |  | Чистка пучков | 20h | Вт 04.10.16 9:00 | Ср 05.10.16 1:00 | 16 ч | 4 |  |
| 79 | 2.2.7.9 | чистка от отложений трубного пучка 2 | 20h | 2019-05-07 22:30 | 2019-05-08 18:30 | 69 | 2016-10-04 10:00 | 2016-10-05 02:00 | 16h | 138.75d | 0d | 2029-07-26 00:06 |  | Чистка пучков | 20h | Вт 04.10.16 10:00 | Ср 05.10.16 2:00 | 16 ч | 6 |  |

| ID | WBS | Task | Duration | Start | Finish | Predecessors | Baseline start | Baseline finish | Baseline duration | Total slack | Free slack | Deadline | Calendar | Resources | Work | Текст2 | Текст4 | Текст10 | Число1 | Длительность2 |
| --- | --- | --- | --- | --- | --- | --- | --- | --- | --- | --- | --- | --- | --- | --- | --- | --- | --- | --- | --- | --- |
| 80 | 2.2.8 | **Транспортировка к месту монтажа** | 4.28d | 2019-05-04 12:42 | 2019-05-08 19:30 |  | 2016-10-03 00:07 | 2016-10-05 12:36 | 2.52d | 141.02d |  | 2029-07-26 00:06 |  |  | 9.5h | Пн 03.10.16 0:07 | Ср 05.10.16 12:36 | 35,4 ч | 3 | 1.5h |
| 81 | 2.2.8.1 | транспортировка колпака плавающей головки 1 к месту монтажа с погрузкой | 0.7h | 2019-05-05 17:00 | 2019-05-05 17:42 | 73 | 2016-10-03 06:29 | 2016-10-03 06:59 | 0.5h | 72.1d | 73.17d | 2029-07-26 00:06 | 8-20 | Автопогрузчик | 0.7h | Пн 03.10.16 6:29 | Пн 03.10.16 6:59 | 0,5 ч | 4 | 0h |
| 82 | 2.2.8.2 | транспортировка колпака плавающей головки 2 к месту монтажа с погрузкой | 0.7h | 2019-05-06 09:12 | 2019-05-06 09:54 | 74 | 2016-10-03 12:08 | 2016-10-03 12:38 | 0.5h | 71.92d | 73.15d | 2029-07-26 00:06 | 8-20 | Автопогрузчик | 0.7h | Пн 03.10.16 12:09 | Пн 03.10.16 12:39 | 0,5 ч | 5 | 0h |
| 83 | 2.2.8.3 | транспортировка колпака распределительной камеры 1,2 к месту монтажа с погрузкой | 0.7h | 2019-05-04 12:42 | 2019-05-04 13:24 | 75 | 2016-10-03 00:07 | 2016-10-03 00:49 | 0.7h | 71.6d | 2.34d | 2029-07-26 00:06 | 8-20 | Автопогрузчик | 0.7h | Пн 03.10.16 0:07 | Пн 03.10.16 0:49 | 0,7 ч | 3 | 0h |
| 84 | 2.2.8.4 | транспортировка крышки плавающей головки 1 к месту монтажа с погрузкой | 0.7h | 2019-05-06 12:00 | 2019-05-06 12:42 | 76 | 2016-10-03 17:25 | 2016-10-03 17:55 | 0.5h | 71.8d |  | 2029-07-26 00:06 | 8-20 | Автопогрузчик | 0.7h | Пн 03.10.16 17:25 | Пн 03.10.16 17:55 | 0,5 ч | 5 | 0h |
| 85 | 2.2.8.5 | транспортировка крышки плавающей головки 2 к месту монтажа с погрузкой | 0.7h | 2019-05-06 16:12 | 2019-05-06 16:54 | 77 | 2016-10-03 18:37 | 2016-10-03 18:52 | 0.25h | 71.63d |  | 2029-07-26 00:06 | 8-20 | Автопогрузчик | 0.7h | Пн 03.10.16 18:37 | Пн 03.10.16 18:52 | 0,25 ч | 5 | 0h |
| 86 | 2.2.8.6 | транспортировка трубного пучка 1 к месту монтажа с погрузкой | 1h | 2019-05-06 08:30 | 2019-05-06 09:30 | 78 | 2016-10-05 05:48 | 2016-10-05 06:48 | 1h | 70.58d | 0.67d | 2029-07-26 00:06 | 8-20 | Автокран, г/п 40тн; Подрядная монтаж; Автотранспорт (п) (длинномер) | 3h | Ср 05.10.16 5:48 | Ср 05.10.16 6:48 | 1 ч | 5 | 0h |
| 87 | 2.2.8.7 | транспортировка трубного пучка 2 к месту монтажа с погрузкой | 1h | 2019-05-08 18:30 | 2019-05-08 19:30 | 79 | 2016-10-05 11:36 | 2016-10-05 12:36 | 1h | 69.25d | 0d | 2029-07-26 00:06 | 8-20 | Автокран, г/п 40тн; Подрядная монтаж; Автотранспорт (п) (длинномер) | 3h | Ср 05.10.16 11:36 | Ср 05.10.16 12:36 | 1 ч | 7 | 7.9h |
| 88 | 2.2.9 | **Монтаж внутренних элементов теплообменника** | 2.02d | 2019-05-07 13:30 | 2019-05-09 14:00 |  | 2016-10-05 15:36 | 2016-10-05 20:45 | 0.21d | 138.25d |  | 2029-07-26 00:06 |  |  | 15h | Ср 05.10.16 15:36 | Ср 05.10.16 20:46 | 5,16 ч | 6 | 0h |
| 89 | 2.2.9.1 | монтаж трубного пучка в корпус теплообменника 1 | 2h | 2019-05-07 13:30 | 2019-05-07 15:30 | 72, 86 | 2016-10-05 15:36 | 2016-10-05 17:36 | 2h | 69.92d | 0.67d | 2029-07-26 12:06 | 8-20 | Подрядная монтаж; Экстрактор; Автокран (г/п 100тн) | 6h | Ср 05.10.16 15:36 | Ср 05.10.16 17:36 | 2 ч | 6 | 0h |
| 90 | 2.2.9.2 | монтаж трубного пучка в корпус теплообменника 2 | 2h | 2019-05-08 19:30 | 2019-05-09 09:30 | 87, 89 | 2016-10-05 17:36 | 2016-10-05 19:55 | 2.33h | 69.25d | 0d | 2029-07-26 00:06 | 8-20 | Подрядная монтаж; Экстрактор; Автокран (г/п 100тн) | 6h | Ср 05.10.16 17:36 | Ср 05.10.16 19:56 | 2,33 ч | 7 | 0h |
| 91 | 2.2.9.3 | монтаж крышки плавающей головки 1 | 0.5h | 2019-05-09 12:30 | 2019-05-09 13:00 | 76, 90 | 2016-10-05 19:55 | 2016-10-05 20:25 | 0.5h | 69.25d | 0d | 2029-07-26 00:06 | 8-20 | Подрядная монтаж; Автокран (г/п 100тн) | 1h | Ср 05.10.16 19:56 | Ср 05.10.16 20:26 | 0,5 ч | 8 |  |
| 92 | 2.2.9.4 | монтаж крышки плавающей головки 2 | 0.5h | 2019-05-09 13:30 | 2019-05-09 14:00 | 77, 91 | 2016-10-05 20:25 | 2016-10-05 20:45 | 0.33h | 69.25d | 0d | 2029-07-26 00:06 | 8-20 | Подрядная монтаж; Автокран (г/п 100тн) | 1h | Ср 05.10.16 20:26 | Ср 05.10.16 20:46 | 0,33 ч | 8 |  |
| 93 | 2.2.9.5 | монтаж колпака распределительной камеры 1,2 | 0.5h | 2019-05-09 11:30 | 2019-05-09 12:00 | 83, 90 | 2016-10-05 19:55 | 2016-10-05 20:25 | 0.5h | 69.27d | 0d | 2029-07-26 00:06 | 8-20 | Подрядная монтаж; Автокран (г/п 100тн) | 1h | Ср 05.10.16 19:56 | Ср 05.10.16 20:26 | 0,5 ч | 8 |  |
| 94 | 2.2.10 | **Сбалчивание внутренних элементов теплообменника** | 0.65d | 2019-05-09 12:00 | 2019-05-10 03:36 |  | 2016-10-05 20:25 | 2016-10-06 11:13 | 0.62d | 138.27d | 0.85d | 2029-07-26 00:06 |  |  | 25.6h | Ср 05.10.16 20:26 | Чт 06.10.16 11:13 | 14,79 ч | 8 | 0h |
| 95 | 2.2.10.1 | Сборка фланцевого соединения колпака распределительной камеры 1 | 6h | 2019-05-09 12:00 | 2019-05-09 18:00 | 93 | 2016-10-05 20:25 | 2016-10-06 02:15 | 5.83h | 138.27d | 0d | 2029-07-26 00:06 |  | Подрядная монтаж | 6h | Ср 05.10.16 20:26 | Чт 06.10.16 2:16 | 5,83 ч | 8 |  |
| 96 | 2.2.10.2 | Сборка фланцевого соединения колпака распределительной камеры 2 | 6h | 2019-05-09 18:00 | 2019-05-10 00:00 | 95 | 2016-10-06 02:15 | 2016-10-06 08:05 | 5.83h | 138.27d | 0d | 2029-07-26 00:06 |  | Подрядная монтаж | 6h | Чт 06.10.16 2:16 | Чт 06.10.16 8:05 | 5,83 ч | 8 |  |
| 97 | 2.2.10.3 | Сборка фланцевого соединения трубопровода обвязки распределительной камеры (ВХОД) Ø250 | 1.8h | 2019-05-10 00:00 | 2019-05-10 01:48 | 96 | 2016-10-06 08:05 | 2016-10-06 09:43 | 1.63h | 138.27d | 0d | 2029-07-26 00:06 |  | Подрядная монтаж | 1.8h | Чт 06.10.16 8:05 | Чт 06.10.16 9:43 | 1,63 ч | 9 |  |
| 98 | 2.2.10.4 | Сборка фланцевого соединения трубопровода обвязки распределительной камеры (ВЫХОД) Ø250 | 1.8h | 2019-05-10 01:48 | 2019-05-10 03:36 | 97 | 2016-10-06 09:43 | 2016-10-06 11:13 | 1.5h | 138.27d |  | 2029-07-26 00:06 |  | Подрядная монтаж | 1.8h | Чт 06.10.16 9:43 | Чт 06.10.16 11:13 | 1,5 ч | 9 |  |
| 99 | 2.2.10.5 | Сборка фланцевого соединения крышки плавающей головки 1 | 5h | 2019-05-09 14:00 | 2019-05-09 19:00 | 92 | 2016-10-05 20:25 | 2016-10-06 02:15 | 5.83h | 138.42d | 0d | 2029-07-26 00:06 |  | Подрядная монтаж | 5h | Ср 05.10.16 20:26 | Чт 06.10.16 2:16 | 5,83 ч | 8 | 0h |
| 100 | 2.2.10.6 | Сборка фланцевого соединения крышки плавающей головки 2 | 5h | 2019-05-09 19:00 | 2019-05-10 00:00 | 99 | 2016-10-06 02:15 | 2016-10-06 07:05 | 4.83h | 138.42d |  | 2029-07-26 00:06 |  | Подрядная монтаж | 5h | Чт 06.10.16 2:16 | Чт 06.10.16 7:05 | 4,83 ч | 8 | 0h |
| 101 | 2.2.11 | **Монтаж элементов теплообменника** | 0.08d | 2019-05-11 08:06 | 2019-05-11 10:06 | 449 | 2016-10-06 22:13 | 2016-10-06 23:01 | 0.03d | 137.41d |  | 2029-07-26 00:06 |  |  | 2h | Чт 06.10.16 22:13 | Чт 06.10.16 23:01 | 0,8 ч | 10 | 0h |
| 102 | 2.2.11.1 | монтаж колпака плавающей головки 1 | 0.5h | 2019-05-11 08:06 | 2019-05-11 08:36 |  | 2016-10-06 22:13 | 2016-10-06 22:37 | 0.4h | 68.91d | 0d | 2029-07-26 00:06 | 8-20 | Подрядная монтаж; Автокран (г/п 100тн) | 1h | Чт 06.10.16 22:13 | Чт 06.10.16 22:37 | 0,4 ч | 10 | 0h |
| 103 | 2.2.11.2 | монтаж колпака плавающей головки 2 | 0.5h | 2019-05-11 09:36 | 2019-05-11 10:06 | 102 | 2016-10-06 22:37 | 2016-10-06 23:01 | 0.4h | 68.91d | 0d | 2029-07-26 00:06 | 8-20 | Подрядная монтаж; Автокран (г/п 100тн) | 1h | Чт 06.10.16 22:37 | Чт 06.10.16 23:01 | 0,4 ч | 10 | 0h |

| ID | WBS | Task | Duration | Start | Finish | Predecessors | Baseline start | Baseline finish | Baseline duration | Total slack | Free slack | Deadline | Calendar | Resources | Work | Текст2 | Текст4 | Текст10 | Число1 | Длительность2 |
| --- | --- | --- | --- | --- | --- | --- | --- | --- | --- | --- | --- | --- | --- | --- | --- | --- | --- | --- | --- | --- |
| 104 | 2.2.12 | **Сбалчивание элементов теплообменника** | 0.5d | 2019-05-11 10:06 | 2019-05-11 22:06 |  | 2016-10-06 23:01 | 2016-10-07 10:51 | 0.49d | 137.75d | 0.29d | 2029-07-26 00:06 |  |  | 12h | Чт 06.10.16 23:01 | Пт 07.10.16 10:51 | 11,83 ч | 10 | 0h |
| 105 | 2.2.12.1 | Сборка колпака плавающей головки 1 | 6h | 2019-05-11 10:06 | 2019-05-11 16:06 | 103 | 2016-10-06 23:01 | 2016-10-07 05:01 | 6h | 137.75d | 0d | 2029-07-26 00:06 |  | Подрядная монтаж | 6h | Чт 06.10.16 23:01 | Пт 07.10.16 5:01 | 6 ч | 10 | 0h |
| 106 | 2.2.12.2 | Сборка колпака плавающей головки 2 | 6h | 2019-05-11 16:06 | 2019-05-11 22:06 | 105 | 2016-10-07 05:01 | 2016-10-07 10:51 | 5.83h | 137.75d |  | 2029-07-26 00:06 |  | Подрядная монтаж | 6h | Пт 07.10.16 5:01 | Пт 07.10.16 10:51 | 5,83 ч | 10 | 0h |
| 107 | 2.3 | **Ремонт теплообменников Т-201.С2/3-4** | 8.73d | 2019-05-03 05:00 | 2019-05-11 22:36 | 1 | 2016-10-02 20:25 | 2016-10-07 22:51 | 5.1d | 137.89d |  | 2029-07-26 00:06 |  |  | 180.2h | Вс 02.10.16 20:25 | Пт 07.10.16 22:51 | 156,44 ч | 2 | 0h |
| 108 | 2.3.1 | **Разбалчивание элементов теплообменника** | 0.88d | 2019-05-03 05:00 | 2019-05-04 02:00 |  | 2016-10-02 20:25 | 2016-10-03 08:25 | 0.5d | 138.1d |  | 2029-07-26 00:06 |  |  | 23.6h | Вс 02.10.16 20:25 | Пн 03.10.16 8:25 | 12 ч | 2 | 0h |
| 109 | 2.3.1.1 | Разболтить фланцевое соединение трубопровода обвязки распределительной камеры (ВХОД) Ø250 | 1.8h | 2019-05-03 05:00 | 2019-05-03 06:48 |  | 2016-10-02 20:25 | 2016-10-02 22:13 | 1.8h | 142.53d | 0d | 2029-07-26 00:06 |  | Подрядная монтаж | 1.8h | Вс 02.10.16 20:25 | Вс 02.10.16 22:13 | 1,8 ч | 2 |  |
| 110 | 2.3.1.2 | Разболтить фланцевое соединение трубопровода обвязки распределительной камеры (ВЫХОД) Ø250 | 1.8h | 2019-05-03 10:24 | 2019-05-03 12:12 | 109 | 2016-10-02 22:13 | 2016-10-03 00:01 | 1.8h | 142.53d | 0d | 2029-07-26 00:06 |  | Подрядная монтаж | 1.8h | Вс 02.10.16 22:13 | Пн 03.10.16 0:01 | 1,8 ч | 2 |  |
| 111 | 2.3.1.3 | Разболтить фланцевое соединение колпака распределительной камеры 1 | 4h | 2019-05-03 17:00 | 2019-05-03 21:00 | 110 | 2016-10-02 20:25 | 2016-10-03 02:25 | 6h | 142.53d | 0d | 2029-07-26 00:06 |  | Подрядная монтаж | 8h | Вс 02.10.16 20:25 | Пн 03.10.16 2:25 | 6 ч | 2 |  |
| 112 | 2.3.1.4 | Разболтить фланцевое соединение колпака распределительной камеры 2 | 4h | 2019-05-03 22:00 | 2019-05-04 02:00 | 111 | 2016-10-03 02:25 | 2016-10-03 07:14 | 4.83h | 142.53d | 0.25d | 2029-07-26 00:06 |  | Подрядная монтаж | 4h | Пн 03.10.16 2:25 | Пн 03.10.16 7:15 | 4,83 ч | 2 |  |
| 113 | 2.3.1.5 | Разболтить фланцевое соединение колпака плавающей головки 1 | 4h | 2019-05-03 05:00 | 2019-05-03 09:00 |  | 2016-10-02 20:25 | 2016-10-03 02:25 | 6h | 138.1d | 0d | 2029-07-26 00:06 |  | Подрядная монтаж | 4h | Вс 02.10.16 20:25 | Пн 03.10.16 2:25 | 6 ч | 2 |  |
| 114 | 2.3.1.6 | Разболтить фланцевое соединение колпака плавающей головки 2 | 4h | 2019-05-03 09:00 | 2019-05-03 13:00 | 113 | 2016-10-03 02:25 | 2016-10-03 08:25 | 6h | 138.1d | 0d | 2029-07-26 00:06 |  | Подрядная монтаж | 4h | Пн 03.10.16 2:25 | Пн 03.10.16 8:25 | 6 ч | 2 |  |
| 115 | 2.3.2 | **Демонтаж элементов теплообменника** | 0.81d | 2019-05-03 13:30 | 2019-05-04 09:00 |  | 2016-10-02 20:25 | 2016-10-03 09:14 | 0.53d | 138.1d |  | 2029-07-26 00:06 |  |  | 3h | Вс 02.10.16 20:25 | Пн 03.10.16 9:15 | 53,46 ч | 2 | 8.85h |
| 116 | 2.3.2.1 | Демонтировать колпак плавающей головки 1 | 0.5h | 2019-05-03 13:30 | 2019-05-03 14:00 | 114 | 2016-10-03 02:25 | 2016-10-03 03:25 | 1h | 69.1d | 0d | 2029-07-26 00:06 | 8-20 | Подрядная монтаж; Автокран (г/п 100тн) | 1h | Пн 03.10.16 2:25 | Пн 03.10.16 3:25 | 1 ч | 2 | 0h |
| 117 | 2.3.2.2 | Демонтировать колпак плавающей головки 2 | 0.5h | 2019-05-03 16:30 | 2019-05-03 17:00 | 116 | 2016-10-03 08:25 | 2016-10-03 09:14 | 0.83h | 69.1d | 0d | 2029-07-26 00:06 | 8-20 | Подрядная монтаж; Автокран (г/п 100тн) | 1h | Пн 03.10.16 8:25 | Пн 03.10.16 9:15 | 0,83 ч | 2 | 0h |
| 118 | 2.3.2.3 | Демонтировать колпак распределительной камеры 1,2 | 0.5h | 2019-05-04 08:30 | 2019-05-04 09:00 | 112 | 2016-10-02 20:25 | 2016-10-02 21:14 | 0.83h | 71.28d | 0d | 2029-07-26 00:06 | 8-20 | Подрядная монтаж; Автокран (г/п 100тн) | 1h | Вс 02.10.16 20:25 | Вс 02.10.16 21:15 | 0,83 ч | 3 | 0h |
| 119 | 2.3.3 | **Чистка крепежа плавающих головок** | 0.29d | 2019-05-03 17:30 | 2019-05-04 00:30 |  | 2016-10-02 20:25 | 2016-10-03 09:14 | 0.53d | 138.1d |  | 2029-07-26 00:06 |  |  | 2h | Вс 02.10.16 20:25 | Пн 03.10.16 9:15 | 53,46 ч | 2 | 8.85h |
| 120 | 2.3.3.1 | Чистка крепежа плавающей головки 1 | 1h | 2019-05-03 17:30 | 2019-05-03 18:30 | 117 | 2016-10-02 20:25 | 2016-10-02 21:14 | 0.83h | 138.1d | 0d | 2029-07-26 00:06 |  | Чистка корпуса | 1h | Вс 02.10.16 20:25 | Вс 02.10.16 21:15 | 0,83 ч | 2 | 0h |
| 121 | 2.3.3.2 | Чистка крепежа плавающей головки 2 | 1h | 2019-05-03 23:30 | 2019-05-04 00:30 | 120 | 2016-10-03 02:25 | 2016-10-03 03:25 | 1h | 138.1d | 0d | 2029-07-26 00:06 |  | Чистка корпуса | 1h | Пн 03.10.16 2:25 | Пн 03.10.16 3:25 | 1 ч | 2 | 0h |
| 122 | 2.3.4 | **Разбалчивание внутренних элементов теплообменника** | 0.54d | 2019-05-04 00:30 | 2019-05-04 13:30 |  | 2016-10-03 03:25 | 2016-10-03 15:25 | 0.5d | 138.1d |  | 2029-07-26 00:06 |  |  | 10h | Пн 03.10.16 3:25 | Пн 03.10.16 15:25 | 12 ч | 3 | 0h |
| 123 | 2.3.4.1 | Разболтить фланцевое соединение крышки плавающей головки 1 | 5h | 2019-05-04 00:30 | 2019-05-04 05:30 | 121 | 2016-10-03 03:25 | 2016-10-03 09:25 | 6h | 138.1d | 0d | 2029-07-26 00:06 |  | Подрядная монтаж | 5h | Пн 03.10.16 3:25 | Пн 03.10.16 9:25 | 6 ч | 3 |  |
| 124 | 2.3.4.2 | Разболтить фланцевое соединение крышки плавающей головки 2 | 5h | 2019-05-04 08:30 | 2019-05-04 13:30 | 123 | 2016-10-03 09:25 | 2016-10-03 15:25 | 6h | 138.1d | 0d | 2029-07-26 00:06 |  | Подрядная монтаж | 5h | Пн 03.10.16 9:25 | Пн 03.10.16 15:25 | 6 ч | 3 |  |
| 125 | 2.3.5 | **Демонтаж внутренних элементов теплообменника** | 1.9d | 2019-05-04 14:00 | 2019-05-06 11:30 |  | 2016-10-03 15:25 | 2016-10-04 02:35 | 0.47d | 138.1d |  | 2029-07-26 00:06 |  |  | 14h | Пн 03.10.16 15:25 | Вт 04.10.16 2:35 | 11,17 ч | 3 | 0h |
| 126 | 2.3.5.1 | Демонтировать крышку плавающей головки 1 | 0.5h | 2019-05-04 14:00 | 2019-05-04 14:30 | 124 | 2016-10-03 15:25 | 2016-10-03 15:55 | 0.5h | 69.1d | 0d | 2029-07-26 00:06 | 8-20 | Подрядная монтаж; Автокран (г/п 100тн) | 1h | Пн 03.10.16 15:25 | Пн 03.10.16 15:55 | 0,5 ч | 3 | 0h |
| 127 | 2.3.5.2 | Демонтировать крышку плавающей головки 2 | 0.5h | 2019-05-04 17:00 | 2019-05-04 17:30 | 126 | 2016-10-03 15:55 | 2016-10-03 16:25 | 0.5h | 69.1d | 0d | 2029-07-26 00:06 | 8-20 | Подрядная монтаж; Автокран (г/п 100тн) | 1h | Пн 03.10.16 15:55 | Пн 03.10.16 16:25 | 0,5 ч | 3 | 0h |
| 128 | 2.3.5.3 | Демонтировать трубный пучок теплообменника 1 | 2h | 2019-05-05 09:30 | 2019-05-05 11:30 | 127 | 2016-10-03 16:25 | 2016-10-04 00:35 | 8.17h | 69.31d | 0d | 2029-07-26 00:06 | 8-20 | Подрядная монтаж; Экстрактор; Автокран (г/п 100тн) | 6h | Пн 03.10.16 16:25 | Вт 04.10.16 0:35 | 8,17 ч | 4 | 0h |
| 129 | 2.3.5.4 | Демонтировать трубный пучок теплообменника 2 | 2h | 2019-05-06 09:30 | 2019-05-06 11:30 | 128 | 2016-10-04 00:35 | 2016-10-04 02:35 | 2h | 69.31d | 0d | 2029-07-26 00:06 | 8-20 | Подрядная монтаж; Экстрактор; Автокран (г/п 100тн) | 6h | Вт 04.10.16 0:35 | Вт 04.10.16 2:35 | 2 ч | 5 | 0h |

| ID | WBS | Task | Duration | Start | Finish | Predecessors | Baseline start | Baseline finish | Baseline duration | Total slack | Free slack | Deadline | Calendar | Resources | Work | Текст2 | Текст4 | Текст10 | Число1 | Длительность2 |
| --- | --- | --- | --- | --- | --- | --- | --- | --- | --- | --- | --- | --- | --- | --- | --- | --- | --- | --- | --- | --- |
| 130 | 2.3.6 | **Транспортировка к месту чистки** | 2.93d | 2019-05-03 14:12 | 2019-05-06 12:30 |  | 2016-10-02 21:14 | 2016-10-04 10:00 | 1.53d | 141.17d |  | 2029-07-26 00:06 |  |  | 9.5h | Вс 02.10.16 21:15 | Вт 04.10.16 10:00 | 12,17 ч | 2 | 0h |
| 131 | 2.3.6.1 | Транспортировка колпака плавающей головки 1 к месту чистки с разгрузкой | 0.7h | 2019-05-03 14:12 | 2019-05-03 14:54 | 116 | 2016-10-03 03:25 | 2016-10-03 04:07 | 0.7h | 72.07d | 0d | 2029-07-26 00:06 | 8-20 | Автопогрузчик | 0.7h | Пн 03.10.16 3:25 | Пн 03.10.16 4:07 | 0,7 ч | 2 | 0h |
| 132 | 2.3.6.2 | Транспортировка колпака плавающей головки 2 к месту чистки с разгрузкой | 0.7h | 2019-05-03 18:24 | 2019-05-03 19:06 | 117 | 2016-10-03 09:14 | 2016-10-03 09:56 | 0.7h | 71.8d | 0d | 2029-07-26 00:06 | 8-20 | Автопогрузчик | 0.7h | Пн 03.10.16 9:15 | Пн 03.10.16 9:57 | 0,7 ч | 2 | 0h |
| 133 | 2.3.6.3 | Транспортировка колпака распределительной камеры 1,2 к месту чистки с разгрузкой | 0.7h | 2019-05-04 09:12 | 2019-05-04 09:54 | 118 | 2016-10-02 21:14 | 2016-10-02 21:56 | 0.7h | 71.28d | 0d | 2029-07-26 00:06 | 8-20 | Автопогрузчик | 0.7h | Вс 02.10.16 21:15 | Вс 02.10.16 21:57 | 0,7 ч | 3 | 0h |
| 134 | 2.3.6.4 | Транспортировка крышки плавающей головки 1 к месту чистки с разгрузкой | 0.7h | 2019-05-04 14:42 | 2019-05-04 15:24 | 126 | 2016-10-03 15:55 | 2016-10-03 16:25 | 0.5h | 71.24d | 0d | 2029-07-26 00:06 | 8-20 | Автопогрузчик | 0.7h | Пн 03.10.16 15:55 | Пн 03.10.16 16:25 | 0,25 ч | 3 |  |
| 135 | 2.3.6.5 | Транспортировка крышки плавающей головки 2 к месту чистки с разгрузкой | 0.7h | 2019-05-04 18:54 | 2019-05-04 19:36 | 127 | 2016-10-03 16:25 | 2016-10-03 17:07 | 0.7h | 71.08d | 0d | 2029-07-26 00:06 | 8-20 | Автопогрузчик | 0.7h | Пн 03.10.16 16:25 | Пн 03.10.16 17:07 | 0,7 ч | 3 | 0h |
| 136 | 2.3.6.6 | Транспортировка трубного пучка 1 к месту чистки с разгрузкой | 1h | 2019-05-05 11:30 | 2019-05-05 12:30 | 128 | 2016-10-04 00:35 | 2016-10-04 09:00 | 8.41h | 70.54d | 0d | 2029-07-26 00:06 | 8-20 | Автотранспорт (п) (длинномер); Подрядная монтаж; Автокран, г/п 40тн | 3h | Вт 04.10.16 0:35 | Вт 04.10.16 9:00 | 1,5 ч | 4 | 5.42h |
| 137 | 2.3.6.7 | Транспортировка трубного пучка 2 к месту чистки с разгрузкой | 1h | 2019-05-06 11:30 | 2019-05-06 12:30 | 129 | 2016-10-04 09:00 | 2016-10-04 10:00 | 1h | 69.31d | 0d | 2029-07-26 00:06 | 8-20 | Автотранспорт (п) (длинномер); Подрядная монтаж; Автокран, г/п 40тн | 3h | Вт 04.10.16 9:00 | Вт 04.10.16 10:00 | 1 ч | 5 | 0h |
| 138 | 2.3.7 | **Чистка элементов теплообменника** | 5.22d | 2019-05-03 15:12 | 2019-05-08 20:30 |  | 2016-10-02 21:56 | 2016-10-05 11:36 | 2.57d | 138.94d |  | 2029-07-26 00:06 |  |  | 54h | Вс 02.10.16 21:57 | Ср 05.10.16 11:36 | 36,57 ч | 2 | 0h |
| 139 | 2.3.7.1 | чистка от отложений корпуса 1 теплообменника | 4h | 2019-05-06 13:30 | 2019-05-06 17:30 | 129 | 2016-10-04 00:35 | 2016-10-04 03:45 | 3.17h | 139.79d | 0d | 2029-07-26 00:06 |  | Чистка корпуса | 4h | Вт 04.10.16 0:35 | Вт 04.10.16 3:45 | 3,17 ч | 5 |  |
| 140 | 2.3.7.2 | чистка от отложений корпуса 2 теплообменника | 4h | 2019-05-07 13:30 | 2019-05-07 17:30 | 139 | 2016-10-04 02:35 | 2016-10-04 06:35 | 4h | 139.79d | 0d | 2029-07-26 00:06 |  | Чистка корпуса | 4h | Вт 04.10.16 2:35 | Вт 04.10.16 6:35 | 4 ч | 6 |  |
| 141 | 2.3.7.3 | чистка от отложений колпака плавающей головки 1 | 1h | 2019-05-03 15:12 | 2019-05-03 16:12 | 131 | 2016-10-03 04:07 | 2016-10-03 06:29 | 2.37h | 144.07d | 0d | 2029-07-26 00:06 |  | Чистка колпаков | 1h | Пн 03.10.16 4:07 | Пн 03.10.16 6:29 | 2,37 ч | 2 |  |
| 142 | 2.3.7.4 | чистка от отложений колпака плавающей головки 2 | 1h | 2019-05-03 21:12 | 2019-05-03 22:12 | 132 | 2016-10-03 09:56 | 2016-10-03 12:08 | 2.2h | 143.8d | 0d | 2029-07-26 00:06 |  | Чистка колпаков | 1h | Пн 03.10.16 9:57 | Пн 03.10.16 12:09 | 2,2 ч | 2 |  |
| 143 | 2.3.7.5 | чистка от отложений колпака 1,2 распределительной камеры | 2h | 2019-05-04 11:12 | 2019-05-04 13:12 | 133 | 2016-10-02 21:56 | 2016-10-03 00:07 | 2.17h | 142.28d | 0d | 2029-07-26 00:06 |  | Чистка колпаков | 2h | Вс 02.10.16 21:57 | Пн 03.10.16 0:07 | 2,17 ч | 3 |  |
| 144 | 2.3.7.6 | чистка от отложений крышки плавающей головки 1 | 1h | 2019-05-04 22:12 | 2019-05-04 23:12 | 134 | 2016-10-03 16:25 | 2016-10-03 17:25 | 1h | 142.74d | 0.37d | 2029-07-26 00:06 |  | Чистка колпаков | 1h | Пн 03.10.16 16:25 | Пн 03.10.16 17:25 | 1 ч | 3 |  |
| 145 | 2.3.7.7 | чистка от отложений крышки плавающей головки 2 | 1h | 2019-05-05 04:12 | 2019-05-05 05:12 | 135 | 2016-10-03 17:07 | 2016-10-03 18:37 | 1.5h | 142.57d | 0.12d | 2029-07-26 00:06 |  | Чистка колпаков | 1h | Пн 03.10.16 17:07 | Пн 03.10.16 18:37 | 1,5 ч | 4 |  |
| 146 | 2.3.7.8 | чистка от отложений трубного пучка 1 | 20h | 2019-05-05 12:30 | 2019-05-06 08:30 | 136 | 2016-10-04 09:00 | 2016-10-05 01:00 | 16h | 141.04d | 0d | 2029-07-26 00:06 |  | Чистка пучков | 20h | Вт 04.10.16 9:00 | Ср 05.10.16 1:00 | 16 ч | 4 |  |
| 147 | 2.3.7.9 | чистка от отложений трубного пучка 2 | 20h | 2019-05-08 00:30 | 2019-05-08 20:30 | 137 | 2016-10-04 10:00 | 2016-10-05 02:00 | 16h | 138.71d | 0.48d | 2029-07-26 00:06 |  | Чистка пучков | 20h | Вт 04.10.16 10:00 | Ср 05.10.16 2:00 | 16 ч | 7 |  |
| 148 | 2.3.8 | **Транспортировка к месту монтажа** | 3.95d | 2019-05-05 10:06 | 2019-05-09 09:00 |  | 2016-10-03 00:07 | 2016-10-05 12:36 | 2.52d | 140.46d |  | 2029-07-26 00:06 |  |  | 9.5h | Пн 03.10.16 0:07 | Ср 05.10.16 12:36 | 35,4 ч | 4 | 1.5h |
| 149 | 2.3.8.1 | транспортировка колпака плавающей головки 1 к месту монтажа с погрузкой | 0.7h | 2019-05-05 17:42 | 2019-05-05 18:24 | 141 | 2016-10-03 06:29 | 2016-10-03 06:59 | 0.5h | 72.07d | 73.17d | 2029-07-26 00:06 | 8-20 | Автопогрузчик | 0.7h | Пн 03.10.16 6:29 | Пн 03.10.16 6:59 | 0,5 ч | 4 | 0h |
| 150 | 2.3.8.2 | транспортировка колпака плавающей головки 2 к месту монтажа с погрузкой | 0.7h | 2019-05-06 09:54 | 2019-05-06 10:36 | 142 | 2016-10-03 12:08 | 2016-10-03 12:38 | 0.5h | 71.89d | 73.15d | 2029-07-26 00:06 | 8-20 | Автопогрузчик | 0.7h | Пн 03.10.16 12:09 | Пн 03.10.16 12:39 | 0,5 ч | 5 | 0h |
| 151 | 2.3.8.3 | транспортировка колпака распределительной камеры 1,2 к месту монтажа с погрузкой | 0.7h | 2019-05-05 10:06 | 2019-05-05 10:48 | 143 | 2016-10-03 00:07 | 2016-10-03 00:49 | 0.7h | 71.28d | 2.03d | 2029-07-26 00:06 | 8-20 | Автопогрузчик | 0.7h | Пн 03.10.16 0:07 | Пн 03.10.16 0:49 | 0,7 ч | 4 | 0h |
| 152 | 2.3.8.4 | транспортировка крышки плавающей головки 1 к месту монтажа с погрузкой | 0.7h | 2019-05-06 12:42 | 2019-05-06 13:24 | 144 | 2016-10-03 17:25 | 2016-10-03 17:55 | 0.5h | 71.78d |  | 2029-07-26 00:06 | 8-20 | Автопогрузчик | 0.7h | Пн 03.10.16 17:25 | Пн 03.10.16 17:55 | 0,5 ч | 5 | 0h |
| 153 | 2.3.8.5 | транспортировка крышки плавающей головки 2 к месту монтажа с погрузкой | 0.7h | 2019-05-06 16:54 | 2019-05-06 17:36 | 145 | 2016-10-03 18:37 | 2016-10-03 18:52 | 0.25h | 71.6d |  | 2029-07-26 00:06 | 8-20 | Автопогрузчик | 0.7h | Пн 03.10.16 18:37 | Пн 03.10.16 18:52 | 0,25 ч | 5 | 0h |
| 154 | 2.3.8.6 | транспортировка трубного пучка 1 к месту монтажа с погрузкой | 1h | 2019-05-06 10:30 | 2019-05-06 11:30 | 146 | 2016-10-05 05:48 | 2016-10-05 06:48 | 1h | 70.54d | 0.75d | 2029-07-26 00:06 | 8-20 | Автокран, г/п 40тн; Подрядная монтаж; Автотранспорт (п) (длинномер) | 3h | Ср 05.10.16 5:48 | Ср 05.10.16 6:48 | 1 ч | 5 | 0h |
| 155 | 2.3.8.7 | транспортировка трубного пучка 2 к месту монтажа с погрузкой | 1h | 2019-05-09 08:00 | 2019-05-09 09:00 | 147 | 2016-10-05 11:36 | 2016-10-05 12:36 | 1h | 69.23d | 0d | 2029-07-26 00:06 | 8-20 | Автокран, г/п 40тн; Подрядная монтаж; Автотранспорт (п) (длинномер) | 3h | Ср 05.10.16 11:36 | Ср 05.10.16 12:36 | 1 ч | 8 | 7.9h |

| ID | WBS | Task | Duration | Start | Finish | Predecessors | Baseline start | Baseline finish | Baseline duration | Total slack | Free slack | Deadline | Calendar | Resources | Work | Текст2 | Текст4 | Текст10 | Число1 | Длительность2 |
| --- | --- | --- | --- | --- | --- | --- | --- | --- | --- | --- | --- | --- | --- | --- | --- | --- | --- | --- | --- | --- |
| 156 | 2.3.9 | **Монтаж внутренних элементов теплообменника** | 1.88d | 2019-05-07 17:30 | 2019-05-09 14:30 |  | 2016-10-05 15:36 | 2016-10-05 20:45 | 0.21d | 138.23d |  | 2029-07-26 00:06 |  |  | 15h | Ср 05.10.16 15:36 | Ср 05.10.16 20:46 | 5,16 ч | 6 | 0h |
| 157 | 2.3.9.1 | монтаж трубного пучка в корпус теплообменника 1 | 2h | 2019-05-07 17:30 | 2019-05-07 19:30 | 140, 154 | 2016-10-05 15:36 | 2016-10-05 17:36 | 2h | 69.79d | 0.56d | 2029-07-26 00:06 | 8-20 | Подрядная монтаж; Экстрактор; Автокран (г/п 100тн) | 6h | Ср 05.10.16 15:36 | Ср 05.10.16 17:36 | 2 ч | 6 | 0h |
| 158 | 2.3.9.2 | монтаж трубного пучка в корпус теплообменника 2 | 2h | 2019-05-09 09:30 | 2019-05-09 11:30 | 155, 157 | 2016-10-05 17:36 | 2016-10-05 19:55 | 2.33h | 69.23d | 0d | 2029-07-26 00:06 | 8-20 | Подрядная монтаж; Экстрактор; Автокран (г/п 100тн) | 6h | Ср 05.10.16 17:36 | Ср 05.10.16 19:56 | 2,33 ч | 8 | 0h |
| 159 | 2.3.9.3 | монтаж крышки плавающей головки 1 | 0.5h | 2019-05-09 13:00 | 2019-05-09 13:30 | 144, 158 | 2016-10-05 19:55 | 2016-10-05 20:25 | 0.5h | 69.23d | 0d | 2029-07-26 00:06 | 8-20 | Подрядная монтаж; Автокран (г/п 100тн) | 1h | Ср 05.10.16 19:56 | Ср 05.10.16 20:26 | 0,5 ч | 8 |  |
| 160 | 2.3.9.4 | монтаж крышки плавающей головки 2 | 0.5h | 2019-05-09 14:00 | 2019-05-09 14:30 | 145, 159 | 2016-10-05 20:25 | 2016-10-05 20:45 | 0.33h | 69.23d | 0d | 2029-07-26 00:06 | 8-20 | Подрядная монтаж; Автокран (г/п 100тн) | 1h | Ср 05.10.16 20:26 | Ср 05.10.16 20:46 | 0,33 ч | 8 |  |
| 161 | 2.3.9.5 | монтаж колпака распределительной камеры 1,2 | 0.5h | 2019-05-09 12:00 | 2019-05-09 12:30 | 151, 158 | 2016-10-05 19:55 | 2016-10-05 20:25 | 0.5h | 69.25d | 0d | 2029-07-26 00:06 | 8-20 | Подрядная монтаж; Автокран (г/п 100тн) | 1h | Ср 05.10.16 19:56 | Ср 05.10.16 20:26 | 0,5 ч | 8 |  |
| 162 | 2.3.10 | **Сбалчивание внутренних элементов теплообменника** | 0.65d | 2019-05-09 12:30 | 2019-05-10 04:06 |  | 2016-10-05 20:25 | 2016-10-06 11:13 | 0.62d | 138.25d | 0.83d | 2029-07-26 00:06 |  |  | 25.6h | Ср 05.10.16 20:26 | Чт 06.10.16 11:13 | 14,79 ч | 8 | 0h |
| 163 | 2.3.10.1 | Сборка фланцевого соединения колпака распределительной камеры 1 | 6h | 2019-05-09 12:30 | 2019-05-09 18:30 | 161 | 2016-10-05 20:25 | 2016-10-06 02:15 | 5.83h | 138.25d | 0d | 2029-07-26 00:06 |  | Подрядная монтаж | 6h | Ср 05.10.16 20:26 | Чт 06.10.16 2:16 | 5,83 ч | 8 |  |
| 164 | 2.3.10.2 | Сборка фланцевого соединения колпака распределительной камеры 2 | 6h | 2019-05-09 18:30 | 2019-05-10 00:30 | 163 | 2016-10-06 02:15 | 2016-10-06 08:05 | 5.83h | 138.25d | 0d | 2029-07-26 00:06 |  | Подрядная монтаж | 6h | Чт 06.10.16 2:16 | Чт 06.10.16 8:05 | 5,83 ч | 8 |  |
| 165 | 2.3.10.3 | Сборка фланцевого соединения трубопровода обвязки распределительной камеры (ВХОД) Ø250 | 1.8h | 2019-05-10 00:30 | 2019-05-10 02:18 | 164 | 2016-10-06 08:05 | 2016-10-06 09:43 | 1.63h | 138.25d | 0d | 2029-07-26 00:06 |  | Подрядная монтаж | 1.8h | Чт 06.10.16 8:05 | Чт 06.10.16 9:43 | 1,63 ч | 9 |  |
| 166 | 2.3.10.4 | Сборка фланцевого соединения трубопровода обвязки распределительной камеры (ВЫХОД) Ø250 | 1.8h | 2019-05-10 02:18 | 2019-05-10 04:06 | 165 | 2016-10-06 09:43 | 2016-10-06 11:13 | 1.5h | 138.25d |  | 2029-07-26 00:06 |  | Подрядная монтаж | 1.8h | Чт 06.10.16 9:43 | Чт 06.10.16 11:13 | 1,5 ч | 9 |  |
| 167 | 2.3.10.5 | Сборка фланцевого соединения крышки плавающей головки 1 | 5h | 2019-05-09 14:30 | 2019-05-09 19:30 | 160 | 2016-10-05 20:25 | 2016-10-06 02:15 | 5.83h | 138.4d | 0d | 2029-07-26 00:06 |  | Подрядная монтаж | 5h | Ср 05.10.16 20:26 | Чт 06.10.16 2:16 | 5,83 ч | 8 | 0h |
| 168 | 2.3.10.6 | Сборка фланцевого соединения крышки плавающей головки 2 | 5h | 2019-05-09 19:30 | 2019-05-10 00:30 | 167 | 2016-10-06 02:15 | 2016-10-06 07:05 | 4.83h | 138.4d |  | 2029-07-26 00:06 |  | Подрядная монтаж | 5h | Чт 06.10.16 2:16 | Чт 06.10.16 7:05 | 4,83 ч | 8 | 0h |
| 169 | 2.3.11 | **Монтаж элементов теплообменника** | 0.08d | 2019-05-11 08:36 | 2019-05-11 10:36 | 449 | 2016-10-06 22:13 | 2016-10-06 23:01 | 0.03d | 137.39d |  | 2029-07-26 00:06 |  |  | 2h | Чт 06.10.16 22:13 | Чт 06.10.16 23:01 | 0,8 ч | 10 | 0h |
| 170 | 2.3.11.1 | монтаж колпака плавающей головки 1 | 0.5h | 2019-05-11 08:36 | 2019-05-11 09:06 |  | 2016-10-06 22:13 | 2016-10-06 22:37 | 0.4h | 68.89d | 0d | 2029-07-26 00:06 | 8-20 | Подрядная монтаж; Автокран (г/п 100тн) | 1h | Чт 06.10.16 22:13 | Чт 06.10.16 22:37 | 0,4 ч | 10 | 0h |
| 171 | 2.3.11.2 | монтаж колпака плавающей головки 2 | 0.5h | 2019-05-11 10:06 | 2019-05-11 10:36 | 170 | 2016-10-06 22:37 | 2016-10-06 23:01 | 0.4h | 68.89d | 0d | 2029-07-26 00:06 | 8-20 | Подрядная монтаж; Автокран (г/п 100тн) | 1h | Чт 06.10.16 22:37 | Чт 06.10.16 23:01 | 0,4 ч | 10 | 0h |
| 172 | 2.3.12 | **Сбалчивание элементов теплообменника** | 0.5d | 2019-05-11 10:36 | 2019-05-11 22:36 |  | 2016-10-06 23:01 | 2016-10-07 10:51 | 0.49d | 137.73d | 0.27d | 2029-07-26 00:06 |  |  | 12h | Чт 06.10.16 23:01 | Пт 07.10.16 10:51 | 11,83 ч | 10 | 0h |
| 173 | 2.3.12.1 | Сборка колпака плавающей головки 1 | 6h | 2019-05-11 10:36 | 2019-05-11 16:36 | 171 | 2016-10-06 23:01 | 2016-10-07 05:01 | 6h | 137.73d | 0d | 2029-07-26 00:06 |  | Подрядная монтаж | 6h | Чт 06.10.16 23:01 | Пт 07.10.16 5:01 | 6 ч | 10 | 0h |
| 174 | 2.3.12.2 | Сборка колпака плавающей головки 2 | 6h | 2019-05-11 16:36 | 2019-05-11 22:36 | 173 | 2016-10-07 05:01 | 2016-10-07 10:51 | 5.83h | 137.73d |  | 2029-07-26 00:06 |  | Подрядная монтаж | 6h | Пт 07.10.16 5:01 | Пт 07.10.16 10:51 | 5,83 ч | 10 | 0h |
| 175 | 2.4 | **Ремонт теплообменников Т-201.С2/1-2** | 8.75d | 2019-05-03 05:00 | 2019-05-11 23:06 | 1 | 2016-10-02 20:25 | 2016-10-07 22:51 | 5.1d | 137.08d |  | 2029-07-26 00:06 |  |  | 180.2h | Вс 02.10.16 20:25 | Пт 07.10.16 22:51 | 156,44 ч | 2 | 0h |
| 176 | 2.4.1 | **Разбалчивание элементов теплообменника** | 0.92d | 2019-05-03 05:00 | 2019-05-04 03:00 |  | 2016-10-02 20:25 | 2016-10-03 08:25 | 0.5d | 137.08d |  | 2029-07-26 00:06 |  |  | 23.6h | Вс 02.10.16 20:25 | Пн 03.10.16 8:25 | 12 ч | 2 | 0h |
| 177 | 2.4.1.1 | Разболтить фланцевое соединение трубопровода обвязки распределительной камеры (ВХОД) Ø250 | 1.8h | 2019-05-03 06:48 | 2019-05-03 08:36 |  | 2016-10-02 20:25 | 2016-10-02 22:13 | 1.8h | 142.39d | 0d | 2029-07-26 00:06 |  | Подрядная монтаж | 1.8h | Вс 02.10.16 20:25 | Вс 02.10.16 22:13 | 1,8 ч | 2 |  |
| 178 | 2.4.1.2 | Разболтить фланцевое соединение трубопровода обвязки распределительной камеры (ВЫХОД) Ø250 | 1.8h | 2019-05-03 12:12 | 2019-05-03 14:00 | 177 | 2016-10-02 22:13 | 2016-10-03 00:01 | 1.8h | 142.39d | 0d | 2029-07-26 00:06 |  | Подрядная монтаж | 1.8h | Вс 02.10.16 22:13 | Пн 03.10.16 0:01 | 1,8 ч | 2 |  |
| 179 | 2.4.1.3 | Разболтить фланцевое соединение колпака распределительной камеры 1 | 4h | 2019-05-03 18:00 | 2019-05-03 22:00 | 178 | 2016-10-02 20:25 | 2016-10-03 02:25 | 6h | 142.39d | 0d | 2029-07-26 00:06 |  | Подрядная монтаж | 8h | Вс 02.10.16 20:25 | Пн 03.10.16 2:25 | 6 ч | 2 |  |
| 180 | 2.4.1.4 | Разболтить фланцевое соединение колпака распределительной камеры 2 | 4h | 2019-05-03 23:00 | 2019-05-04 03:00 | 179 | 2016-10-03 02:25 | 2016-10-03 07:14 | 4.83h | 142.39d | 0.21d | 2029-07-26 00:06 |  | Подрядная монтаж | 4h | Пн 03.10.16 2:25 | Пн 03.10.16 7:15 | 4,83 ч | 2 |  |
| 181 | 2.4.1.5 | Разболтить фланцевое соединение колпака плавающей головки 1 | 4h | 2019-05-03 05:00 | 2019-05-03 09:00 |  | 2016-10-02 20:25 | 2016-10-03 02:25 | 6h | 137.08d | 0d | 2029-07-26 00:06 |  | Подрядная монтаж | 4h | Вс 02.10.16 20:25 | Пн 03.10.16 2:25 | 6 ч | 2 |  |
| 182 | 2.4.1.6 | Разболтить фланцевое соединение колпака плавающей головки 2 | 4h | 2019-05-03 09:00 | 2019-05-03 13:00 | 181 | 2016-10-03 02:25 | 2016-10-03 08:25 | 6h | 137.08d | 0d | 2029-07-26 00:06 |  | Подрядная монтаж | 4h | Пн 03.10.16 2:25 | Пн 03.10.16 8:25 | 6 ч | 2 |  |

| ID | WBS | Task | Duration | Start | Finish | Predecessors | Baseline start | Baseline finish | Baseline duration | Total slack | Free slack | Deadline | Calendar | Resources | Work | Текст2 | Текст4 | Текст10 | Число1 | Длительность2 |
| --- | --- | --- | --- | --- | --- | --- | --- | --- | --- | --- | --- | --- | --- | --- | --- | --- | --- | --- | --- | --- |
| 183 | 2.4.2 | **Демонтаж элементов теплообменника** | 0.81d | 2019-05-03 14:00 | 2019-05-04 09:30 |  | 2016-10-02 20:25 | 2016-10-03 09:14 | 0.53d | 137.08d |  | 2029-07-26 00:06 |  |  | 3h | Вс 02.10.16 20:25 | Пн 03.10.16 9:15 | 53,46 ч | 2 | 8.85h |
| 184 | 2.4.2.1 | Демонтировать колпак плавающей головки 1 | 0.5h | 2019-05-03 14:00 | 2019-05-03 14:30 | 182 | 2016-10-03 02:25 | 2016-10-03 03:25 | 1h | 68.58d | 0d | 2029-07-26 00:06 | 8-20 | Подрядная монтаж; Автокран (г/п 100тн) | 1h | Пн 03.10.16 2:25 | Пн 03.10.16 3:25 | 1 ч | 2 | 0h |
| 185 | 2.4.2.2 | Демонтировать колпак плавающей головки 2 | 0.5h | 2019-05-03 17:00 | 2019-05-03 17:30 | 184 | 2016-10-03 08:25 | 2016-10-03 09:14 | 0.83h | 68.58d | 0d | 2029-07-26 00:06 | 8-20 | Подрядная монтаж; Автокран (г/п 100тн) | 1h | Пн 03.10.16 8:25 | Пн 03.10.16 9:15 | 0,83 ч | 2 | 0h |
| 186 | 2.4.2.3 | Демонтировать колпак распределительной камеры 1,2 | 0.5h | 2019-05-04 09:00 | 2019-05-04 09:30 | 180 | 2016-10-02 20:25 | 2016-10-02 21:14 | 0.83h | 71.18d | 0d | 2029-07-26 00:06 | 8-20 | Подрядная монтаж; Автокран (г/п 100тн) | 1h | Вс 02.10.16 20:25 | Вс 02.10.16 21:15 | 0,83 ч | 3 | 0h |
| 187 | 2.4.3 | **Чистка крепежа плавающих головок** | 0.29d | 2019-05-03 18:30 | 2019-05-04 01:30 |  | 2016-10-02 20:25 | 2016-10-03 09:14 | 0.53d | 137.08d |  | 2029-07-26 00:06 |  |  | 2h | Вс 02.10.16 20:25 | Пн 03.10.16 9:15 | 53,46 ч | 2 | 8.85h |
| 188 | 2.4.3.1 | Чистка крепежа плавающей головки 1 | 1h | 2019-05-03 18:30 | 2019-05-03 19:30 | 185 | 2016-10-02 20:25 | 2016-10-02 21:14 | 0.83h | 137.08d | 0d | 2029-07-26 00:06 |  | Чистка корпуса | 1h | Вс 02.10.16 20:25 | Вс 02.10.16 21:15 | 0,83 ч | 2 | 0h |
| 189 | 2.4.3.2 | Чистка крепежа плавающей головки 2 | 1h | 2019-05-04 00:30 | 2019-05-04 01:30 | 188 | 2016-10-03 02:25 | 2016-10-03 03:25 | 1h | 137.08d | 0d | 2029-07-26 00:06 |  | Чистка корпуса | 1h | Пн 03.10.16 2:25 | Пн 03.10.16 3:25 | 1 ч | 3 | 0h |
| 190 | 2.4.4 | **Разбалчивание внутренних элементов теплообменника** | 0.52d | 2019-05-04 01:30 | 2019-05-04 14:00 |  | 2016-10-03 03:25 | 2016-10-03 15:25 | 0.5d | 137.08d |  | 2029-07-26 00:06 |  |  | 10h | Пн 03.10.16 3:25 | Пн 03.10.16 15:25 | 12 ч | 3 | 0h |
| 191 | 2.4.4.1 | Разболтить фланцевое соединение крышки плавающей головки 1 | 5h | 2019-05-04 01:30 | 2019-05-04 06:30 | 189 | 2016-10-03 03:25 | 2016-10-03 09:25 | 6h | 137.08d | 0d | 2029-07-26 00:06 |  | Подрядная монтаж | 5h | Пн 03.10.16 3:25 | Пн 03.10.16 9:25 | 6 ч | 3 |  |
| 192 | 2.4.4.2 | Разболтить фланцевое соединение крышки плавающей головки 2 | 5h | 2019-05-04 09:00 | 2019-05-04 14:00 | 191 | 2016-10-03 09:25 | 2016-10-03 15:25 | 6h | 137.08d | 0d | 2029-07-26 00:06 |  | Подрядная монтаж | 5h | Пн 03.10.16 9:25 | Пн 03.10.16 15:25 | 6 ч | 3 |  |
| 193 | 2.4.5 | **Демонтаж внутренних элементов теплообменника** | 1.96d | 2019-05-04 14:30 | 2019-05-06 13:30 |  | 2016-10-03 15:25 | 2016-10-04 02:35 | 0.47d | 137.08d |  | 2029-07-26 00:06 |  |  | 14h | Пн 03.10.16 15:25 | Вт 04.10.16 2:35 | 11,17 ч | 3 | 0h |
| 194 | 2.4.5.1 | Демонтировать крышку плавающей головки 1 | 0.5h | 2019-05-04 14:30 | 2019-05-04 15:00 | 192 | 2016-10-03 15:25 | 2016-10-03 15:55 | 0.5h | 68.58d | 0d | 2029-07-26 00:06 | 8-20 | Подрядная монтаж; Автокран (г/п 100тн) | 1h | Пн 03.10.16 15:25 | Пн 03.10.16 15:55 | 0,5 ч | 3 | 0h |
| 195 | 2.4.5.2 | Демонтировать крышку плавающей головки 2 | 0.5h | 2019-05-04 17:30 | 2019-05-04 18:00 | 194 | 2016-10-03 15:55 | 2016-10-03 16:25 | 0.5h | 68.58d | 0d | 2029-07-26 00:06 | 8-20 | Подрядная монтаж; Автокран (г/п 100тн) | 1h | Пн 03.10.16 15:55 | Пн 03.10.16 16:25 | 0,5 ч | 3 | 0h |
| 196 | 2.4.5.3 | Демонтировать трубный пучок теплообменника 1 | 2h | 2019-05-05 11:30 | 2019-05-05 13:30 | 195 | 2016-10-03 16:25 | 2016-10-04 00:35 | 8.17h | 68.6d | 0d | 2029-07-26 00:06 | 8-20 | Подрядная монтаж; Экстрактор; Автокран (г/п 100тн) | 6h | Пн 03.10.16 16:25 | Вт 04.10.16 0:35 | 8,17 ч | 4 | 0h |
| 197 | 2.4.5.4 | Демонтировать трубный пучок теплообменника 2 | 2h | 2019-05-06 11:30 | 2019-05-06 13:30 | 196 | 2016-10-04 00:35 | 2016-10-04 02:35 | 2h | 68.6d | 0d | 2029-07-26 00:06 | 8-20 | Подрядная монтаж; Экстрактор; Автокран (г/п 100тн) | 6h | Вт 04.10.16 0:35 | Вт 04.10.16 2:35 | 2 ч | 5 | 0h |
| 198 | 2.4.6 | **Транспортировка к месту чистки** | 2.98d | 2019-05-03 14:54 | 2019-05-06 14:30 |  | 2016-10-02 21:14 | 2016-10-04 10:00 | 1.53d | 140.05d |  | 2029-07-26 00:06 |  |  | 9.5h | Вс 02.10.16 21:15 | Вт 04.10.16 10:00 | 12,17 ч | 2 | 0h |
| 199 | 2.4.6.1 | Транспортировка колпака плавающей головки 1 к месту чистки с разгрузкой | 0.7h | 2019-05-03 14:54 | 2019-05-03 15:36 | 184 | 2016-10-03 03:25 | 2016-10-03 04:07 | 0.7h | 72.04d | 0d | 2029-07-26 00:06 | 8-20 | Автопогрузчик | 0.7h | Пн 03.10.16 3:25 | Пн 03.10.16 4:07 | 0,7 ч | 2 | 0h |
| 200 | 2.4.6.2 | Транспортировка колпака плавающей головки 2 к месту чистки с разгрузкой | 0.7h | 2019-05-03 19:06 | 2019-05-03 19:48 | 185 | 2016-10-03 09:14 | 2016-10-03 09:56 | 0.7h | 71.73d | 0d | 2029-07-26 00:06 | 8-20 | Автопогрузчик | 0.7h | Пн 03.10.16 9:15 | Пн 03.10.16 9:57 | 0,7 ч | 2 | 0h |
| 201 | 2.4.6.3 | Транспортировка колпака распределительной камеры 1,2 к месту чистки с разгрузкой | 0.7h | 2019-05-04 09:54 | 2019-05-04 10:36 | 186 | 2016-10-02 21:14 | 2016-10-02 21:56 | 0.7h | 71.18d | 0d | 2029-07-26 00:06 | 8-20 | Автопогрузчик | 0.7h | Вс 02.10.16 21:15 | Вс 02.10.16 21:57 | 0,7 ч | 3 | 0h |
| 202 | 2.4.6.4 | Транспортировка крышки плавающей головки 1 к месту чистки с разгрузкой | 0.7h | 2019-05-04 15:24 | 2019-05-04 16:06 | 194 | 2016-10-03 15:55 | 2016-10-03 16:25 | 0.5h | 71.14d | 0d | 2029-07-26 00:06 | 8-20 | Автопогрузчик | 0.7h | Пн 03.10.16 15:55 | Пн 03.10.16 16:25 | 0,25 ч | 3 |  |
| 203 | 2.4.6.5 | Транспортировка крышки плавающей головки 2 к месту чистки с разгрузкой | 0.7h | 2019-05-04 19:36 | 2019-05-05 08:18 | 195 | 2016-10-03 16:25 | 2016-10-03 17:07 | 0.7h | 71.4d | 0d | 2029-07-26 00:06 | 8-20 | Автопогрузчик | 0.7h | Пн 03.10.16 16:25 | Пн 03.10.16 17:07 | 0,7 ч | 3 | 0h |
| 204 | 2.4.6.6 | Транспортировка трубного пучка 1 к месту чистки с разгрузкой | 1h | 2019-05-05 13:30 | 2019-05-05 14:30 | 196 | 2016-10-04 00:35 | 2016-10-04 09:00 | 8.41h | 69.73d | 0d | 2029-07-26 00:06 | 8-20 | Автотранспорт (п) (длинномер); Подрядная монтаж; Автокран, г/п 40тн | 3h | Вт 04.10.16 0:35 | Вт 04.10.16 9:00 | 1,5 ч | 4 | 5.42h |
| 205 | 2.4.6.7 | Транспортировка трубного пучка 2 к месту чистки с разгрузкой | 1h | 2019-05-06 13:30 | 2019-05-06 14:30 | 197 | 2016-10-04 09:00 | 2016-10-04 10:00 | 1h | 68.6d | 0d | 2029-07-26 00:06 | 8-20 | Автотранспорт (п) (длинномер); Подрядная монтаж; Автокран, г/п 40тн | 3h | Вт 04.10.16 9:00 | Вт 04.10.16 10:00 | 1 ч | 5 | 0h |
| 206 | 2.4.7 | **Чистка элементов теплообменника** | 5.93d | 2019-05-03 16:12 | 2019-05-09 14:30 |  | 2016-10-02 21:56 | 2016-10-05 11:36 | 2.57d | 138.19d |  | 2029-07-26 00:06 |  |  | 54h | Вс 02.10.16 21:57 | Ср 05.10.16 11:36 | 36,57 ч | 2 | 0h |
| 207 | 2.4.7.1 | чистка от отложений корпуса 1 теплообменника | 4h | 2019-05-06 17:30 | 2019-05-06 21:30 | 197 | 2016-10-04 00:35 | 2016-10-04 03:45 | 3.17h | 138.77d | 0d | 2029-07-26 00:06 |  | Чистка корпуса | 4h | Вт 04.10.16 0:35 | Вт 04.10.16 3:45 | 3,17 ч | 5 |  |
| 208 | 2.4.7.2 | чистка от отложений корпуса 2 теплообменника | 4h | 2019-05-07 17:30 | 2019-05-07 21:30 | 207 | 2016-10-04 02:35 | 2016-10-04 06:35 | 4h | 138.77d | 0.44d | 2029-07-26 00:06 |  | Чистка корпуса | 4h | Вт 04.10.16 2:35 | Вт 04.10.16 6:35 | 4 ч | 6 |  |
| 209 | 2.4.7.3 | чистка от отложений колпака плавающей головки 1 | 1h | 2019-05-03 16:12 | 2019-05-03 17:12 | 199 | 2016-10-03 04:07 | 2016-10-03 06:29 | 2.37h | 144.04d | 0d | 2029-07-26 00:06 |  | Чистка колпаков | 1h | Пн 03.10.16 4:07 | Пн 03.10.16 6:29 | 2,37 ч | 2 |  |
| 210 | 2.4.7.4 | чистка от отложений колпака плавающей головки 2 | 1h | 2019-05-03 22:12 | 2019-05-03 23:12 | 200 | 2016-10-03 09:56 | 2016-10-03 12:08 | 2.2h | 143.73d | 0d | 2029-07-26 00:06 |  | Чистка колпаков | 1h | Пн 03.10.16 9:57 | Пн 03.10.16 12:09 | 2,2 ч | 2 |  |
| 211 | 2.4.7.5 | чистка от отложений колпака 1,2 распределительной камеры | 2h | 2019-05-04 13:12 | 2019-05-04 15:12 | 201 | 2016-10-02 21:56 | 2016-10-03 00:07 | 2.17h | 142.18d | 0d | 2029-07-26 00:06 |  | Чистка колпаков | 2h | Вс 02.10.16 21:57 | Пн 03.10.16 0:07 | 2,17 ч | 3 |  |
| 212 | 2.4.7.6 | чистка от отложений крышки плавающей головки 1 | 1h | 2019-05-04 23:12 | 2019-05-05 00:12 | 202 | 2016-10-03 16:25 | 2016-10-03 17:25 | 1h | 142.14d | 0.33d | 2029-07-26 00:06 |  | Чистка колпаков | 1h | Пн 03.10.16 16:25 | Пн 03.10.16 17:25 | 1 ч | 3 |  |
| 213 | 2.4.7.7 | чистка от отложений крышки плавающей головки 2 | 1h | 2019-05-05 08:18 | 2019-05-05 09:18 | 203 | 2016-10-03 17:07 | 2016-10-03 18:37 | 1.5h | 142.4d | 0d | 2029-07-26 00:06 |  | Чистка колпаков | 1h | Пн 03.10.16 17:07 | Пн 03.10.16 18:37 | 1,5 ч | 4 |  |
| 214 | 2.4.7.8 | чистка от отложений трубного пучка 1 | 20h | 2019-05-06 06:30 | 2019-05-07 02:30 | 204 | 2016-10-04 09:00 | 2016-10-05 01:00 | 16h | 139.5d | 0.23d | 2029-07-26 00:06 |  | Чистка пучков | 20h | Вт 04.10.16 9:00 | Ср 05.10.16 1:00 | 16 ч | 5 |  |
| 215 | 2.4.7.9 | чистка от отложений трубного пучка 2 | 20h | 2019-05-08 18:30 | 2019-05-09 14:30 | 205 | 2016-10-04 10:00 | 2016-10-05 02:00 | 16h | 137.1d | 0d | 2029-07-26 00:06 |  | Чистка пучков | 20h | Вт 04.10.16 10:00 | Ср 05.10.16 2:00 | 16 ч | 7 |  |

| ID | WBS | Task | Duration | Start | Finish | Predecessors | Baseline start | Baseline finish | Baseline duration | Total slack | Free slack | Deadline | Calendar | Resources | Work | Текст2 | Текст4 | Текст10 | Число1 | Длительность2 |
| --- | --- | --- | --- | --- | --- | --- | --- | --- | --- | --- | --- | --- | --- | --- | --- | --- | --- | --- | --- | --- |
| 216 | 2.4.8 | **Транспортировка к месту монтажа** | 4.2d | 2019-05-05 10:48 | 2019-05-09 15:30 |  | 2016-10-03 00:07 | 2016-10-05 12:36 | 2.52d | 140.19d |  | 2029-07-26 00:06 |  |  | 9.5h | Пн 03.10.16 0:07 | Ср 05.10.16 12:36 | 35,4 ч | 4 | 1.5h |
| 217 | 2.4.8.1 | транспортировка колпака плавающей головки 1 к месту монтажа с погрузкой | 0.7h | 2019-05-05 18:24 | 2019-05-05 19:06 | 209 | 2016-10-03 06:29 | 2016-10-03 06:59 | 0.5h | 72.04d | 73.17d | 2029-07-26 00:06 | 8-20 | Автопогрузчик | 0.7h | Пн 03.10.16 6:29 | Пн 03.10.16 6:59 | 0,5 ч | 4 | 0h |
| 218 | 2.4.8.2 | транспортировка колпака плавающей головки 2 к месту монтажа с погрузкой | 0.7h | 2019-05-06 10:36 | 2019-05-06 11:18 | 210 | 2016-10-03 12:08 | 2016-10-03 12:38 | 0.5h | 71.86d | 73.15d | 2029-07-26 00:06 | 8-20 | Автопогрузчик | 0.7h | Пн 03.10.16 12:09 | Пн 03.10.16 12:39 | 0,5 ч | 5 | 0h |
| 219 | 2.4.8.3 | транспортировка колпака распределительной камеры 1,2 к месту монтажа с погрузкой | 0.7h | 2019-05-05 10:48 | 2019-05-05 11:30 | 211 | 2016-10-03 00:07 | 2016-10-03 00:49 | 0.7h | 71.18d | 2.25d | 2029-07-26 00:06 | 8-20 | Автопогрузчик | 0.7h | Пн 03.10.16 0:07 | Пн 03.10.16 0:49 | 0,7 ч | 4 | 0h |
| 220 | 2.4.8.4 | транспортировка крышки плавающей головки 1 к месту монтажа с погрузкой | 0.7h | 2019-05-06 13:24 | 2019-05-06 14:06 | 212 | 2016-10-03 17:25 | 2016-10-03 17:55 | 0.5h | 71.75d |  | 2029-07-26 00:06 | 8-20 | Автопогрузчик | 0.7h | Пн 03.10.16 17:25 | Пн 03.10.16 17:55 | 0,5 ч | 5 | 0h |
| 221 | 2.4.8.5 | транспортировка крышки плавающей головки 2 к месту монтажа с погрузкой | 0.7h | 2019-05-06 17:36 | 2019-05-06 18:18 | 213 | 2016-10-03 18:37 | 2016-10-03 18:52 | 0.25h | 71.57d |  | 2029-07-26 00:06 | 8-20 | Автопогрузчик | 0.7h | Пн 03.10.16 18:37 | Пн 03.10.16 18:52 | 0,25 ч | 5 | 0h |
| 222 | 2.4.8.6 | транспортировка трубного пучка 1 к месту монтажа с погрузкой | 1h | 2019-05-07 08:30 | 2019-05-07 09:30 | 214 | 2016-10-05 05:48 | 2016-10-05 06:48 | 1h | 69.77d | 0.44d | 2029-07-26 00:06 | 8-20 | Автокран, г/п 40тн; Подрядная монтаж; Автотранспорт (п) (длинномер) | 3h | Ср 05.10.16 5:48 | Ср 05.10.16 6:48 | 1 ч | 6 | 0h |
| 223 | 2.4.8.7 | транспортировка трубного пучка 2 к месту монтажа с погрузкой | 1h | 2019-05-09 14:30 | 2019-05-09 15:30 | 215 | 2016-10-05 11:36 | 2016-10-05 12:36 | 1h | 68.6d | 0d | 2029-07-26 00:06 | 8-20 | Автокран, г/п 40тн; Подрядная монтаж; Автотранспорт (п) (длинномер) | 3h | Ср 05.10.16 11:36 | Ср 05.10.16 12:36 | 1 ч | 8 | 7.9h |
| 224 | 2.4.9 | **Монтаж внутренних элементов теплообменника** | 2.08d | 2019-05-08 08:00 | 2019-05-10 10:00 |  | 2016-10-05 15:36 | 2016-10-05 20:45 | 0.21d | 137.42d |  | 2029-07-26 00:06 |  |  | 15h | Ср 05.10.16 15:36 | Ср 05.10.16 20:46 | 5,16 ч | 7 | 0h |
| 225 | 2.4.9.1 | монтаж трубного пучка в корпус теплообменника 1 | 2h | 2019-05-08 08:00 | 2019-05-08 10:00 | 208, 222 | 2016-10-05 15:36 | 2016-10-05 17:36 | 2h | 69.33d | 0.73d | 2029-07-26 00:06 | 8-20 | Подрядная монтаж; Экстрактор; Автокран (г/п 100тн) | 6h | Ср 05.10.16 15:36 | Ср 05.10.16 17:36 | 2 ч | 7 | 0h |
| 226 | 2.4.9.2 | монтаж трубного пучка в корпус теплообменника 2 | 2h | 2019-05-09 15:30 | 2019-05-09 17:30 | 223, 225 | 2016-10-05 17:36 | 2016-10-05 19:55 | 2.33h | 68.6d | 0d | 2029-07-26 00:06 | 8-20 | Подрядная монтаж; Экстрактор; Автокран (г/п 100тн) | 6h | Ср 05.10.16 17:36 | Ср 05.10.16 19:56 | 2,33 ч | 8 | 0h |
| 227 | 2.4.9.3 | монтаж крышки плавающей головки 1 | 0.5h | 2019-05-10 08:30 | 2019-05-10 09:00 | 212, 226 | 2016-10-05 19:55 | 2016-10-05 20:25 | 0.5h | 68.92d | 0d | 2029-07-26 00:06 | 8-20 | Подрядная монтаж; Автокран (г/п 100тн) | 1h | Ср 05.10.16 19:56 | Ср 05.10.16 20:26 | 0,5 ч | 9 |  |
| 228 | 2.4.9.4 | монтаж крышки плавающей головки 2 | 0.5h | 2019-05-10 09:30 | 2019-05-10 10:00 | 213, 227 | 2016-10-05 20:25 | 2016-10-05 20:45 | 0.33h | 68.92d | 0d | 2029-07-26 00:06 | 8-20 | Подрядная монтаж; Автокран (г/п 100тн) | 1h | Ср 05.10.16 20:26 | Ср 05.10.16 20:46 | 0,33 ч | 9 |  |
| 229 | 2.4.9.5 | монтаж колпака распределительной камеры 1,2 | 0.5h | 2019-05-09 19:30 | 2019-05-09 20:00 | 219, 226 | 2016-10-05 19:55 | 2016-10-05 20:25 | 0.5h | 68.93d | 0d | 2029-07-26 00:06 | 8-20 | Подрядная монтаж; Автокран (г/п 100тн) | 1h | Ср 05.10.16 19:56 | Ср 05.10.16 20:26 | 0,5 ч | 8 |  |
| 230 | 2.4.10 | **Сбалчивание внутренних элементов теплообменника** | 1d | 2019-05-09 20:00 | 2019-05-10 20:00 |  | 2016-10-05 20:25 | 2016-10-06 11:13 | 0.62d | 137.58d | 0.17d | 2029-07-26 00:06 |  |  | 25.6h | Ср 05.10.16 20:26 | Чт 06.10.16 11:13 | 14,79 ч | 8 | 0h |
| 231 | 2.4.10.1 | Сборка фланцевого соединения колпака распределительной камеры 1 | 6h | 2019-05-09 20:00 | 2019-05-10 02:00 | 229 | 2016-10-05 20:25 | 2016-10-06 02:15 | 5.83h | 137.93d | 0d | 2029-07-26 00:06 |  | Подрядная монтаж | 6h | Ср 05.10.16 20:26 | Чт 06.10.16 2:16 | 5,83 ч | 8 |  |
| 232 | 2.4.10.2 | Сборка фланцевого соединения колпака распределительной камеры 2 | 6h | 2019-05-10 02:00 | 2019-05-10 08:00 | 231 | 2016-10-06 02:15 | 2016-10-06 08:05 | 5.83h | 137.93d | 0d | 2029-07-26 00:06 |  | Подрядная монтаж | 6h | Чт 06.10.16 2:16 | Чт 06.10.16 8:05 | 5,83 ч | 9 |  |
| 233 | 2.4.10.3 | Сборка фланцевого соединения трубопровода обвязки распределительной камеры (ВХОД) Ø250 | 1.8h | 2019-05-10 08:00 | 2019-05-10 09:48 | 232 | 2016-10-06 08:05 | 2016-10-06 09:43 | 1.63h | 137.93d | 0d | 2029-07-26 00:06 |  | Подрядная монтаж | 1.8h | Чт 06.10.16 8:05 | Чт 06.10.16 9:43 | 1,63 ч | 9 |  |
| 234 | 2.4.10.4 | Сборка фланцевого соединения трубопровода обвязки распределительной камеры (ВЫХОД) Ø250 | 1.8h | 2019-05-10 09:48 | 2019-05-10 11:36 | 233 | 2016-10-06 09:43 | 2016-10-06 11:13 | 1.5h | 137.93d |  | 2029-07-26 00:06 |  | Подрядная монтаж | 1.8h | Чт 06.10.16 9:43 | Чт 06.10.16 11:13 | 1,5 ч | 9 |  |
| 235 | 2.4.10.5 | Сборка фланцевого соединения крышки плавающей головки 1 | 5h | 2019-05-10 10:00 | 2019-05-10 15:00 | 228 | 2016-10-05 20:25 | 2016-10-06 02:15 | 5.83h | 137.58d | 0d | 2029-07-26 00:06 |  | Подрядная монтаж | 5h | Ср 05.10.16 20:26 | Чт 06.10.16 2:16 | 5,83 ч | 9 | 0h |
| 236 | 2.4.10.6 | Сборка фланцевого соединения крышки плавающей головки 2 | 5h | 2019-05-10 15:00 | 2019-05-10 20:00 | 235 | 2016-10-06 02:15 | 2016-10-06 07:05 | 4.83h | 137.58d |  | 2029-07-26 00:06 |  | Подрядная монтаж | 5h | Чт 06.10.16 2:16 | Чт 06.10.16 7:05 | 4,83 ч | 9 | 0h |
| 237 | 2.4.11 | **Монтаж элементов теплообменника** | 0.08d | 2019-05-11 09:06 | 2019-05-11 11:06 | 449 | 2016-10-06 22:13 | 2016-10-06 23:01 | 0.03d | 137.37d |  | 2029-07-26 00:06 |  |  | 2h | Чт 06.10.16 22:13 | Чт 06.10.16 23:01 | 0,8 ч | 10 | 0h |
| 238 | 2.4.11.1 | монтаж колпака плавающей головки 1 | 0.5h | 2019-05-11 09:06 | 2019-05-11 09:36 |  | 2016-10-06 22:13 | 2016-10-06 22:37 | 0.4h | 68.87d | 0d | 2029-07-26 00:06 | 8-20 | Подрядная монтаж; Автокран (г/п 100тн) | 1h | Чт 06.10.16 22:13 | Чт 06.10.16 22:37 | 0,4 ч | 10 | 0h |
| 239 | 2.4.11.2 | монтаж колпака плавающей головки 2 | 0.5h | 2019-05-11 10:36 | 2019-05-11 11:06 | 238 | 2016-10-06 22:37 | 2016-10-06 23:01 | 0.4h | 68.87d | 0d | 2029-07-26 00:06 | 8-20 | Подрядная монтаж; Автокран (г/п 100тн) | 1h | Чт 06.10.16 22:37 | Чт 06.10.16 23:01 | 0,4 ч | 10 | 0h |

| ID | WBS | Task | Duration | Start | Finish | Predecessors | Baseline start | Baseline finish | Baseline duration | Total slack | Free slack | Deadline | Calendar | Resources | Work | Текст2 | Текст4 | Текст10 | Число1 | Длительность2 |
| --- | --- | --- | --- | --- | --- | --- | --- | --- | --- | --- | --- | --- | --- | --- | --- | --- | --- | --- | --- | --- |
| 240 | 2.4.12 | **Сбалчивание элементов теплообменника** | 0.5d | 2019-05-11 11:06 | 2019-05-11 23:06 |  | 2016-10-06 23:01 | 2016-10-07 10:51 | 0.49d | 137.71d | 0.25d | 2029-07-26 00:06 |  |  | 12h | Чт 06.10.16 23:01 | Пт 07.10.16 10:51 | 11,83 ч | 10 | 0h |
| 241 | 2.4.12.1 | Сборка колпака плавающей головки 1 | 6h | 2019-05-11 11:06 | 2019-05-11 17:06 | 239 | 2016-10-06 23:01 | 2016-10-07 05:01 | 6h | 137.71d | 0d | 2029-07-26 00:06 |  | Подрядная монтаж | 6h | Чт 06.10.16 23:01 | Пт 07.10.16 5:01 | 6 ч | 10 | 0h |
| 242 | 2.4.12.2 | Сборка колпака плавающей головки 2 | 6h | 2019-05-11 17:06 | 2019-05-11 23:06 | 241 | 2016-10-07 05:01 | 2016-10-07 10:51 | 5.83h | 137.71d |  | 2029-07-26 00:06 |  | Подрядная монтаж | 6h | Пт 07.10.16 5:01 | Пт 07.10.16 10:51 | 5,83 ч | 10 | 0h |
| 243 | 2.5 | **Ремонт теплообменников Т-201.В2/1-2** | 9d | 2019-05-03 05:00 | 2019-05-12 05:06 | 1 | 2016-10-02 20:25 | 2016-10-07 22:51 | 5.1d | 137.02d |  | 2029-07-26 00:06 |  |  | 180.2h | Вс 02.10.16 20:25 | Пт 07.10.16 22:51 | 156,44 ч | 2 | 0h |
| 244 | 2.5.1 | **Разбалчивание элементов теплообменника** | 0.95d | 2019-05-03 05:00 | 2019-05-04 03:48 |  | 2016-10-02 20:25 | 2016-10-03 08:25 | 0.5d | 137.02d |  | 2029-07-26 00:06 |  |  | 23.6h | Вс 02.10.16 20:25 | Пн 03.10.16 8:25 | 12 ч | 2 | 0h |
| 245 | 2.5.1.1 | Разболтить фланцевое соединение трубопровода обвязки распределительной камеры (ВХОД) Ø250 | 1.8h | 2019-05-03 06:48 | 2019-05-03 08:36 |  | 2016-10-02 20:25 | 2016-10-02 22:13 | 1.8h | 141.5d | 0d | 2029-07-26 00:06 |  | Подрядная монтаж | 1.8h | Вс 02.10.16 20:25 | Вс 02.10.16 22:13 | 1,8 ч | 2 |  |
| 246 | 2.5.1.2 | Разболтить фланцевое соединение трубопровода обвязки распределительной камеры (ВЫХОД) Ø250 | 1.8h | 2019-05-03 12:12 | 2019-05-03 14:00 | 245 | 2016-10-02 22:13 | 2016-10-03 00:01 | 1.8h | 141.5d | 0d | 2029-07-26 00:06 |  | Подрядная монтаж | 1.8h | Вс 02.10.16 22:13 | Пн 03.10.16 0:01 | 1,8 ч | 2 |  |
| 247 | 2.5.1.3 | Разболтить фланцевое соединение колпака распределительной камеры 1 | 4h | 2019-05-03 19:00 | 2019-05-03 23:00 | 246 | 2016-10-02 20:25 | 2016-10-03 02:25 | 6h | 141.5d | 0d | 2029-07-26 00:06 |  | Подрядная монтаж | 8h | Вс 02.10.16 20:25 | Пн 03.10.16 2:25 | 6 ч | 2 |  |
| 248 | 2.5.1.4 | Разболтить фланцевое соединение колпака распределительной камеры 2 | 4h | 2019-05-03 23:48 | 2019-05-04 03:48 | 247 | 2016-10-03 02:25 | 2016-10-03 07:14 | 4.83h | 141.5d | 0.17d | 2029-07-26 00:06 |  | Подрядная монтаж | 4h | Пн 03.10.16 2:25 | Пн 03.10.16 7:15 | 4,83 ч | 2 |  |
| 249 | 2.5.1.5 | Разболтить фланцевое соединение колпака плавающей головки 1 | 4h | 2019-05-03 05:00 | 2019-05-03 09:00 |  | 2016-10-02 20:25 | 2016-10-03 02:25 | 6h | 137.02d | 0d | 2029-07-26 00:06 |  | Подрядная монтаж | 4h | Вс 02.10.16 20:25 | Пн 03.10.16 2:25 | 6 ч | 2 |  |
| 250 | 2.5.1.6 | Разболтить фланцевое соединение колпака плавающей головки 2 | 4h | 2019-05-03 09:00 | 2019-05-03 13:00 | 249 | 2016-10-03 02:25 | 2016-10-03 08:25 | 6h | 137.02d | 0d | 2029-07-26 00:06 |  | Подрядная монтаж | 4h | Пн 03.10.16 2:25 | Пн 03.10.16 8:25 | 6 ч | 2 |  |
| 251 | 2.5.2 | **Демонтаж элементов теплообменника** | 0.81d | 2019-05-03 14:30 | 2019-05-04 10:00 |  | 2016-10-02 20:25 | 2016-10-03 09:14 | 0.53d | 137.02d |  | 2029-07-26 00:06 |  |  | 3h | Вс 02.10.16 20:25 | Пн 03.10.16 9:15 | 53,46 ч | 2 | 8.85h |
| 252 | 2.5.2.1 | Демонтировать колпак плавающей головки 1 | 0.5h | 2019-05-03 14:30 | 2019-05-03 15:00 | 250 | 2016-10-03 02:25 | 2016-10-03 03:25 | 1h | 68.52d | 0d | 2029-07-26 00:06 | 8-20 | Подрядная монтаж; Автокран (г/п 100тн) | 1h | Пн 03.10.16 2:25 | Пн 03.10.16 3:25 | 1 ч | 2 | 0h |
| 253 | 2.5.2.2 | Демонтировать колпак плавающей головки 2 | 0.5h | 2019-05-03 17:30 | 2019-05-03 18:00 | 252 | 2016-10-03 08:25 | 2016-10-03 09:14 | 0.83h | 68.52d | 0d | 2029-07-26 00:06 | 8-20 | Подрядная монтаж; Автокран (г/п 100тн) | 1h | Пн 03.10.16 8:25 | Пн 03.10.16 9:15 | 0,83 ч | 2 | 0h |
| 254 | 2.5.2.3 | Демонтировать колпак распределительной камеры 1,2 | 0.5h | 2019-05-04 09:30 | 2019-05-04 10:00 | 248 | 2016-10-02 20:25 | 2016-10-02 21:14 | 0.83h | 70.83d | 0d | 2029-07-26 00:06 | 8-20 | Подрядная монтаж; Автокран (г/п 100тн) | 1h | Вс 02.10.16 20:25 | Вс 02.10.16 21:15 | 0,83 ч | 3 | 0h |
| 255 | 2.5.3 | **Чистка крепежа плавающих головок** | 0.29d | 2019-05-03 19:30 | 2019-05-04 02:30 |  | 2016-10-02 20:25 | 2016-10-03 09:14 | 0.53d | 137.02d |  | 2029-07-26 00:06 |  |  | 2h | Вс 02.10.16 20:25 | Пн 03.10.16 9:15 | 53,46 ч | 2 | 8.85h |
| 256 | 2.5.3.1 | Чистка крепежа плавающей головки 1 | 1h | 2019-05-03 19:30 | 2019-05-03 20:30 | 253 | 2016-10-02 20:25 | 2016-10-02 21:14 | 0.83h | 137.02d | 0d | 2029-07-26 00:06 |  | Чистка корпуса | 1h | Вс 02.10.16 20:25 | Вс 02.10.16 21:15 | 0,83 ч | 2 | 0h |
| 257 | 2.5.3.2 | Чистка крепежа плавающей головки 2 | 1h | 2019-05-04 01:30 | 2019-05-04 02:30 | 256 | 2016-10-03 02:25 | 2016-10-03 03:25 | 1h | 137.02d | 0d | 2029-07-26 00:06 |  | Чистка корпуса | 1h | Пн 03.10.16 2:25 | Пн 03.10.16 3:25 | 1 ч | 3 | 0h |
| 258 | 2.5.4 | **Разбалчивание внутренних элементов теплообменника** | 0.5d | 2019-05-04 02:30 | 2019-05-04 14:30 |  | 2016-10-03 03:25 | 2016-10-03 15:25 | 0.5d | 137.02d |  | 2029-07-26 00:06 |  |  | 10h | Пн 03.10.16 3:25 | Пн 03.10.16 15:25 | 12 ч | 3 | 0h |
| 259 | 2.5.4.1 | Разболтить фланцевое соединение крышки плавающей головки 1 | 5h | 2019-05-04 02:30 | 2019-05-04 07:30 | 257 | 2016-10-03 03:25 | 2016-10-03 09:25 | 6h | 137.02d | 0d | 2029-07-26 00:06 |  | Подрядная монтаж | 5h | Пн 03.10.16 3:25 | Пн 03.10.16 9:25 | 6 ч | 3 |  |
| 260 | 2.5.4.2 | Разболтить фланцевое соединение крышки плавающей головки 2 | 5h | 2019-05-04 09:30 | 2019-05-04 14:30 | 259 | 2016-10-03 09:25 | 2016-10-03 15:25 | 6h | 137.02d | 0d | 2029-07-26 00:06 |  | Подрядная монтаж | 5h | Пн 03.10.16 9:25 | Пн 03.10.16 15:25 | 6 ч | 3 |  |
| 261 | 2.5.5 | **Демонтаж внутренних элементов теплообменника** | 2.02d | 2019-05-04 15:00 | 2019-05-06 15:30 |  | 2016-10-03 15:25 | 2016-10-04 02:35 | 0.47d | 137.02d |  | 2029-07-26 00:06 |  |  | 14h | Пн 03.10.16 15:25 | Вт 04.10.16 2:35 | 11,17 ч | 3 | 0h |
| 262 | 2.5.5.1 | Демонтировать крышку плавающей головки 1 | 0.5h | 2019-05-04 15:00 | 2019-05-04 15:30 | 260 | 2016-10-03 15:25 | 2016-10-03 15:55 | 0.5h | 68.52d | 0d | 2029-07-26 00:06 | 8-20 | Подрядная монтаж; Автокран (г/п 100тн) | 1h | Пн 03.10.16 15:25 | Пн 03.10.16 15:55 | 0,5 ч | 3 | 0h |
| 263 | 2.5.5.2 | Демонтировать крышку плавающей головки 2 | 0.5h | 2019-05-04 18:00 | 2019-05-04 18:30 | 262 | 2016-10-03 15:55 | 2016-10-03 16:25 | 0.5h | 68.52d | 0d | 2029-07-26 00:06 | 8-20 | Подрядная монтаж; Автокран (г/п 100тн) | 1h | Пн 03.10.16 15:55 | Пн 03.10.16 16:25 | 0,5 ч | 3 | 0h |
| 264 | 2.5.5.3 | Демонтировать трубный пучок теплообменника 1 | 2h | 2019-05-05 13:30 | 2019-05-05 15:30 | 263 | 2016-10-03 16:25 | 2016-10-04 00:35 | 8.17h | 68.52d | 0d | 2029-07-26 00:06 | 8-20 | Подрядная монтаж; Экстрактор; Автокран (г/п 100тн) | 6h | Пн 03.10.16 16:25 | Вт 04.10.16 0:35 | 8,17 ч | 4 | 0h |
| 265 | 2.5.5.4 | Демонтировать трубный пучок теплообменника 2 | 2h | 2019-05-06 13:30 | 2019-05-06 15:30 | 264 | 2016-10-04 00:35 | 2016-10-04 02:35 | 2h | 68.52d | 0d | 2029-07-26 00:06 | 8-20 | Подрядная монтаж; Экстрактор; Автокран (г/п 100тн) | 6h | Вт 04.10.16 0:35 | Вт 04.10.16 2:35 | 2 ч | 5 | 0h |

| ID | WBS | Task | Duration | Start | Finish | Predecessors | Baseline start | Baseline finish | Baseline duration | Total slack | Free slack | Deadline | Calendar | Resources | Work | Текст2 | Текст4 | Текст10 | Число1 | Длительность2 |
| --- | --- | --- | --- | --- | --- | --- | --- | --- | --- | --- | --- | --- | --- | --- | --- | --- | --- | --- | --- | --- |
| 266 | 2.5.6 | **Транспортировка к месту чистки** | 3.04d | 2019-05-03 15:36 | 2019-05-06 16:30 |  | 2016-10-02 21:14 | 2016-10-04 10:00 | 1.53d | 140.02d |  | 2029-07-26 00:06 |  |  | 9.5h | Вс 02.10.16 21:15 | Вт 04.10.16 10:00 | 12,17 ч | 2 | 0h |
| 267 | 2.5.6.1 | Транспортировка колпака плавающей головки 1 к месту чистки с разгрузкой | 0.7h | 2019-05-03 15:36 | 2019-05-03 16:18 | 252 | 2016-10-03 03:25 | 2016-10-03 04:07 | 0.7h | 72.01d | 0d | 2029-07-26 00:06 | 8-20 | Автопогрузчик | 0.7h | Пн 03.10.16 3:25 | Пн 03.10.16 4:07 | 0,7 ч | 2 | 0h |
| 268 | 2.5.6.2 | Транспортировка колпака плавающей головки 2 к месту чистки с разгрузкой | 0.7h | 2019-05-03 19:48 | 2019-05-04 08:30 | 253 | 2016-10-03 09:14 | 2016-10-03 09:56 | 0.7h | 71.91d | 0d | 2029-07-26 00:06 | 8-20 | Автопогрузчик | 0.7h | Пн 03.10.16 9:15 | Пн 03.10.16 9:57 | 0,7 ч | 2 | 0h |
| 269 | 2.5.6.3 | Транспортировка колпака распределительной камеры 1,2 к месту чистки с разгрузкой | 0.7h | 2019-05-04 10:36 | 2019-05-04 11:18 | 254 | 2016-10-02 21:14 | 2016-10-02 21:56 | 0.7h | 70.83d | 0d | 2029-07-26 00:06 | 8-20 | Автопогрузчик | 0.7h | Вс 02.10.16 21:15 | Вс 02.10.16 21:57 | 0,7 ч | 3 | 0h |
| 270 | 2.5.6.4 | Транспортировка крышки плавающей головки 1 к месту чистки с разгрузкой | 0.7h | 2019-05-04 16:06 | 2019-05-04 16:48 | 262 | 2016-10-03 15:55 | 2016-10-03 16:25 | 0.5h | 71.13d | 0d | 2029-07-26 00:06 | 8-20 | Автопогрузчик | 0.7h | Пн 03.10.16 15:55 | Пн 03.10.16 16:25 | 0,25 ч | 3 |  |
| 271 | 2.5.6.5 | Транспортировка крышки плавающей головки 2 к месту чистки с разгрузкой | 0.7h | 2019-05-05 08:42 | 2019-05-05 09:24 | 263 | 2016-10-03 16:25 | 2016-10-03 17:07 | 0.7h | 71.32d | 0d | 2029-07-26 00:06 | 8-20 | Автопогрузчик | 0.7h | Пн 03.10.16 16:25 | Пн 03.10.16 17:07 | 0,7 ч | 4 | 0h |
| 272 | 2.5.6.6 | Транспортировка трубного пучка 1 к месту чистки с разгрузкой | 1h | 2019-05-05 15:30 | 2019-05-05 16:30 | 264 | 2016-10-04 00:35 | 2016-10-04 09:00 | 8.41h | 69.65d | 0d | 2029-07-26 00:06 | 8-20 | Автотранспорт (п) (длинномер); Подрядная монтаж; Автокран, г/п 40тн | 3h | Вт 04.10.16 0:35 | Вт 04.10.16 9:00 | 1,5 ч | 4 | 5.42h |
| 273 | 2.5.6.7 | Транспортировка трубного пучка 2 к месту чистки с разгрузкой | 1h | 2019-05-06 15:30 | 2019-05-06 16:30 | 265 | 2016-10-04 09:00 | 2016-10-04 10:00 | 1h | 68.52d | 0d | 2029-07-26 00:06 | 8-20 | Автотранспорт (п) (длинномер); Подрядная монтаж; Автокран, г/п 40тн | 3h | Вт 04.10.16 9:00 | Вт 04.10.16 10:00 | 1 ч | 5 | 0h |
| 274 | 2.5.7 | **Чистка элементов теплообменника** | 5.97d | 2019-05-03 17:12 | 2019-05-09 16:30 |  | 2016-10-02 21:56 | 2016-10-05 11:36 | 2.57d | 138.98d |  | 2029-07-26 00:06 |  |  | 54h | Вс 02.10.16 21:57 | Ср 05.10.16 11:36 | 36,57 ч | 2 | 0h |
| 275 | 2.5.7.1 | чистка от отложений корпуса 1 теплообменника | 4h | 2019-05-06 21:30 | 2019-05-07 01:30 | 265 | 2016-10-04 00:35 | 2016-10-04 03:45 | 3.17h | 138.52d | 0d | 2029-07-26 00:06 |  | Чистка корпуса | 4h | Вт 04.10.16 0:35 | Вт 04.10.16 3:45 | 3,17 ч | 5 |  |
| 276 | 2.5.7.2 | чистка от отложений корпуса 2 теплообменника | 4h | 2019-05-07 21:30 | 2019-05-08 01:30 | 275 | 2016-10-04 02:35 | 2016-10-04 06:35 | 4h | 138.52d | 0.27d | 2029-07-26 00:06 |  | Чистка корпуса | 4h | Вт 04.10.16 2:35 | Вт 04.10.16 6:35 | 4 ч | 6 |  |
| 277 | 2.5.7.3 | чистка от отложений колпака плавающей головки 1 | 1h | 2019-05-03 17:12 | 2019-05-03 18:12 | 267 | 2016-10-03 04:07 | 2016-10-03 06:29 | 2.37h | 144.01d | 0d | 2029-07-26 00:06 |  | Чистка колпаков | 1h | Пн 03.10.16 4:07 | Пн 03.10.16 6:29 | 2,37 ч | 2 |  |
| 278 | 2.5.7.4 | чистка от отложений колпака плавающей головки 2 | 1h | 2019-05-05 05:12 | 2019-05-05 06:12 | 268 | 2016-10-03 09:56 | 2016-10-03 12:08 | 2.2h | 143.41d | 0d | 2029-07-26 00:06 |  | Чистка колпаков | 1h | Пн 03.10.16 9:57 | Пн 03.10.16 12:09 | 2,2 ч | 4 |  |
| 279 | 2.5.7.5 | чистка от отложений колпака 1,2 распределительной камеры | 2h | 2019-05-04 15:12 | 2019-05-04 17:12 | 269 | 2016-10-02 21:56 | 2016-10-03 00:07 | 2.17h | 141.32d | 0d | 2029-07-26 00:06 |  | Чистка колпаков | 2h | Вс 02.10.16 21:57 | Пн 03.10.16 0:07 | 2,17 ч | 3 |  |
| 280 | 2.5.7.6 | чистка от отложений крышки плавающей головки 1 | 1h | 2019-05-05 00:12 | 2019-05-05 01:12 | 270 | 2016-10-03 16:25 | 2016-10-03 17:25 | 1h | 142.16d | 0.28d | 2029-07-26 00:06 |  | Чистка колпаков | 1h | Пн 03.10.16 16:25 | Пн 03.10.16 17:25 | 1 ч | 4 |  |
| 281 | 2.5.7.7 | чистка от отложений крышки плавающей головки 2 | 1h | 2019-05-05 10:18 | 2019-05-05 11:18 | 271 | 2016-10-03 17:07 | 2016-10-03 18:37 | 1.5h | 142.32d | 0d | 2029-07-26 00:06 |  | Чистка колпаков | 1h | Пн 03.10.16 17:07 | Пн 03.10.16 18:37 | 1,5 ч | 4 |  |
| 282 | 2.5.7.8 | чистка от отложений трубного пучка 1 | 20h | 2019-05-06 08:30 | 2019-05-07 04:30 | 272 | 2016-10-04 09:00 | 2016-10-05 01:00 | 16h | 139.29d | 0.15d | 2029-07-26 00:06 |  | Чистка пучков | 20h | Вт 04.10.16 9:00 | Ср 05.10.16 1:00 | 16 ч | 5 |  |
| 283 | 2.5.7.9 | чистка от отложений трубного пучка 2 | 20h | 2019-05-08 20:30 | 2019-05-09 16:30 | 273 | 2016-10-04 10:00 | 2016-10-05 02:00 | 16h | 137.02d | 0d | 2029-07-26 00:06 |  | Чистка пучков | 20h | Вт 04.10.16 10:00 | Ср 05.10.16 2:00 | 16 ч | 7 |  |
| 284 | 2.5.8 | **Транспортировка к месту монтажа** | 4.25d | 2019-05-05 11:30 | 2019-05-09 17:30 |  | 2016-10-03 00:07 | 2016-10-05 12:36 | 2.52d | 140.1d |  | 2029-07-26 00:06 |  |  | 9.5h | Пн 03.10.16 0:07 | Ср 05.10.16 12:36 | 35,4 ч | 4 | 1.5h |
| 285 | 2.5.8.1 | транспортировка колпака плавающей головки 1 к месту монтажа с погрузкой | 0.7h | 2019-05-05 19:06 | 2019-05-05 19:48 | 277 | 2016-10-03 06:29 | 2016-10-03 06:59 | 0.5h | 72.01d | 73.17d | 2029-07-26 00:06 | 8-20 | Автопогрузчик | 0.7h | Пн 03.10.16 6:29 | Пн 03.10.16 6:59 | 0,5 ч | 4 | 0h |
| 286 | 2.5.8.2 | транспортировка колпака плавающей головки 2 к месту монтажа с погрузкой | 0.7h | 2019-05-06 11:18 | 2019-05-06 12:00 | 278 | 2016-10-03 12:08 | 2016-10-03 12:38 | 0.5h | 71.83d | 73.15d | 2029-07-26 00:06 | 8-20 | Автопогрузчик | 0.7h | Пн 03.10.16 12:09 | Пн 03.10.16 12:39 | 0,5 ч | 5 | 0h |
| 287 | 2.5.8.3 | транспортировка колпака распределительной камеры 1,2 к месту монтажа с погрузкой | 0.7h | 2019-05-05 11:30 | 2019-05-05 12:12 | 279 | 2016-10-03 00:07 | 2016-10-03 00:49 | 0.7h | 70.83d | 2.3d | 2029-07-26 00:06 | 8-20 | Автопогрузчик | 0.7h | Пн 03.10.16 0:07 | Пн 03.10.16 0:49 | 0,7 ч | 4 | 0h |
| 288 | 2.5.8.4 | транспортировка крышки плавающей головки 1 к месту монтажа с погрузкой | 0.7h | 2019-05-06 14:06 | 2019-05-06 14:48 | 280 | 2016-10-03 17:25 | 2016-10-03 17:55 | 0.5h | 71.72d |  | 2029-07-26 00:06 | 8-20 | Автопогрузчик | 0.7h | Пн 03.10.16 17:25 | Пн 03.10.16 17:55 | 0,5 ч | 5 | 0h |
| 289 | 2.5.8.5 | транспортировка крышки плавающей головки 2 к месту монтажа с погрузкой | 0.7h | 2019-05-06 18:18 | 2019-05-06 19:00 | 281 | 2016-10-03 18:37 | 2016-10-03 18:52 | 0.25h | 71.54d |  | 2029-07-26 00:06 | 8-20 | Автопогрузчик | 0.7h | Пн 03.10.16 18:37 | Пн 03.10.16 18:52 | 0,25 ч | 5 | 0h |
| 290 | 2.5.8.6 | транспортировка трубного пучка 1 к месту монтажа с погрузкой | 1h | 2019-05-07 09:30 | 2019-05-07 10:30 | 282 | 2016-10-05 05:48 | 2016-10-05 06:48 | 1h | 69.65d | 0.4d | 2029-07-26 00:06 | 8-20 | Автокран, г/п 40тн; Подрядная монтаж; Автотранспорт (п) (длинномер) | 3h | Ср 05.10.16 5:48 | Ср 05.10.16 6:48 | 1 ч | 6 | 0h |
| 291 | 2.5.8.7 | транспортировка трубного пучка 2 к месту монтажа с погрузкой | 1h | 2019-05-09 16:30 | 2019-05-09 17:30 | 283 | 2016-10-05 11:36 | 2016-10-05 12:36 | 1h | 68.52d | 0d | 2029-07-26 00:06 | 8-20 | Автокран, г/п 40тн; Подрядная монтаж; Автотранспорт (п) (длинномер) | 3h | Ср 05.10.16 11:36 | Ср 05.10.16 12:36 | 1 ч | 8 | 7.9h |

| ID | WBS | Task | Duration | Start | Finish | Predecessors | Baseline start | Baseline finish | Baseline duration | Total slack | Free slack | Deadline | Calendar | Resources | Work | Текст2 | Текст4 | Текст10 | Число1 | Длительность2 |
| --- | --- | --- | --- | --- | --- | --- | --- | --- | --- | --- | --- | --- | --- | --- | --- | --- | --- | --- | --- | --- |
| 292 | 2.5.9 | **Монтаж внутренних элементов теплообменника** | 2.02d | 2019-05-08 10:00 | 2019-05-10 10:30 |  | 2016-10-05 15:36 | 2016-10-05 20:45 | 0.21d | 137.4d |  | 2029-07-26 00:06 |  |  | 15h | Ср 05.10.16 15:36 | Ср 05.10.16 20:46 | 5,16 ч | 7 | 0h |
| 293 | 2.5.9.1 | монтаж трубного пучка в корпус теплообменника 1 | 2h | 2019-05-08 10:00 | 2019-05-08 12:00 | 276, 290 | 2016-10-05 15:36 | 2016-10-05 17:36 | 2h | 69.25d | 0.73d | 2029-07-26 00:06 | 8-20 | Подрядная монтаж; Экстрактор; Автокран (г/п 100тн) | 6h | Ср 05.10.16 15:36 | Ср 05.10.16 17:36 | 2 ч | 7 | 0h |
| 294 | 2.5.9.2 | монтаж трубного пучка в корпус теплообменника 2 | 2h | 2019-05-09 17:30 | 2019-05-09 19:30 | 291, 293 | 2016-10-05 17:36 | 2016-10-05 19:55 | 2.33h | 68.52d | 0d | 2029-07-26 00:06 | 8-20 | Подрядная монтаж; Экстрактор; Автокран (г/п 100тн) | 6h | Ср 05.10.16 17:36 | Ср 05.10.16 19:56 | 2,33 ч | 8 | 0h |
| 295 | 2.5.9.3 | монтаж крышки плавающей головки 1 | 0.5h | 2019-05-10 09:00 | 2019-05-10 09:30 | 280, 294 | 2016-10-05 19:55 | 2016-10-05 20:25 | 0.5h | 68.9d | 0d | 2029-07-26 00:06 | 8-20 | Подрядная монтаж; Автокран (г/п 100тн) | 1h | Ср 05.10.16 19:56 | Ср 05.10.16 20:26 | 0,5 ч | 9 |  |
| 296 | 2.5.9.4 | монтаж крышки плавающей головки 2 | 0.5h | 2019-05-10 10:00 | 2019-05-10 10:30 | 281, 295 | 2016-10-05 20:25 | 2016-10-05 20:45 | 0.33h | 68.9d | 0d | 2029-07-26 00:06 | 8-20 | Подрядная монтаж; Автокран (г/п 100тн) | 1h | Ср 05.10.16 20:26 | Ср 05.10.16 20:46 | 0,33 ч | 9 |  |
| 297 | 2.5.9.5 | монтаж колпака распределительной камеры 1,2 | 0.5h | 2019-05-10 08:00 | 2019-05-10 08:30 | 287, 294 | 2016-10-05 19:55 | 2016-10-05 20:25 | 0.5h | 68.91d | 0d | 2029-07-26 00:06 | 8-20 | Подрядная монтаж; Автокран (г/п 100тн) | 1h | Ср 05.10.16 19:56 | Ср 05.10.16 20:26 | 0,5 ч | 9 |  |
| 298 | 2.5.10 | **Сбалчивание внутренних элементов теплообменника** | 0.65d | 2019-05-10 08:30 | 2019-05-11 00:06 |  | 2016-10-05 20:25 | 2016-10-06 11:13 | 0.62d | 137.41d | 0d | 2029-07-26 00:06 |  |  | 25.6h | Ср 05.10.16 20:26 | Чт 06.10.16 11:13 | 14,79 ч | 9 | 0h |
| 299 | 2.5.10.1 | Сборка фланцевого соединения колпака распределительной камеры 1 | 6h | 2019-05-10 08:30 | 2019-05-10 14:30 | 297 | 2016-10-05 20:25 | 2016-10-06 02:15 | 5.83h | 137.41d | 0d | 2029-07-26 00:06 |  | Подрядная монтаж | 6h | Ср 05.10.16 20:26 | Чт 06.10.16 2:16 | 5,83 ч | 9 |  |
| 300 | 2.5.10.2 | Сборка фланцевого соединения колпака распределительной камеры 2 | 6h | 2019-05-10 14:30 | 2019-05-10 20:30 | 299 | 2016-10-06 02:15 | 2016-10-06 08:05 | 5.83h | 137.41d | 0d | 2029-07-26 00:06 |  | Подрядная монтаж | 6h | Чт 06.10.16 2:16 | Чт 06.10.16 8:05 | 5,83 ч | 9 |  |
| 301 | 2.5.10.3 | Сборка фланцевого соединения трубопровода обвязки распределительной камеры (ВХОД) Ø250 | 1.8h | 2019-05-10 20:30 | 2019-05-10 22:18 | 300 | 2016-10-06 08:05 | 2016-10-06 09:43 | 1.63h | 137.41d | 0d | 2029-07-26 00:06 |  | Подрядная монтаж | 1.8h | Чт 06.10.16 8:05 | Чт 06.10.16 9:43 | 1,63 ч | 9 |  |
| 302 | 2.5.10.4 | Сборка фланцевого соединения трубопровода обвязки распределительной камеры (ВЫХОД) Ø250 | 1.8h | 2019-05-10 22:18 | 2019-05-11 00:06 | 301 | 2016-10-06 09:43 | 2016-10-06 11:13 | 1.5h | 137.41d |  | 2029-07-26 00:06 |  | Подрядная монтаж | 1.8h | Чт 06.10.16 9:43 | Чт 06.10.16 11:13 | 1,5 ч | 9 |  |
| 303 | 2.5.10.5 | Сборка фланцевого соединения крышки плавающей головки 1 | 5h | 2019-05-10 10:30 | 2019-05-10 15:30 | 296 | 2016-10-05 20:25 | 2016-10-06 02:15 | 5.83h | 137.56d | 0d | 2029-07-26 00:06 |  | Подрядная монтаж | 5h | Ср 05.10.16 20:26 | Чт 06.10.16 2:16 | 5,83 ч | 9 | 0h |
| 304 | 2.5.10.6 | Сборка фланцевого соединения крышки плавающей головки 2 | 5h | 2019-05-10 15:30 | 2019-05-10 20:30 | 303 | 2016-10-06 02:15 | 2016-10-06 07:05 | 4.83h | 137.56d |  | 2029-07-26 00:06 |  | Подрядная монтаж | 5h | Чт 06.10.16 2:16 | Чт 06.10.16 7:05 | 4,83 ч | 9 | 0h |
| 305 | 2.5.11 | **Монтаж элементов теплообменника** | 0.04d | 2019-05-11 16:06 | 2019-05-11 17:06 | 450 | 2016-10-06 22:13 | 2016-10-06 23:01 | 0.03d | 137.12d |  | 2029-07-26 00:06 |  |  | 2h | Чт 06.10.16 22:13 | Чт 06.10.16 23:01 | 0,8 ч | 10 | 0h |
| 306 | 2.5.11.1 | монтаж колпака плавающей головки 1 | 0.5h | 2019-05-11 16:06 | 2019-05-11 16:36 |  | 2016-10-06 22:13 | 2016-10-06 22:37 | 0.4h | 68.62d | 0d | 2029-07-26 00:06 | 8-20 | Подрядная монтаж; Автокран (г/п 100тн) | 1h | Чт 06.10.16 22:13 | Чт 06.10.16 22:37 | 0,4 ч | 10 | 0h |
| 307 | 2.5.11.2 | монтаж колпака плавающей головки 2 | 0.5h | 2019-05-11 16:36 | 2019-05-11 17:06 | 306 | 2016-10-06 22:37 | 2016-10-06 23:01 | 0.4h | 68.62d | 0d | 2029-07-26 00:06 | 8-20 | Подрядная монтаж; Автокран (г/п 100тн) | 1h | Чт 06.10.16 22:37 | Чт 06.10.16 23:01 | 0,4 ч | 10 | 0h |
| 308 | 2.5.12 | **Сбалчивание элементов теплообменника** | 0.5d | 2019-05-11 17:06 | 2019-05-12 05:06 |  | 2016-10-06 23:01 | 2016-10-07 10:51 | 0.49d | 137.46d | 0d | 2029-07-26 00:06 |  |  | 12h | Чт 06.10.16 23:01 | Пт 07.10.16 10:51 | 11,83 ч | 10 | 0h |
| 309 | 2.5.12.1 | Сборка колпака плавающей головки 1 | 6h | 2019-05-11 17:06 | 2019-05-11 23:06 | 307 | 2016-10-06 23:01 | 2016-10-07 05:01 | 6h | 137.46d | 0d | 2029-07-26 00:06 |  | Подрядная монтаж | 6h | Чт 06.10.16 23:01 | Пт 07.10.16 5:01 | 6 ч | 10 | 0h |
| 310 | 2.5.12.2 | Сборка колпака плавающей головки 2 | 6h | 2019-05-11 23:06 | 2019-05-12 05:06 | 309 | 2016-10-07 05:01 | 2016-10-07 10:51 | 5.83h | 137.46d |  | 2029-07-26 00:06 |  | Подрядная монтаж | 6h | Пт 07.10.16 5:01 | Пт 07.10.16 10:51 | 5,83 ч | 10 | 0h |
| 311 | 2.6 | **Ремонт теплообменников Т-201.А/3-4** | 9.07d | 2019-05-03 05:00 | 2019-05-12 06:36 | 1 | 2016-10-02 20:25 | 2016-10-07 22:51 | 5.1d | 137.04d |  | 2029-07-26 00:06 |  |  | 180.2h | Вс 02.10.16 20:25 | Пт 07.10.16 22:51 | 156,44 ч | 2 | 0h |
| 312 | 2.6.1 | **Разбалчивание элементов теплообменника** | 1d | 2019-05-03 05:00 | 2019-05-04 05:00 |  | 2016-10-02 20:25 | 2016-10-03 08:25 | 0.5d | 137.04d |  | 2029-07-26 00:06 |  |  | 23.6h | Вс 02.10.16 20:25 | Пн 03.10.16 8:25 | 12 ч | 2 | 0h |
| 313 | 2.6.1.1 | Разболтить фланцевое соединение трубопровода обвязки распределительной камеры (ВХОД) Ø250 | 1.8h | 2019-05-03 08:36 | 2019-05-03 10:24 |  | 2016-10-02 20:25 | 2016-10-02 22:13 | 1.8h | 142.29d | 0d | 2029-07-26 00:06 |  | Подрядная монтаж | 1.8h | Вс 02.10.16 20:25 | Вс 02.10.16 22:13 | 1,8 ч | 2 |  |
| 314 | 2.6.1.2 | Разболтить фланцевое соединение трубопровода обвязки распределительной камеры (ВЫХОД) Ø250 | 1.8h | 2019-05-03 14:00 | 2019-05-03 15:48 | 313 | 2016-10-02 22:13 | 2016-10-03 00:01 | 1.8h | 142.29d | 0d | 2029-07-26 00:06 |  | Подрядная монтаж | 1.8h | Вс 02.10.16 22:13 | Пн 03.10.16 0:01 | 1,8 ч | 2 |  |
| 315 | 2.6.1.3 | Разболтить фланцевое соединение колпака распределительной камеры 1 | 4h | 2019-05-03 19:48 | 2019-05-03 23:48 | 314 | 2016-10-02 20:25 | 2016-10-03 02:25 | 6h | 142.29d | 0d | 2029-07-26 00:06 |  | Подрядная монтаж | 8h | Вс 02.10.16 20:25 | Пн 03.10.16 2:25 | 6 ч | 2 |  |
| 316 | 2.6.1.4 | Разболтить фланцевое соединение колпака распределительной камеры 2 | 4h | 2019-05-04 01:00 | 2019-05-04 05:00 | 315 | 2016-10-03 02:25 | 2016-10-03 07:14 | 4.83h | 142.29d | 0.12d | 2029-07-26 00:06 |  | Подрядная монтаж | 4h | Пн 03.10.16 2:25 | Пн 03.10.16 7:15 | 4,83 ч | 3 |  |
| 317 | 2.6.1.5 | Разболтить фланцевое соединение колпака плавающей головки 1 | 4h | 2019-05-03 05:00 | 2019-05-03 09:00 |  | 2016-10-02 20:25 | 2016-10-03 02:25 | 6h | 137.04d | 0d | 2029-07-26 00:06 |  | Подрядная монтаж | 4h | Вс 02.10.16 20:25 | Пн 03.10.16 2:25 | 6 ч | 2 |  |
| 318 | 2.6.1.6 | Разболтить фланцевое соединение колпака плавающей головки 2 | 4h | 2019-05-03 09:00 | 2019-05-03 13:00 | 317 | 2016-10-03 02:25 | 2016-10-03 08:25 | 6h | 137.04d | 0d | 2029-07-26 00:06 |  | Подрядная монтаж | 4h | Пн 03.10.16 2:25 | Пн 03.10.16 8:25 | 6 ч | 2 |  |

| ID | WBS | Task | Duration | Start | Finish | Predecessors | Baseline start | Baseline finish | Baseline duration | Total slack | Free slack | Deadline | Calendar | Resources | Work | Текст2 | Текст4 | Текст10 | Число1 | Длительность2 |
| --- | --- | --- | --- | --- | --- | --- | --- | --- | --- | --- | --- | --- | --- | --- | --- | --- | --- | --- | --- | --- |
| 319 | 2.6.2 | **Демонтаж элементов теплообменника** | 0.81d | 2019-05-03 15:00 | 2019-05-04 10:30 |  | 2016-10-02 20:25 | 2016-10-03 09:14 | 0.53d | 137.04d |  | 2029-07-26 00:06 |  |  | 3h | Вс 02.10.16 20:25 | Пн 03.10.16 9:15 | 53,46 ч | 2 | 8.85h |
| 320 | 2.6.2.1 | Демонтировать колпак плавающей головки 1 | 0.5h | 2019-05-03 15:00 | 2019-05-03 15:30 | 318 | 2016-10-03 02:25 | 2016-10-03 03:25 | 1h | 68.54d | 0d | 2029-07-26 00:06 | 8-20 | Подрядная монтаж; Автокран (г/п 100тн) | 1h | Пн 03.10.16 2:25 | Пн 03.10.16 3:25 | 1 ч | 2 | 0h |
| 321 | 2.6.2.2 | Демонтировать колпак плавающей головки 2 | 0.5h | 2019-05-03 18:00 | 2019-05-03 18:30 | 320 | 2016-10-03 08:25 | 2016-10-03 09:14 | 0.83h | 68.54d | 0d | 2029-07-26 00:06 | 8-20 | Подрядная монтаж; Автокран (г/п 100тн) | 1h | Пн 03.10.16 8:25 | Пн 03.10.16 9:15 | 0,83 ч | 2 | 0h |
| 322 | 2.6.2.3 | Демонтировать колпак распределительной камеры 1,2 | 0.5h | 2019-05-04 10:00 | 2019-05-04 10:30 | 316 | 2016-10-02 20:25 | 2016-10-02 21:14 | 0.83h | 71.17d | 0d | 2029-07-26 00:06 | 8-20 | Подрядная монтаж; Автокран (г/п 100тн) | 1h | Вс 02.10.16 20:25 | Вс 02.10.16 21:15 | 0,83 ч | 3 | 0h |
| 323 | 2.6.3 | **Чистка крепежа плавающих головок** | 0.29d | 2019-05-03 20:30 | 2019-05-04 03:30 |  | 2016-10-02 20:25 | 2016-10-03 09:14 | 0.53d | 137.04d |  | 2029-07-26 00:06 |  |  | 2h | Вс 02.10.16 20:25 | Пн 03.10.16 9:15 | 53,46 ч | 2 | 8.85h |
| 324 | 2.6.3.1 | Чистка крепежа плавающей головки 1 | 1h | 2019-05-03 20:30 | 2019-05-03 21:30 | 321 | 2016-10-02 20:25 | 2016-10-02 21:14 | 0.83h | 137.04d | 0d | 2029-07-26 00:06 |  | Чистка корпуса | 1h | Вс 02.10.16 20:25 | Вс 02.10.16 21:15 | 0,83 ч | 2 | 0h |
| 325 | 2.6.3.2 | Чистка крепежа плавающей головки 2 | 1h | 2019-05-04 02:30 | 2019-05-04 03:30 | 324 | 2016-10-03 02:25 | 2016-10-03 03:25 | 1h | 137.04d | 0d | 2029-07-26 00:06 |  | Чистка корпуса | 1h | Пн 03.10.16 2:25 | Пн 03.10.16 3:25 | 1 ч | 3 | 0h |
| 326 | 2.6.4 | **Разбалчивание внутренних элементов теплообменника** | 0.46d | 2019-05-04 03:30 | 2019-05-04 14:30 |  | 2016-10-03 03:25 | 2016-10-03 15:25 | 0.5d | 137.04d |  | 2029-07-26 00:06 |  |  | 10h | Пн 03.10.16 3:25 | Пн 03.10.16 15:25 | 12 ч | 3 | 0h |
| 327 | 2.6.4.1 | Разболтить фланцевое соединение крышки плавающей головки 1 | 5h | 2019-05-04 03:30 | 2019-05-04 08:30 | 325 | 2016-10-03 03:25 | 2016-10-03 09:25 | 6h | 137.04d | 0d | 2029-07-26 00:06 |  | Подрядная монтаж | 5h | Пн 03.10.16 3:25 | Пн 03.10.16 9:25 | 6 ч | 3 |  |
| 328 | 2.6.4.2 | Разболтить фланцевое соединение крышки плавающей головки 2 | 5h | 2019-05-04 09:30 | 2019-05-04 14:30 | 327 | 2016-10-03 09:25 | 2016-10-03 15:25 | 6h | 137.04d | 0d | 2029-07-26 00:06 |  | Подрядная монтаж | 5h | Пн 03.10.16 9:25 | Пн 03.10.16 15:25 | 6 ч | 3 |  |
| 329 | 2.6.5 | **Демонтаж внутренних элементов теплообменника** | 2.08d | 2019-05-04 15:30 | 2019-05-06 17:30 |  | 2016-10-03 15:25 | 2016-10-04 02:35 | 0.47d | 137.04d |  | 2029-07-26 00:06 |  |  | 14h | Пн 03.10.16 15:25 | Вт 04.10.16 2:35 | 11,17 ч | 3 | 0h |
| 330 | 2.6.5.1 | Демонтировать крышку плавающей головки 1 | 0.5h | 2019-05-04 15:30 | 2019-05-04 16:00 | 328 | 2016-10-03 15:25 | 2016-10-03 15:55 | 0.5h | 68.54d | 0d | 2029-07-26 00:06 | 8-20 | Подрядная монтаж; Автокран (г/п 100тн) | 1h | Пн 03.10.16 15:25 | Пн 03.10.16 15:55 | 0,5 ч | 3 | 0h |
| 331 | 2.6.5.2 | Демонтировать крышку плавающей головки 2 | 0.5h | 2019-05-04 18:30 | 2019-05-04 19:00 | 330 | 2016-10-03 15:55 | 2016-10-03 16:25 | 0.5h | 68.54d | 0d | 2029-07-26 00:06 | 8-20 | Подрядная монтаж; Автокран (г/п 100тн) | 1h | Пн 03.10.16 15:55 | Пн 03.10.16 16:25 | 0,5 ч | 3 | 0h |
| 332 | 2.6.5.3 | Демонтировать трубный пучок теплообменника 1 | 2h | 2019-05-05 15:30 | 2019-05-05 17:30 | 331 | 2016-10-03 16:25 | 2016-10-04 00:35 | 8.17h | 68.56d | 0d | 2029-07-26 00:06 | 8-20 | Подрядная монтаж; Экстрактор; Автокран (г/п 100тн) | 6h | Пн 03.10.16 16:25 | Вт 04.10.16 0:35 | 8,17 ч | 4 | 0h |
| 333 | 2.6.5.4 | Демонтировать трубный пучок теплообменника 2 | 2h | 2019-05-06 15:30 | 2019-05-06 17:30 | 332 | 2016-10-04 00:35 | 2016-10-04 02:35 | 2h | 68.56d | 0d | 2029-07-26 00:06 | 8-20 | Подрядная монтаж; Экстрактор; Автокран (г/п 100тн) | 6h | Вт 04.10.16 0:35 | Вт 04.10.16 2:35 | 2 ч | 5 | 0h |
| 334 | 2.6.6 | **Транспортировка к месту чистки** | 3.09d | 2019-05-03 16:18 | 2019-05-06 18:30 |  | 2016-10-02 21:14 | 2016-10-04 10:00 | 1.53d | 140.11d |  | 2029-07-26 00:06 |  |  | 9.5h | Вс 02.10.16 21:15 | Вт 04.10.16 10:00 | 12,17 ч | 2 | 0h |
| 335 | 2.6.6.1 | Транспортировка колпака плавающей головки 1 к месту чистки с разгрузкой | 0.7h | 2019-05-03 16:18 | 2019-05-03 17:00 | 320 | 2016-10-03 03:25 | 2016-10-03 04:07 | 0.7h | 71.98d | 0d | 2029-07-26 00:06 | 8-20 | Автопогрузчик | 0.7h | Пн 03.10.16 3:25 | Пн 03.10.16 4:07 | 0,7 ч | 2 | 0h |
| 336 | 2.6.6.2 | Транспортировка колпака плавающей головки 2 к месту чистки с разгрузкой | 0.7h | 2019-05-05 13:36 | 2019-05-05 14:18 | 321 | 2016-10-03 09:14 | 2016-10-03 09:56 | 0.7h | 72.17d | 0d | 2029-07-26 00:06 | 8-20 | Автопогрузчик | 0.7h | Пн 03.10.16 9:15 | Пн 03.10.16 9:57 | 0,7 ч | 4 | 0h |
| 337 | 2.6.6.3 | Транспортировка колпака распределительной камеры 1,2 к месту чистки с разгрузкой | 0.7h | 2019-05-04 11:18 | 2019-05-04 12:00 | 322 | 2016-10-02 21:14 | 2016-10-02 21:56 | 0.7h | 71.17d | 0d | 2029-07-26 00:06 | 8-20 | Автопогрузчик | 0.7h | Вс 02.10.16 21:15 | Вс 02.10.16 21:57 | 0,7 ч | 3 | 0h |
| 338 | 2.6.6.4 | Транспортировка крышки плавающей головки 1 к месту чистки с разгрузкой | 0.7h | 2019-05-04 16:48 | 2019-05-04 17:30 | 330 | 2016-10-03 15:55 | 2016-10-03 16:25 | 0.5h | 71.1d | 0d | 2029-07-26 00:06 | 8-20 | Автопогрузчик | 0.7h | Пн 03.10.16 15:55 | Пн 03.10.16 16:25 | 0,25 ч | 3 |  |
| 339 | 2.6.6.5 | Транспортировка крышки плавающей головки 2 к месту чистки с разгрузкой | 0.7h | 2019-05-05 09:24 | 2019-05-05 10:06 | 331 | 2016-10-03 16:25 | 2016-10-03 17:07 | 0.7h | 71.28d | 0d | 2029-07-26 00:06 | 8-20 | Автопогрузчик | 0.7h | Пн 03.10.16 16:25 | Пн 03.10.16 17:07 | 0,7 ч | 4 | 0h |
| 340 | 2.6.6.6 | Транспортировка трубного пучка 1 к месту чистки с разгрузкой | 1h | 2019-05-05 17:30 | 2019-05-05 18:30 | 332 | 2016-10-04 00:35 | 2016-10-04 09:00 | 8.41h | 69.38d | 0d | 2029-07-26 00:06 | 8-20 | Автотранспорт (п) (длинномер); Подрядная монтаж; Автокран, г/п 40тн | 3h | Вт 04.10.16 0:35 | Вт 04.10.16 9:00 | 1,5 ч | 4 | 5.42h |
| 341 | 2.6.6.7 | Транспортировка трубного пучка 2 к месту чистки с разгрузкой | 1h | 2019-05-06 17:30 | 2019-05-06 18:30 | 333 | 2016-10-04 09:00 | 2016-10-04 10:00 | 1h | 68.56d | 0d | 2029-07-26 00:06 | 8-20 | Автотранспорт (п) (длинномер); Подрядная монтаж; Автокран, г/п 40тн | 3h | Вт 04.10.16 9:00 | Вт 04.10.16 10:00 | 1 ч | 5 | 0h |
| 342 | 2.6.7 | **Чистка элементов теплообменника** | 6.68d | 2019-05-03 18:12 | 2019-05-10 10:30 |  | 2016-10-02 21:56 | 2016-10-05 11:36 | 2.57d | 139.37d |  | 2029-07-26 00:06 |  |  | 54h | Вс 02.10.16 21:57 | Ср 05.10.16 11:36 | 36,57 ч | 2 | 0h |
| 343 | 2.6.7.1 | чистка от отложений корпуса 1 теплообменника | 4h | 2019-05-07 01:30 | 2019-05-07 05:30 | 333 | 2016-10-04 00:35 | 2016-10-04 03:45 | 3.17h | 139.12d | 0d | 2029-07-26 00:06 |  | Чистка корпуса | 4h | Вт 04.10.16 0:35 | Вт 04.10.16 3:45 | 3,17 ч | 6 |  |
| 344 | 2.6.7.2 | чистка от отложений корпуса 2 теплообменника | 4h | 2019-05-08 01:30 | 2019-05-08 05:30 | 343 | 2016-10-04 02:35 | 2016-10-04 06:35 | 4h | 139.12d | 0.15d | 2029-07-26 00:06 |  | Чистка корпуса | 4h | Вт 04.10.16 2:35 | Вт 04.10.16 6:35 | 4 ч | 7 |  |
| 345 | 2.6.7.3 | чистка от отложений колпака плавающей головки 1 | 1h | 2019-05-03 18:12 | 2019-05-03 19:12 | 335 | 2016-10-03 04:07 | 2016-10-03 06:29 | 2.37h | 143.98d | 0d | 2029-07-26 00:06 |  | Чистка колпаков | 1h | Пн 03.10.16 4:07 | Пн 03.10.16 6:29 | 2,37 ч | 2 |  |
| 346 | 2.6.7.4 | чистка от отложений колпака плавающей головки 2 | 1h | 2019-05-05 14:18 | 2019-05-05 15:18 | 336 | 2016-10-03 09:56 | 2016-10-03 12:08 | 2.2h | 144.17d | 0d | 2029-07-26 00:06 |  | Чистка колпаков | 1h | Пн 03.10.16 9:57 | Пн 03.10.16 12:09 | 2,2 ч | 4 |  |
| 347 | 2.6.7.5 | чистка от отложений колпака 1,2 распределительной камеры | 2h | 2019-05-04 17:12 | 2019-05-04 19:12 | 337 | 2016-10-02 21:56 | 2016-10-03 00:07 | 2.17h | 142.17d | 0d | 2029-07-26 00:06 |  | Чистка колпаков | 2h | Вс 02.10.16 21:57 | Пн 03.10.16 0:07 | 2,17 ч | 3 |  |
| 348 | 2.6.7.6 | чистка от отложений крышки плавающей головки 1 | 1h | 2019-05-05 01:12 | 2019-05-05 02:12 | 338 | 2016-10-03 16:25 | 2016-10-03 17:25 | 1h | 142.55d | 0.24d | 2029-07-26 00:06 |  | Чистка колпаков | 1h | Пн 03.10.16 16:25 | Пн 03.10.16 17:25 | 1 ч | 4 |  |
| 349 | 2.6.7.7 | чистка от отложений крышки плавающей головки 2 | 1h | 2019-05-05 11:18 | 2019-05-05 12:18 | 339 | 2016-10-03 17:07 | 2016-10-03 18:37 | 1.5h | 142.28d | 0d | 2029-07-26 00:06 |  | Чистка колпаков | 1h | Пн 03.10.16 17:07 | Пн 03.10.16 18:37 | 1,5 ч | 4 |  |
| 350 | 2.6.7.8 | чистка от отложений трубного пучка 1 | 20h | 2019-05-07 02:30 | 2019-05-07 22:30 | 340 | 2016-10-04 09:00 | 2016-10-05 01:00 | 16h | 138.88d | 0.4d | 2029-07-26 00:06 |  | Чистка пучков | 20h | Вт 04.10.16 9:00 | Ср 05.10.16 1:00 | 16 ч | 6 |  |
| 351 | 2.6.7.9 | чистка от отложений трубного пучка 2 | 20h | 2019-05-09 14:30 | 2019-05-10 10:30 | 341 | 2016-10-04 10:00 | 2016-10-05 02:00 | 16h | 137.08d | 0d | 2029-07-26 00:06 |  | Чистка пучков | 20h | Вт 04.10.16 10:00 | Ср 05.10.16 2:00 | 16 ч | 8 |  |

| ID | WBS | Task | Duration | Start | Finish | Predecessors | Baseline start | Baseline finish | Baseline duration | Total slack | Free slack | Deadline | Calendar | Resources | Work | Текст2 | Текст4 | Текст10 | Число1 | Длительность2 |
| --- | --- | --- | --- | --- | --- | --- | --- | --- | --- | --- | --- | --- | --- | --- | --- | --- | --- | --- | --- | --- |
| 352 | 2.6.8 | **Транспортировка к месту монтажа** | 4.97d | 2019-05-05 12:12 | 2019-05-10 11:30 |  | 2016-10-03 00:07 | 2016-10-05 12:36 | 2.52d | 139.35d |  | 2029-07-26 00:06 |  |  | 9.5h | Пн 03.10.16 0:07 | Ср 05.10.16 12:36 | 35,4 ч | 4 | 1.5h |
| 353 | 2.6.8.1 | транспортировка колпака плавающей головки 1 к месту монтажа с погрузкой | 0.7h | 2019-05-05 19:48 | 2019-05-06 08:30 | 345 | 2016-10-03 06:29 | 2016-10-03 06:59 | 0.5h | 71.98d | 73.17d | 2029-07-26 00:06 | 8-20 | Автопогрузчик | 0.7h | Пн 03.10.16 6:29 | Пн 03.10.16 6:59 | 0,5 ч | 4 | 0h |
| 354 | 2.6.8.2 | транспортировка колпака плавающей головки 2 к месту монтажа с погрузкой | 0.7h | 2019-05-05 15:18 | 2019-05-05 16:00 | 346 | 2016-10-03 12:08 | 2016-10-03 12:38 | 0.5h | 72.17d | 73.15d | 2029-07-26 00:06 | 8-20 | Автопогрузчик | 0.7h | Пн 03.10.16 12:09 | Пн 03.10.16 12:39 | 0,5 ч | 4 | 0h |
| 355 | 2.6.8.3 | транспортировка колпака распределительной камеры 1,2 к месту монтажа с погрузкой | 0.7h | 2019-05-05 12:12 | 2019-05-05 12:54 | 347 | 2016-10-03 00:07 | 2016-10-03 00:49 | 0.7h | 71.17d | 2.52d | 2029-07-26 00:06 | 8-20 | Автопогрузчик | 0.7h | Пн 03.10.16 0:07 | Пн 03.10.16 0:49 | 0,7 ч | 4 | 0h |
| 356 | 2.6.8.4 | транспортировка крышки плавающей головки 1 к месту монтажа с погрузкой | 0.7h | 2019-05-06 14:48 | 2019-05-06 15:30 | 348 | 2016-10-03 17:25 | 2016-10-03 17:55 | 0.5h | 71.69d |  | 2029-07-26 00:06 | 8-20 | Автопогрузчик | 0.7h | Пн 03.10.16 17:25 | Пн 03.10.16 17:55 | 0,5 ч | 5 | 0h |
| 357 | 2.6.8.5 | транспортировка крышки плавающей головки 2 к месту монтажа с погрузкой | 0.7h | 2019-05-06 19:00 | 2019-05-06 19:42 | 349 | 2016-10-03 18:37 | 2016-10-03 18:52 | 0.25h | 71.51d |  | 2029-07-26 00:06 | 8-20 | Автопогрузчик | 0.7h | Пн 03.10.16 18:37 | Пн 03.10.16 18:52 | 0,25 ч | 5 | 0h |
| 358 | 2.6.8.6 | транспортировка трубного пучка 1 к месту монтажа с погрузкой | 1h | 2019-05-08 08:00 | 2019-05-08 09:00 | 350 | 2016-10-05 05:48 | 2016-10-05 06:48 | 1h | 69.48d | 0d | 2029-07-26 00:06 | 8-20 | Автокран, г/п 40тн; Подрядная монтаж; Автотранспорт (п) (длинномер) | 3h | Ср 05.10.16 5:48 | Ср 05.10.16 6:48 | 1 ч | 7 | 0h |
| 359 | 2.6.8.7 | транспортировка трубного пучка 2 к месту монтажа с погрузкой | 1h | 2019-05-10 10:30 | 2019-05-10 11:30 | 351 | 2016-10-05 11:36 | 2016-10-05 12:36 | 1h | 68.58d | 0d | 2029-07-26 00:06 | 8-20 | Автокран, г/п 40тн; Подрядная монтаж; Автотранспорт (п) (длинномер) | 3h | Ср 05.10.16 11:36 | Ср 05.10.16 12:36 | 1 ч | 9 | 7.9h |
| 360 | 2.6.9 | **Монтаж внутренних элементов теплообменника** | 2.25d | 2019-05-08 12:00 | 2019-05-10 18:00 |  | 2016-10-05 15:36 | 2016-10-05 20:45 | 0.21d | 137.08d |  | 2029-07-26 00:06 |  |  | 15h | Ср 05.10.16 15:36 | Ср 05.10.16 20:46 | 5,16 ч | 7 | 0h |
| 361 | 2.6.9.1 | монтаж трубного пучка в корпус теплообменника 1 | 2h | 2019-05-08 12:00 | 2019-05-08 14:00 | 344, 358 | 2016-10-05 15:36 | 2016-10-05 17:36 | 2h | 69.48d | 0.9d | 2029-07-26 00:06 | 8-20 | Подрядная монтаж; Экстрактор; Автокран (г/п 100тн) | 6h | Ср 05.10.16 15:36 | Ср 05.10.16 17:36 | 2 ч | 7 | 0h |
| 362 | 2.6.9.2 | монтаж трубного пучка в корпус теплообменника 2 | 2h | 2019-05-10 11:30 | 2019-05-10 13:30 | 359, 361 | 2016-10-05 17:36 | 2016-10-05 19:55 | 2.33h | 68.58d | 0d | 2029-07-26 00:06 | 8-20 | Подрядная монтаж; Экстрактор; Автокран (г/п 100тн) | 6h | Ср 05.10.16 17:36 | Ср 05.10.16 19:56 | 2,33 ч | 9 | 0h |
| 363 | 2.6.9.3 | монтаж крышки плавающей головки 1 | 0.5h | 2019-05-10 16:30 | 2019-05-10 17:00 | 348, 362 | 2016-10-05 19:55 | 2016-10-05 20:25 | 0.5h | 68.58d | 0d | 2029-07-26 00:06 | 8-20 | Подрядная монтаж; Автокран (г/п 100тн) | 1h | Ср 05.10.16 19:56 | Ср 05.10.16 20:26 | 0,5 ч | 9 |  |
| 364 | 2.6.9.4 | монтаж крышки плавающей головки 2 | 0.5h | 2019-05-10 17:30 | 2019-05-10 18:00 | 349, 363 | 2016-10-05 20:25 | 2016-10-05 20:45 | 0.33h | 68.58d | 0d | 2029-07-26 00:06 | 8-20 | Подрядная монтаж; Автокран (г/п 100тн) | 1h | Ср 05.10.16 20:26 | Ср 05.10.16 20:46 | 0,33 ч | 9 |  |
| 365 | 2.6.9.5 | монтаж колпака распределительной камеры 1,2 | 0.5h | 2019-05-10 15:30 | 2019-05-10 16:00 | 355, 362 | 2016-10-05 19:55 | 2016-10-05 20:25 | 0.5h | 68.64d | 0d | 2029-07-26 00:06 | 8-20 | Подрядная монтаж; Автокран (г/п 100тн) | 1h | Ср 05.10.16 19:56 | Ср 05.10.16 20:26 | 0,5 ч | 9 |  |
| 366 | 2.6.10 | **Сбалчивание внутренних элементов теплообменника** | 0.65d | 2019-05-10 16:00 | 2019-05-11 07:36 |  | 2016-10-05 20:25 | 2016-10-06 11:13 | 0.62d | 137.14d | 0.02d | 2029-07-26 00:06 |  |  | 25.6h | Ср 05.10.16 20:26 | Чт 06.10.16 11:13 | 14,79 ч | 9 | 0h |
| 367 | 2.6.10.1 | Сборка фланцевого соединения колпака распределительной камеры 1 | 6h | 2019-05-10 16:00 | 2019-05-10 22:00 | 365 | 2016-10-05 20:25 | 2016-10-06 02:15 | 5.83h | 137.14d | 0d | 2029-07-26 00:06 |  | Подрядная монтаж | 6h | Ср 05.10.16 20:26 | Чт 06.10.16 2:16 | 5,83 ч | 9 |  |
| 368 | 2.6.10.2 | Сборка фланцевого соединения колпака распределительной камеры 2 | 6h | 2019-05-10 22:00 | 2019-05-11 04:00 | 367 | 2016-10-06 02:15 | 2016-10-06 08:05 | 5.83h | 137.14d | 0d | 2029-07-26 00:06 |  | Подрядная монтаж | 6h | Чт 06.10.16 2:16 | Чт 06.10.16 8:05 | 5,83 ч | 9 |  |
| 369 | 2.6.10.3 | Сборка фланцевого соединения трубопровода обвязки распределительной камеры (ВХОД) Ø250 | 1.8h | 2019-05-11 04:00 | 2019-05-11 05:48 | 368 | 2016-10-06 08:05 | 2016-10-06 09:43 | 1.63h | 137.14d | 0d | 2029-07-26 00:06 |  | Подрядная монтаж | 1.8h | Чт 06.10.16 8:05 | Чт 06.10.16 9:43 | 1,63 ч | 10 |  |
| 370 | 2.6.10.4 | Сборка фланцевого соединения трубопровода обвязки распределительной камеры (ВЫХОД) Ø250 | 1.8h | 2019-05-11 05:48 | 2019-05-11 07:36 | 369 | 2016-10-06 09:43 | 2016-10-06 11:13 | 1.5h | 137.14d |  | 2029-07-26 00:06 |  | Подрядная монтаж | 1.8h | Чт 06.10.16 9:43 | Чт 06.10.16 11:13 | 1,5 ч | 10 |  |
| 371 | 2.6.10.5 | Сборка фланцевого соединения крышки плавающей головки 1 | 5h | 2019-05-10 18:00 | 2019-05-10 23:00 | 364 | 2016-10-05 20:25 | 2016-10-06 02:15 | 5.83h | 137.29d | 0d | 2029-07-26 00:06 |  | Подрядная монтаж | 5h | Ср 05.10.16 20:26 | Чт 06.10.16 2:16 | 5,83 ч | 9 | 0h |
| 372 | 2.6.10.6 | Сборка фланцевого соединения крышки плавающей головки 2 | 5h | 2019-05-10 23:00 | 2019-05-11 04:00 | 371 | 2016-10-06 02:15 | 2016-10-06 07:05 | 4.83h | 137.29d |  | 2029-07-26 00:06 |  | Подрядная монтаж | 5h | Чт 06.10.16 2:16 | Чт 06.10.16 7:05 | 4,83 ч | 9 | 0h |
| 373 | 2.6.11 | **Монтаж элементов теплообменника** | 0.06d | 2019-05-11 17:06 | 2019-05-11 18:36 | 450 | 2016-10-06 22:13 | 2016-10-06 23:01 | 0.03d | 137.73d |  | 2029-07-26 00:06 |  |  | 2h | Чт 06.10.16 22:13 | Чт 06.10.16 23:01 | 0,8 ч | 10 | 0h |
| 374 | 2.6.11.1 | монтаж колпака плавающей головки 1 | 0.5h | 2019-05-11 17:06 | 2019-05-11 17:36 |  | 2016-10-06 22:13 | 2016-10-06 22:37 | 0.4h | 68.73d | 0d | 2029-07-26 00:06 | 8-20 | Подрядная монтаж; Автокран (г/п 100тн) | 1h | Чт 06.10.16 22:13 | Чт 06.10.16 22:37 | 0,4 ч | 10 | 0h |
| 375 | 2.6.11.2 | монтаж колпака плавающей головки 2 | 0.5h | 2019-05-11 18:06 | 2019-05-11 18:36 | 374 | 2016-10-06 22:37 | 2016-10-06 23:01 | 0.4h | 68.73d | 0d | 2029-07-26 00:06 | 8-20 | Подрядная монтаж; Автокран (г/п 100тн) | 1h | Чт 06.10.16 22:37 | Чт 06.10.16 23:01 | 0,4 ч | 10 | 0h |

| ID | WBS | Task | Duration | Start | Finish | Predecessors | Baseline start | Baseline finish | Baseline duration | Total slack | Free slack | Deadline | Calendar | Resources | Work | Текст2 | Текст4 | Текст10 | Число1 | Длительность2 |
| --- | --- | --- | --- | --- | --- | --- | --- | --- | --- | --- | --- | --- | --- | --- | --- | --- | --- | --- | --- | --- |
| 376 | 2.6.12 | **Сбалчивание элементов теплообменника** | 0.5d | 2019-05-11 18:36 | 2019-05-12 06:36 |  | 2016-10-06 23:01 | 2016-10-07 10:51 | 0.49d | 137.73d |  | 2029-07-26 00:06 |  |  | 12h | Чт 06.10.16 23:01 | Пт 07.10.16 10:51 | 11,83 ч | 10 | 0h |
| 377 | 2.6.12.1 | Сборка колпака плавающей головки 1 | 6h | 2019-05-11 18:36 | 2019-05-12 00:36 | 375 | 2016-10-06 23:01 | 2016-10-07 05:01 | 6h | 137.73d | 0d | 2029-07-26 00:06 |  | Подрядная монтаж | 6h | Чт 06.10.16 23:01 | Пт 07.10.16 5:01 | 6 ч | 10 | 0h |
| 378 | 2.6.12.2 | Сборка колпака плавающей головки 2 | 6h | 2019-05-12 00:36 | 2019-05-12 06:36 | 377 | 2016-10-07 05:01 | 2016-10-07 10:51 | 5.83h | 137.73d | 142.92d | 2029-07-26 00:06 |  | Подрядная монтаж | 6h | Пт 07.10.16 5:01 | Пт 07.10.16 10:51 | 5,83 ч | 11 | 0h |
| 379 | 2.7 | **Ремонт теплообменников Т-201.А/1-2** | 9.09d | 2019-05-03 05:00 | 2019-05-12 07:06 | 1 | 2016-10-02 20:25 | 2016-10-07 22:51 | 5.1d | 137.02d |  | 2029-07-26 00:06 |  |  | 180.2h | Вс 02.10.16 20:25 | Пт 07.10.16 22:51 | 156,44 ч | 2 | 0h |
| 380 | 2.7.1 | **Разбалчивание элементов теплообменника** | 1.04d | 2019-05-03 05:00 | 2019-05-04 06:00 |  | 2016-10-02 20:25 | 2016-10-03 08:25 | 0.5d | 137.02d |  | 2029-07-26 00:06 |  |  | 23.6h | Вс 02.10.16 20:25 | Пн 03.10.16 8:25 | 12 ч | 2 | 0h |
| 381 | 2.7.1.1 | Разболтить фланцевое соединение трубопровода обвязки распределительной камеры (ВХОД) Ø250 | 1.8h | 2019-05-03 08:36 | 2019-05-03 10:24 |  | 2016-10-02 20:25 | 2016-10-02 22:13 | 1.8h | 142.39d | 0d | 2029-07-26 00:06 |  | Подрядная монтаж | 1.8h | Вс 02.10.16 20:25 | Вс 02.10.16 22:13 | 1,8 ч | 2 |  |
| 382 | 2.7.1.2 | Разболтить фланцевое соединение трубопровода обвязки распределительной камеры (ВЫХОД) Ø250 | 1.8h | 2019-05-03 14:00 | 2019-05-03 15:48 | 381 | 2016-10-02 22:13 | 2016-10-03 00:01 | 1.8h | 142.39d | 0d | 2029-07-26 00:06 |  | Подрядная монтаж | 1.8h | Вс 02.10.16 22:13 | Пн 03.10.16 0:01 | 1,8 ч | 2 |  |
| 383 | 2.7.1.3 | Разболтить фланцевое соединение колпака распределительной камеры 1 | 4h | 2019-05-03 21:00 | 2019-05-04 01:00 | 382 | 2016-10-02 20:25 | 2016-10-03 02:25 | 6h | 142.39d | 0d | 2029-07-26 00:06 |  | Подрядная монтаж | 8h | Вс 02.10.16 20:25 | Пн 03.10.16 2:25 | 6 ч | 2 |  |
| 384 | 2.7.1.4 | Разболтить фланцевое соединение колпака распределительной камеры 2 | 4h | 2019-05-04 02:00 | 2019-05-04 06:00 | 383 | 2016-10-03 02:25 | 2016-10-03 07:14 | 4.83h | 142.39d | 0.08d | 2029-07-26 00:06 |  | Подрядная монтаж | 4h | Пн 03.10.16 2:25 | Пн 03.10.16 7:15 | 4,83 ч | 3 |  |
| 385 | 2.7.1.5 | Разболтить фланцевое соединение колпака плавающей головки 1 | 4h | 2019-05-03 05:00 | 2019-05-03 09:00 |  | 2016-10-02 20:25 | 2016-10-03 02:25 | 6h | 137.02d | 0d | 2029-07-26 00:06 |  | Подрядная монтаж | 4h | Вс 02.10.16 20:25 | Пн 03.10.16 2:25 | 6 ч | 2 |  |
| 386 | 2.7.1.6 | Разболтить фланцевое соединение колпака плавающей головки 2 | 4h | 2019-05-03 09:00 | 2019-05-03 13:00 | 385 | 2016-10-03 02:25 | 2016-10-03 08:25 | 6h | 137.02d | 0d | 2029-07-26 00:06 |  | Подрядная монтаж | 4h | Пн 03.10.16 2:25 | Пн 03.10.16 8:25 | 6 ч | 2 |  |
| 387 | 2.7.2 | **Демонтаж элементов теплообменника** | 0.81d | 2019-05-03 15:30 | 2019-05-04 11:00 |  | 2016-10-02 20:25 | 2016-10-03 09:14 | 0.53d | 137.02d |  | 2029-07-26 00:06 |  |  | 3h | Вс 02.10.16 20:25 | Пн 03.10.16 9:15 | 53,46 ч | 2 | 8.85h |
| 388 | 2.7.2.1 | Демонтировать колпак плавающей головки 1 | 0.5h | 2019-05-03 15:30 | 2019-05-03 16:00 | 386 | 2016-10-03 02:25 | 2016-10-03 03:25 | 1h | 68.52d | 0d | 2029-07-26 00:06 | 8-20 | Подрядная монтаж; Автокран (г/п 100тн) | 1h | Пн 03.10.16 2:25 | Пн 03.10.16 3:25 | 1 ч | 2 | 0h |
| 389 | 2.7.2.2 | Демонтировать колпак плавающей головки 2 | 0.5h | 2019-05-03 18:30 | 2019-05-03 19:00 | 388 | 2016-10-03 08:25 | 2016-10-03 09:14 | 0.83h | 68.52d | 0d | 2029-07-26 00:06 | 8-20 | Подрядная монтаж; Автокран (г/п 100тн) | 1h | Пн 03.10.16 8:25 | Пн 03.10.16 9:15 | 0,83 ч | 2 | 0h |
| 390 | 2.7.2.3 | Демонтировать колпак распределительной камеры 1,2 | 0.5h | 2019-05-04 10:30 | 2019-05-04 11:00 | 384 | 2016-10-02 20:25 | 2016-10-02 21:14 | 0.83h | 71.3d | 0d | 2029-07-26 00:06 | 8-20 | Подрядная монтаж; Автокран (г/п 100тн) | 1h | Вс 02.10.16 20:25 | Вс 02.10.16 21:15 | 0,83 ч | 3 | 0h |
| 391 | 2.7.3 | **Чистка крепежа плавающих головок** | 0.29d | 2019-05-03 21:30 | 2019-05-04 04:30 |  | 2016-10-02 20:25 | 2016-10-03 09:14 | 0.53d | 137.02d |  | 2029-07-26 00:06 |  |  | 2h | Вс 02.10.16 20:25 | Пн 03.10.16 9:15 | 53,46 ч | 2 | 8.85h |
| 392 | 2.7.3.1 | Чистка крепежа плавающей головки 1 | 1h | 2019-05-03 21:30 | 2019-05-03 22:30 | 389 | 2016-10-02 20:25 | 2016-10-02 21:14 | 0.83h | 137.02d | 0d | 2029-07-26 00:06 |  | Чистка корпуса | 1h | Вс 02.10.16 20:25 | Вс 02.10.16 21:15 | 0,83 ч | 2 | 0h |
| 393 | 2.7.3.2 | Чистка крепежа плавающей головки 2 | 1h | 2019-05-04 03:30 | 2019-05-04 04:30 | 392 | 2016-10-03 02:25 | 2016-10-03 03:25 | 1h | 137.02d | 0d | 2029-07-26 00:06 |  | Чистка корпуса | 1h | Пн 03.10.16 2:25 | Пн 03.10.16 3:25 | 1 ч | 3 | 0h |
| 394 | 2.7.4 | **Разбалчивание внутренних элементов теплообменника** | 0.44d | 2019-05-04 04:30 | 2019-05-04 15:00 |  | 2016-10-03 03:25 | 2016-10-03 15:25 | 0.5d | 137.02d |  | 2029-07-26 00:06 |  |  | 10h | Пн 03.10.16 3:25 | Пн 03.10.16 15:25 | 12 ч | 3 | 0h |
| 395 | 2.7.4.1 | Разболтить фланцевое соединение крышки плавающей головки 1 | 5h | 2019-05-04 04:30 | 2019-05-04 09:30 | 393 | 2016-10-03 03:25 | 2016-10-03 09:25 | 6h | 137.02d | 0d | 2029-07-26 00:06 |  | Подрядная монтаж | 5h | Пн 03.10.16 3:25 | Пн 03.10.16 9:25 | 6 ч | 3 |  |
| 396 | 2.7.4.2 | Разболтить фланцевое соединение крышки плавающей головки 2 | 5h | 2019-05-04 10:00 | 2019-05-04 15:00 | 395 | 2016-10-03 09:25 | 2016-10-03 15:25 | 6h | 137.02d | 0d | 2029-07-26 00:06 |  | Подрядная монтаж | 5h | Пн 03.10.16 9:25 | Пн 03.10.16 15:25 | 6 ч | 3 |  |
| 397 | 2.7.5 | **Демонтаж внутренних элементов теплообменника** | 2.15d | 2019-05-04 16:00 | 2019-05-06 19:30 |  | 2016-10-03 15:25 | 2016-10-04 02:35 | 0.47d | 137.02d |  | 2029-07-26 00:06 |  |  | 14h | Пн 03.10.16 15:25 | Вт 04.10.16 2:35 | 11,17 ч | 3 | 0h |
| 398 | 2.7.5.1 | Демонтировать крышку плавающей головки 1 | 0.5h | 2019-05-04 16:00 | 2019-05-04 16:30 | 396 | 2016-10-03 15:25 | 2016-10-03 15:55 | 0.5h | 68.52d | 0d | 2029-07-26 12:06 | 8-20 | Подрядная монтаж; Автокран (г/п 100тн) | 1h | Пн 03.10.16 15:25 | Пн 03.10.16 15:55 | 0,5 ч | 3 | 0h |
| 399 | 2.7.5.2 | Демонтировать крышку плавающей головки 2 | 0.5h | 2019-05-04 19:00 | 2019-05-04 19:30 | 398 | 2016-10-03 15:55 | 2016-10-03 16:25 | 0.5h | 68.52d | 0d | 2029-07-26 00:06 | 8-20 | Подрядная монтаж; Автокран (г/п 100тн) | 1h | Пн 03.10.16 15:55 | Пн 03.10.16 16:25 | 0,5 ч | 3 | 0h |
| 400 | 2.7.5.3 | Демонтировать трубный пучок теплообменника 1 | 2h | 2019-05-05 17:30 | 2019-05-05 19:30 | 399 | 2016-10-03 16:25 | 2016-10-04 00:35 | 8.17h | 68.52d | 0d | 2029-07-26 00:06 | 8-20 | Подрядная монтаж; Экстрактор; Автокран (г/п 100тн) | 6h | Пн 03.10.16 16:25 | Вт 04.10.16 0:35 | 8,17 ч | 4 | 0h |
| 401 | 2.7.5.4 | Демонтировать трубный пучок теплообменника 2 | 2h | 2019-05-06 17:30 | 2019-05-06 19:30 | 400 | 2016-10-04 00:35 | 2016-10-04 02:35 | 2h | 68.56d | 0d | 2029-07-26 00:06 | 8-20 | Подрядная монтаж; Экстрактор; Автокран (г/п 100тн) | 6h | Вт 04.10.16 0:35 | Вт 04.10.16 2:35 | 2 ч | 5 | 0h |

| ID | WBS | Task | Duration | Start | Finish | Predecessors | Baseline start | Baseline finish | Baseline duration | Total slack | Free slack | Deadline | Calendar | Resources | Work | Текст2 | Текст4 | Текст10 | Число1 | Длительность2 |
| --- | --- | --- | --- | --- | --- | --- | --- | --- | --- | --- | --- | --- | --- | --- | --- | --- | --- | --- | --- | --- |
| 402 | 2.7.6 | **Транспортировка к месту чистки** | 3.65d | 2019-05-03 17:00 | 2019-05-07 08:30 |  | 2016-10-02 21:14 | 2016-10-04 10:00 | 1.53d | 140.67d |  | 2029-07-26 00:06 |  |  | 9.5h | Вс 02.10.16 21:15 | Вт 04.10.16 10:00 | 12,17 ч | 2 | 0h |
| 403 | 2.7.6.1 | Транспортировка колпака плавающей головки 1 к месту чистки с разгрузкой | 0.7h | 2019-05-03 17:00 | 2019-05-03 17:42 | 388 | 2016-10-03 03:25 | 2016-10-03 04:07 | 0.7h | 71.94d | 0d | 2029-07-26 00:06 | 8-20 | Автопогрузчик | 0.7h | Пн 03.10.16 3:25 | Пн 03.10.16 4:07 | 0,7 ч | 2 | 0h |
| 404 | 2.7.6.2 | Транспортировка колпака плавающей головки 2 к месту чистки с разгрузкой | 0.7h | 2019-05-05 14:18 | 2019-05-05 15:00 | 389 | 2016-10-03 09:14 | 2016-10-03 09:56 | 0.7h | 72.12d | 0d | 2029-07-26 00:06 | 8-20 | Автопогрузчик | 0.7h | Пн 03.10.16 9:15 | Пн 03.10.16 9:57 | 0,7 ч | 4 | 0h |
| 405 | 2.7.6.3 | Транспортировка колпака распределительной камеры 1,2 к месту чистки с разгрузкой | 0.7h | 2019-05-04 12:00 | 2019-05-04 12:42 | 390 | 2016-10-02 21:14 | 2016-10-02 21:56 | 0.7h | 71.3d | 0d | 2029-07-26 00:06 | 8-20 | Автопогрузчик | 0.7h | Вс 02.10.16 21:15 | Вс 02.10.16 21:57 | 0,7 ч | 3 | 0h |
| 406 | 2.7.6.4 | Транспортировка крышки плавающей головки 1 к месту чистки с разгрузкой | 0.7h | 2019-05-04 17:30 | 2019-05-04 18:12 | 398 | 2016-10-03 15:55 | 2016-10-03 16:25 | 0.5h | 71.08d | 0d | 2029-07-26 00:06 | 8-20 | Автопогрузчик | 0.7h | Пн 03.10.16 15:55 | Пн 03.10.16 16:25 | 0,25 ч | 3 |  |
| 407 | 2.7.6.5 | Транспортировка крышки плавающей головки 2 к месту чистки с разгрузкой | 0.7h | 2019-05-05 08:00 | 2019-05-05 08:42 | 399 | 2016-10-03 16:25 | 2016-10-03 17:07 | 0.7h | 71.36d | 0d | 2029-07-26 00:06 | 8-20 | Автопогрузчик | 0.7h | Пн 03.10.16 16:25 | Пн 03.10.16 17:07 | 0,7 ч | 4 | 0h |
| 408 | 2.7.6.6 | Транспортировка трубного пучка 1 к месту чистки с разгрузкой | 1h | 2019-05-05 19:30 | 2019-05-06 08:30 | 400 | 2016-10-04 00:35 | 2016-10-04 09:00 | 8.41h | 69.77d | 0d | 2029-07-26 00:06 | 8-20 | Автотранспорт (п) (длинномер); Подрядная монтаж; Автокран, г/п 40тн | 3h | Вт 04.10.16 0:35 | Вт 04.10.16 9:00 | 1,5 ч | 4 | 5.42h |
| 409 | 2.7.6.7 | Транспортировка трубного пучка 2 к месту чистки с разгрузкой | 1h | 2019-05-06 19:30 | 2019-05-07 08:30 | 401 | 2016-10-04 09:00 | 2016-10-04 10:00 | 1h | 68.56d | 0d | 2029-07-26 00:06 | 8-20 | Автотранспорт (п) (длинномер); Подрядная монтаж; Автокран, г/п 40тн | 3h | Вт 04.10.16 9:00 | Вт 04.10.16 10:00 | 1 ч | 5 | 0h |
| 410 | 2.7.7 | **Чистка элементов теплообменника** | 6.72d | 2019-05-03 19:12 | 2019-05-10 12:30 |  | 2016-10-02 21:56 | 2016-10-05 11:36 | 2.57d | 139.28d |  | 2029-07-26 00:06 |  |  | 54h | Вс 02.10.16 21:57 | Ср 05.10.16 11:36 | 36,57 ч | 2 | 0h |
| 411 | 2.7.7.1 | чистка от отложений корпуса 1 теплообменника | 4h | 2019-05-07 05:30 | 2019-05-07 09:30 | 401 | 2016-10-04 00:35 | 2016-10-04 03:45 | 3.17h | 138.98d | 0d | 2029-07-26 00:06 |  | Чистка корпуса | 4h | Вт 04.10.16 0:35 | Вт 04.10.16 3:45 | 3,17 ч | 6 |  |
| 412 | 2.7.7.2 | чистка от отложений корпуса 2 теплообменника | 4h | 2019-05-08 05:30 | 2019-05-08 09:30 | 411 | 2016-10-04 02:35 | 2016-10-04 06:35 | 4h | 138.98d | 0.02d | 2029-07-26 00:06 |  | Чистка корпуса | 4h | Вт 04.10.16 2:35 | Вт 04.10.16 6:35 | 4 ч | 7 |  |
| 413 | 2.7.7.3 | чистка от отложений колпака плавающей головки 1 | 1h | 2019-05-03 19:12 | 2019-05-03 20:12 | 403 | 2016-10-03 04:07 | 2016-10-03 06:29 | 2.37h | 143.94d | 0d | 2029-07-26 00:06 |  | Чистка колпаков | 1h | Пн 03.10.16 4:07 | Пн 03.10.16 6:29 | 2,37 ч | 2 |  |
| 414 | 2.7.7.4 | чистка от отложений колпака плавающей головки 2 | 1h | 2019-05-05 15:18 | 2019-05-05 16:18 | 404 | 2016-10-03 09:56 | 2016-10-03 12:08 | 2.2h | 144.12d | 0d | 2029-07-26 00:06 |  | Чистка колпаков | 1h | Пн 03.10.16 9:57 | Пн 03.10.16 12:09 | 2,2 ч | 4 |  |
| 415 | 2.7.7.5 | чистка от отложений колпака 1,2 распределительной камеры | 2h | 2019-05-04 19:12 | 2019-05-04 21:12 | 405 | 2016-10-02 21:56 | 2016-10-03 00:07 | 2.17h | 142.65d | 0.45d | 2029-07-26 00:06 |  | Чистка колпаков | 2h | Вс 02.10.16 21:57 | Пн 03.10.16 0:07 | 2,17 ч | 3 |  |
| 416 | 2.7.7.6 | чистка от отложений крышки плавающей головки 1 | 1h | 2019-05-05 02:12 | 2019-05-05 03:12 | 406 | 2016-10-03 16:25 | 2016-10-03 17:25 | 1h | 142.57d | 0.2d | 2029-07-26 00:06 |  | Чистка колпаков | 1h | Пн 03.10.16 16:25 | Пн 03.10.16 17:25 | 1 ч | 4 |  |
| 417 | 2.7.7.7 | чистка от отложений крышки плавающей головки 2 | 1h | 2019-05-05 09:18 | 2019-05-05 10:18 | 407 | 2016-10-03 17:07 | 2016-10-03 18:37 | 1.5h | 142.36d | 0d | 2029-07-26 00:06 |  | Чистка колпаков | 1h | Пн 03.10.16 17:07 | Пн 03.10.16 18:37 | 1,5 ч | 4 |  |
| 418 | 2.7.7.8 | чистка от отложений трубного пучка 1 | 20h | 2019-05-07 04:30 | 2019-05-08 00:30 | 408 | 2016-10-04 09:00 | 2016-10-05 01:00 | 16h | 139.27d | 0.31d | 2029-07-26 00:06 |  | Чистка пучков | 20h | Вт 04.10.16 9:00 | Ср 05.10.16 1:00 | 16 ч | 6 |  |
| 419 | 2.7.7.9 | чистка от отложений трубного пучка 2 | 20h | 2019-05-09 16:30 | 2019-05-10 12:30 | 409 | 2016-10-04 10:00 | 2016-10-05 02:00 | 16h | 137.06d | 0d | 2029-07-26 00:06 |  | Чистка пучков | 20h | Вт 04.10.16 10:00 | Ср 05.10.16 2:00 | 16 ч | 8 |  |
| 420 | 2.7.8 | **Транспортировка к месту монтажа** | 5.03d | 2019-05-05 12:54 | 2019-05-10 13:30 |  | 2016-10-03 00:07 | 2016-10-05 12:36 | 2.52d | 139.27d |  | 2029-07-26 00:06 |  |  | 9.5h | Пн 03.10.16 0:07 | Ср 05.10.16 12:36 | 35,4 ч | 4 | 1.5h |
| 421 | 2.7.8.1 | транспортировка колпака плавающей головки 1 к месту монтажа с погрузкой | 0.7h | 2019-05-06 08:30 | 2019-05-06 09:12 | 413 | 2016-10-03 06:29 | 2016-10-03 06:59 | 0.5h | 71.95d | 73.17d | 2029-07-26 00:06 | 8-20 | Автопогрузчик | 0.7h | Пн 03.10.16 6:29 | Пн 03.10.16 6:59 | 0,5 ч | 5 | 0h |
| 422 | 2.7.8.2 | транспортировка колпака плавающей головки 2 к месту монтажа с погрузкой | 0.7h | 2019-05-05 16:18 | 2019-05-05 17:00 | 414 | 2016-10-03 12:08 | 2016-10-03 12:38 | 0.5h | 72.12d | 73.15d | 2029-07-26 00:06 | 8-20 | Автопогрузчик | 0.7h | Пн 03.10.16 12:09 | Пн 03.10.16 12:39 | 0,5 ч | 4 | 0h |
| 423 | 2.7.8.3 | транспортировка колпака распределительной камеры 1,2 к месту монтажа с погрузкой | 0.7h | 2019-05-05 12:54 | 2019-05-05 13:36 | 415 | 2016-10-03 00:07 | 2016-10-03 00:49 | 0.7h | 71.2d | 2.58d | 2029-07-26 00:06 | 8-20 | Автопогрузчик | 0.7h | Пн 03.10.16 0:07 | Пн 03.10.16 0:49 | 0,7 ч | 4 | 0h |
| 424 | 2.7.8.4 | транспортировка крышки плавающей головки 1 к месту монтажа с погрузкой | 0.7h | 2019-05-06 15:30 | 2019-05-06 16:12 | 416 | 2016-10-03 17:25 | 2016-10-03 17:55 | 0.5h | 71.66d |  | 2029-07-26 00:06 | 8-20 | Автопогрузчик | 0.7h | Пн 03.10.16 17:25 | Пн 03.10.16 17:55 | 0,5 ч | 5 | 0h |
| 425 | 2.7.8.5 | транспортировка крышки плавающей головки 2 к месту монтажа с погрузкой | 0.7h | 2019-05-06 19:42 | 2019-05-07 08:24 | 417 | 2016-10-03 18:37 | 2016-10-03 18:52 | 0.25h | 71.48d |  | 2029-07-26 00:06 | 8-20 | Автопогрузчик | 0.7h | Пн 03.10.16 18:37 | Пн 03.10.16 18:52 | 0,25 ч | 5 | 0h |
| 426 | 2.7.8.6 | транспортировка трубного пучка 1 к месту монтажа с погрузкой | 1h | 2019-05-08 09:00 | 2019-05-08 10:00 | 418 | 2016-10-05 05:48 | 2016-10-05 06:48 | 1h | 69.46d | 0d | 2029-07-26 00:06 | 8-20 | Автокран, г/п 40тн; Подрядная монтаж; Автотранспорт (п) (длинномер) | 3h | Ср 05.10.16 5:48 | Ср 05.10.16 6:48 | 1 ч | 7 | 0h |
| 427 | 2.7.8.7 | транспортировка трубного пучка 2 к месту монтажа с погрузкой | 1h | 2019-05-10 12:30 | 2019-05-10 13:30 | 419 | 2016-10-05 11:36 | 2016-10-05 12:36 | 1h | 68.56d | 0d | 2029-07-26 00:06 | 8-20 | Автокран, г/п 40тн; Подрядная монтаж; Автотранспорт (п) (длинномер) | 3h | Ср 05.10.16 11:36 | Ср 05.10.16 12:36 | 1 ч | 9 | 7.9h |

| ID | WBS | Task | Type | Duration | Start | Finish | Predecessors | Baseline start | Baseline finish | Baseline duration | Total slack | Free slack | Deadline | Calendar | Resources | Work | Текст2 | Текст4 | Текст10 | Число1 | Длительность2 |
| --- | --- | --- | --- | --- | --- | --- | --- | --- | --- | --- | --- | --- | --- | --- | --- | --- | --- | --- | --- | --- | --- |
| 428 | 2.7.9 | **Монтаж внутренних элементов теплообменника** |  | 2.19d | 2019-05-08 14:00 | 2019-05-10 18:30 |  | 2016-10-05 15:36 | 2016-10-05 20:45 | 0.21d | 137.06d |  | 2029-07-26 00:06 |  |  | 15h | Ср 05.10.16 15:36 | Ср 05.10.16 20:46 | 5,16 ч | 7 | 0h |
| 429 | 2.7.9.1 | монтаж трубного пучка в корпус теплообменника 1 |  | 2h | 2019-05-08 14:00 | 2019-05-08 16:00 | 412, 426 | 2016-10-05 15:36 | 2016-10-05 17:36 | 2h | 69.46d | 0.9d | 2029-07-26 00:06 | 8-20 | Подрядная монтаж; Экстрактор; Автокран (г/п 100тн) | 6h | Ср 05.10.16 15:36 | Ср 05.10.16 17:36 | 2 ч | 7 | 0h |
| 430 | 2.7.9.2 | монтаж трубного пучка в корпус теплообменника 2 |  | 2h | 2019-05-10 13:30 | 2019-05-10 15:30 | 427, 429 | 2016-10-05 17:36 | 2016-10-05 19:55 | 2.33h | 68.56d | 0d | 2029-07-26 00:06 | 8-20 | Подрядная монтаж; Экстрактор; Автокран (г/п 100тн) | 6h | Ср 05.10.16 17:36 | Ср 05.10.16 19:56 | 2,33 ч | 9 | 0h |
| 431 | 2.7.9.3 | монтаж крышки плавающей головки 1 |  | 0.5h | 2019-05-10 17:00 | 2019-05-10 17:30 | 416, 430 | 2016-10-05 19:55 | 2016-10-05 20:25 | 0.5h | 68.56d | 0d | 2029-07-26 00:06 | 8-20 | Подрядная монтаж; Автокран (г/п 100тн) | 1h | Ср 05.10.16 19:56 | Ср 05.10.16 20:26 | 0,5 ч | 9 |  |
| 432 | 2.7.9.4 | монтаж крышки плавающей головки 2 |  | 0.5h | 2019-05-10 18:00 | 2019-05-10 18:30 | 417, 431 | 2016-10-05 20:25 | 2016-10-05 20:45 | 0.33h | 68.56d | 0d | 2029-07-26 00:06 | 8-20 | Подрядная монтаж; Автокран (г/п 100тн) | 1h | Ср 05.10.16 20:26 | Ср 05.10.16 20:46 | 0,33 ч | 9 |  |
| 433 | 2.7.9.5 | монтаж колпака распределительной камеры 1,2 |  | 0.5h | 2019-05-10 16:00 | 2019-05-10 16:30 | 423, 430 | 2016-10-05 19:55 | 2016-10-05 20:25 | 0.5h | 68.62d | 0d | 2029-07-26 00:06 | 8-20 | Подрядная монтаж; Автокран (г/п 100тн) | 1h | Ср 05.10.16 19:56 | Ср 05.10.16 20:26 | 0,5 ч | 9 |  |
| 434 | 2.7.10 | **Сбалчивание внутренних элементов теплообменника** |  | 0.65d | 2019-05-10 16:30 | 2019-05-11 08:06 |  | 2016-10-05 20:25 | 2016-10-06 11:13 | 0.62d | 137.12d | 0d | 2029-07-26 00:06 |  |  | 25.6h | Ср 05.10.16 20:26 | Чт 06.10.16 11:13 | 14,79 ч | 9 | 0h |
| 435 | 2.7.10.1 | Сборка фланцевого соединения колпака распределительной камеры 1 |  | 6h | 2019-05-10 16:30 | 2019-05-10 22:30 | 433 | 2016-10-05 20:25 | 2016-10-06 02:15 | 5.83h | 137.12d | 0d | 2029-07-26 00:06 |  | Подрядная монтаж | 6h | Ср 05.10.16 20:26 | Чт 06.10.16 2:16 | 5,83 ч | 9 |  |
| 436 | 2.7.10.2 | Сборка фланцевого соединения колпака распределительной камеры 2 |  | 6h | 2019-05-10 22:30 | 2019-05-11 04:30 | 435 | 2016-10-06 02:15 | 2016-10-06 08:05 | 5.83h | 137.12d | 0d | 2029-07-26 00:06 |  | Подрядная монтаж | 6h | Чт 06.10.16 2:16 | Чт 06.10.16 8:05 | 5,83 ч | 9 |  |
| 437 | 2.7.10.3 | Сборка фланцевого соединения трубопровода обвязки распределительной камеры (ВХОД) Ø250 |  | 1.8h | 2019-05-11 04:30 | 2019-05-11 06:18 | 436 | 2016-10-06 08:05 | 2016-10-06 09:43 | 1.63h | 137.12d | 0d | 2029-07-26 00:06 |  | Подрядная монтаж | 1.8h | Чт 06.10.16 8:05 | Чт 06.10.16 9:43 | 1,63 ч | 10 |  |
| 438 | 2.7.10.4 | Сборка фланцевого соединения трубопровода обвязки распределительной камеры (ВЫХОД) Ø250 |  | 1.8h | 2019-05-11 06:18 | 2019-05-11 08:06 | 437 | 2016-10-06 09:43 | 2016-10-06 11:13 | 1.5h | 137.12d |  | 2029-07-26 00:06 |  | Подрядная монтаж | 1.8h | Чт 06.10.16 9:43 | Чт 06.10.16 11:13 | 1,5 ч | 10 |  |
| 439 | 2.7.10.5 | Сборка фланцевого соединения крышки плавающей головки 1 |  | 5h | 2019-05-10 18:30 | 2019-05-10 23:30 | 432 | 2016-10-05 20:25 | 2016-10-06 02:15 | 5.83h | 137.27d | 0d | 2029-07-26 00:06 |  | Подрядная монтаж | 5h | Ср 05.10.16 20:26 | Чт 06.10.16 2:16 | 5,83 ч | 9 | 0h |
| 440 | 2.7.10.6 | Сборка фланцевого соединения крышки плавающей головки 2 |  | 5h | 2019-05-10 23:30 | 2019-05-11 04:30 | 439 | 2016-10-06 02:15 | 2016-10-06 07:05 | 4.83h | 137.27d |  | 2029-07-26 00:06 |  | Подрядная монтаж | 5h | Чт 06.10.16 2:16 | Чт 06.10.16 7:05 | 4,83 ч | 9 | 0h |
| 441 | 2.7.11 | **Монтаж элементов теплообменника** |  | 0.06d | 2019-05-11 17:36 | 2019-05-11 19:06 | 450 | 2016-10-06 22:13 | 2016-10-06 23:01 | 0.03d | 137.71d |  | 2029-07-26 00:06 |  |  | 2h | Чт 06.10.16 22:13 | Чт 06.10.16 23:01 | 0,8 ч | 10 | 0h |
| 442 | 2.7.11.1 | монтаж колпака плавающей головки 1 |  | 0.5h | 2019-05-11 17:36 | 2019-05-11 18:06 |  | 2016-10-06 22:13 | 2016-10-06 22:37 | 0.4h | 68.71d | 0d | 2029-07-26 00:06 | 8-20 | Подрядная монтаж; Автокран (г/п 100тн) | 1h | Чт 06.10.16 22:13 | Чт 06.10.16 22:37 | 0,4 ч | 10 | 0h |
| 443 | 2.7.11.2 | монтаж колпака плавающей головки 2 |  | 0.5h | 2019-05-11 18:36 | 2019-05-11 19:06 | 442 | 2016-10-06 22:37 | 2016-10-06 23:01 | 0.4h | 68.71d | 0d | 2029-07-26 00:06 | 8-20 | Подрядная монтаж; Автокран (г/п 100тн) | 1h | Чт 06.10.16 22:37 | Чт 06.10.16 23:01 | 0,4 ч | 10 | 0h |
| 444 | 2.7.12 | **Сбалчивание элементов теплообменника** |  | 0.5d | 2019-05-11 19:06 | 2019-05-12 07:06 |  | 2016-10-06 23:01 | 2016-10-07 10:51 | 0.49d | 137.71d |  | 2029-07-26 00:06 |  |  | 12h | Чт 06.10.16 23:01 | Пт 07.10.16 10:51 | 11,83 ч | 10 | 0h |
| 445 | 2.7.12.1 | Сборка колпака плавающей головки 1 |  | 6h | 2019-05-11 19:06 | 2019-05-12 01:06 | 443 | 2016-10-06 23:01 | 2016-10-07 05:01 | 6h | 137.71d | 0d | 2029-07-26 00:06 |  | Подрядная монтаж | 6h | Чт 06.10.16 23:01 | Пт 07.10.16 5:01 | 6 ч | 10 | 0h |
| 446 | 2.7.12.2 | Сборка колпака плавающей головки 2 |  | 6h | 2019-05-12 01:06 | 2019-05-12 07:06 | 445 | 2016-10-07 05:01 | 2016-10-07 10:51 | 5.83h | 137.71d | 142.92d | 2029-07-26 00:06 |  | Подрядная монтаж | 6h | Пт 07.10.16 5:01 | Пт 07.10.16 10:51 | 5,83 ч | 11 | 0h |
| 447 | 2.8 | **Испытание на герметичность** |  | 1.54d | 2019-05-11 00:06 | 2019-05-12 13:06 |  |  |  |  | 137.41d | 0d | 2019-09-27 00:06 |  |  | 64h |  |  |  | 10 |  |
| 448 | 2.8.1 | **Трубного пространства** |  | 0.67d | 2019-05-11 00:06 | 2019-05-11 16:06 |  |  |  |  | 137.12d |  | 2019-09-27 00:06 |  |  | 32h |  |  |  | 10 |  |
| 449 | 2.8.1.1 | Т-201В2/1,2-Т-201С2/1-6 |  | 8h | 2019-05-11 00:06 | 2019-05-11 08:06 | 94, 162, 230, 298 |  |  |  | 137.41d | 0d | 2019-09-27 00:06 |  | Вахтовый персонал; НХП (ИТР); Подрядная монтаж | 16h |  |  |  | 10 |  |
| 450 | 2.8.1.2 | Т-201А/1,2-Т-201А/3,4 |  | 8h | 2019-05-11 08:06 | 2019-05-11 16:06 | 366, 434 |  |  |  | 137.12d | 0d | 2019-09-27 00:06 |  | Вахтовый персонал; НХП (ИТР); Подрядная монтаж | 16h |  |  |  | 10 |  |
| 451 | 2.8.2 | **Межтрубного пространства** |  | 1.21d | 2019-05-11 08:06 | 2019-05-12 13:06 |  |  |  |  | 137.46d |  | 2019-09-27 00:06 |  |  | 32h |  |  |  | 10 |  |
| 452 | 2.8.2.1 | Т-201В2/1,2-Т-201С2/1-6 |  | 8h | 2019-05-12 05:06 | 2019-05-12 13:06 | 104, 172, 240, 308 |  |  |  | 137.46d |  | 2019-09-27 00:06 |  | Вахтовый персонал; НХП (ИТР); Подрядная монтаж | 16h |  |  |  | 11 |  |
| 453 | 2.8.2.2 | Т-201А/1,2-Т-201А/3,4 |  | 8h | 2019-05-11 08:06 | 2019-05-11 16:06 | 366, 434 |  |  |  | 138.33d |  | 2019-09-27 00:06 |  | Вахтовый персонал; НХП (ИТР); Подрядная монтаж | 16h |  |  |  | 10 |  |
| 454 | 2.9 | Монтаж теплоизоляционных футляров (после окончания ремонта) | milestone | 0h | 2019-05-12 13:06 | 2019-05-12 13:06 | 447 |  |  |  | 137.46d | 0d |  |  | Подрядная монтаж |  |  |  |  | 11 |  |
| 455 | 2.10 | Демонтаж лесов (после окончания ремонта) | milestone | 0h | 2019-05-12 13:06 | 2019-05-12 13:06 | 454 |  |  |  | 137.46d | 0d |  |  | Подрядная монтаж |  |  |  |  | 11 |  |
| 456 | 2.11 | Установка постоянных заглушек (после окончания ремонта) | milestone | 0h | 2019-05-12 13:06 | 2019-05-12 13:06 | 455 |  |  |  | 137.46d | 142.58d |  |  | Вахтовый персонал |  |  |  |  | 11 |  |
